# 商业建筑

Schedule from MS Project, 2004-01-01 to 2005-04-26.

## Calendars

- 标准: Mon-Fri 08:00-12:00, 13:00-17:00; Sat-Sun off.

## Resources

| Resource |
| --- |
| G.C. 总经理 |
| G.C. 项目经理 |
| G.C. 采购人员 |
| G.C. 调度人员 |
| G.C. 会计人员 |
| G.C. 主管人员 |
| G.C. 勘测人员 |
| G.C. 毛坯木工 |
| G.C. 劳工 |
| G.C. 混凝土工 |
| G.C. 精细木工 |
| 场地平整承包商 |
| 管道工程承包商 |
| 管道工程承包商管理人员 |
| 电气承包商 |
| 电气工程承包商管理人员 |
| 取暖通风空调工程承包商 |
| 取暖通风空调工程承包商管理人员 |
| 电梯承包商 |
| 电梯承包商管理人员 |
| 钢架架设承包商 |
| 钢架架设承包商管理人员 |
| 干饰面内墙承包商 |
| 砖石工程承包商 |
| 磁砖工程承包商 |
| 屋顶工程承包商 |
| 屋顶工程承包商管理人员 |
| 幕墙承包商 |
| 地毯承包商 |
| 绿化承包商 |
| 筑路承包商 |
| 油漆承包商 |

## Schedule

| ID | WBS | Task | Duration | Start | Finish | Predecessors | Total slack | Free slack | Resources | Work |
| --- | --- | --- | --- | --- | --- | --- | --- | --- | --- | --- |
| 1 | 1 | **三层办公楼(7,000 平方米)** | 344d | 2004-01-01 | 2005-04-26 |  | 0d |  |  | 7929.6h |
| 2 | 1.1 | **一般要求** | 17d | 2004-01-01 | 2004-01-23 |  | 0d |  |  | 193.6h |
| 3 | 1.1.1 | 收到继续进行的通知并签定合同 | 3d | 2004-01-01 | 2004-01-05 |  | 0d |  | G.C. 总经理 | 24h |
| 4 | 1.1.2 | 提交保证金和保险单 | 2d | 2004-01-06 | 2004-01-07 | 3 | 335d | 0d | G.C. 项目经理; G.C. 总经理 [25%] | 20h |
| 5 | 1.1.3 | 准备并提交项目日程 | 2d | 2004-01-08 | 2004-01-09 | 4 | 335d | 0d | G.C. 项目经理 [25%]; G.C. 调度人员 | 20h |
| 6 | 1.1.4 | 准备并提交估价日程 | 2d | 2004-01-12 | 2004-01-13 | 5 | 335d |  | G.C. 总经理 [10%]; G.C. 项目经理 | 17.6h |
| 7 | 1.1.5 | 获得建筑许可 | 4d | 2004-01-06 | 2004-01-09 | 3 | 99d | 0d | G.C. 项目经理 [50%]; G.C. 采购人员 [50%] | 32h |
| 8 | 1.1.6 | 提交初步施工图 | 2w | 2004-01-12 | 2004-01-23 | 7 | 99d | 0d | G.C. 项目经理 [50%]; G.C. 采购人员 [50%] | 80h |
| 9 | 1.1.7 | 提交每月付款要求 | 1d | 2004-01-06 | 2004-01-06 | 3 | 7d | 0d |  |  |
| 10 | 1.2 | **采购长期使用的建材** | 70d | 2004-01-07 | 2004-04-13 |  | 7d |  |  | 960h |
| 11 | 1.2.1 | 提交施工图并采购长期使用的建材 - 钢材 | 2w | 2004-01-07 | 2004-01-20 | 9 | 7d | 0d | 钢架架设承包商管理人员 | 80h |
| 12 | 1.2.2 | 提交施工图并采购长期使用的建材 - 屋面材料 | 2w | 2004-01-26 | 2004-02-06 | 8 | 268d | 193d | 屋顶工程承包商管理人员 | 80h |
| 13 | 1.2.3 | 提交施工图并采购长期使用的建材 - 电梯 | 2w | 2004-01-26 | 2004-02-06 | 8 | 258d | 104d | 电梯承包商管理人员 | 80h |
| 14 | 1.2.4 | 提交施工图并采购长期使用的建材 - 室内给排水设施 | 2w | 2004-01-26 | 2004-02-06 | 8 | 99d |  | 管道工程承包商管理人员 | 80h |
| 15 | 1.2.5 | 提交施工图并采购长期使用的建材 - 电气设备 | 2w | 2004-01-26 | 2004-02-06 | 8 | 99d |  | 电气工程承包商管理人员 | 80h |
| 16 | 1.2.6 | 提交施工图并采购长期使用的建材 - 采暖、通风和空调设备 | 2w | 2004-01-26 | 2004-02-06 | 8 | 99d |  | 取暖通风空调工程承包商管理人员 | 80h |
| 17 | 1.2.7 | 提出详细要求、制造及交付钢材 | 12w | 2004-01-21 | 2004-04-13 | 11 | 7d |  | 钢架架设承包商管理人员 [50%]; 钢架架设承包商 [50%] | 480h |
| 18 | 1.3 | **现场动员** | 10d | 2004-01-06 | 2004-01-19 |  | 0d |  |  | 100h |
| 19 | 1.3.1 | 安装临时电源 | 2d | 2004-01-06 | 2004-01-07 | 3 | 0d |  | 电气承包商 | 16h |
| 20 | 1.3.2 | 安装临时供水设施 | 2d | 2004-01-06 | 2004-01-07 | 3 | 0d |  | 管道工程承包商 | 16h |
| 21 | 1.3.3 | 建立现场管理中心 | 3d | 2004-01-08 | 2004-01-12 | 19, 20 | 0d |  | G.C. 主管人员; G.C. 劳工 [10%] | 26.4h |
| 22 | 1.3.4 | 建立水平线和坡度基准点 | 3d | 2004-01-13 | 2004-01-15 | 21 | 0d |  | G.C. 勘测人员 | 24h |
| 23 | 1.3.5 | 现场准备 - 建设施工区并建立临时性围墙 | 2d | 2004-01-16 | 2004-01-19 | 22 | 0d |  | 场地平整承包商; G.C. 劳工 [10%] | 17.6h |
| 24 | 1.4 | **场地坡度测量和公用事业** | 35d | 2004-01-20 | 2004-03-08 |  | 0d |  |  | 360h |
| 25 | 1.4.1 | 清理和挖掘场地 | 3d | 2004-01-20 | 2004-01-22 | 21, 23 | 0d |  | 场地平整承包商 | 24h |
| 26 | 1.4.2 | 铺设场地通道并建立临时停车区 | 2d | 2004-01-23 | 2004-01-26 | 25, 23 | 0d |  | 场地平整承包商 | 16h |
| 27 | 1.4.3 | 大致平整场地(切割和填充) | 1w | 2004-01-27 | 2004-02-02 | 26 | 0d |  | 场地平整承包商 | 40h |
| 28 | 1.4.4 | 安装排污设备 | 2w | 2004-02-03 | 2004-02-16 | 27 | 9d |  | 场地平整承包商 | 80h |
| 29 | 1.4.5 | 安装外部防火线和建筑防火楼梯 | 2w | 2004-02-03 | 2004-02-16 | 27 | 0d |  | 管道工程承包商 | 80h |
| 30 | 1.4.6 | 进行最后的场地平整 | 2w | 2004-02-17 | 2004-03-01 | 28FF+1d, 29 | 0d |  | 场地平整承包商 | 80h |
| 31 | 1.4.7 | 架设建筑定斜板和布置建筑布局 | 1w | 2004-03-02 | 2004-03-08 | 30 | 0d |  | G.C. 勘测人员 | 40h |

Notes:
- 9: 可以将每月付款要求输入为周期性任务请求。若要获得详细信息，请参阅联机帮助主题如何安排周期性任务。

| ID | WBS | Task | Duration | Start | Finish | Predecessors | Total slack | Free slack | Resources | Work |
| --- | --- | --- | --- | --- | --- | --- | --- | --- | --- | --- |
| 32 | 1.5 | **地基** | 33d | 2004-03-09 | 2004-04-22 |  | 0d |  |  | 332h |
| 33 | 1.5.1 | 挖掘地基 | 2w | 2004-03-09 | 2004-03-22 | 31 | 0d |  | 场地平整承包商 [50%] | 40h |
| 34 | 1.5.2 | 挖掘电梯底坑 | 2d | 2004-03-09 | 2004-03-10 | 31 | 214d | 0d | 场地平整承包商 | 16h |
| 35 | 1.5.3 | 为柱墩搭建模板并展开地基 | 4d | 2004-03-23 | 2004-03-26 | 33 | 0d |  | G.C. 毛坯木工 | 32h |
| 36 | 1.5.4 | 建电梯的电气和管道设施 | 4d | 2004-03-11 | 2004-03-16 | 34 | 214d | 0d | 管道工程承包商; 电气承包商 | 64h |
| 37 | 1.5.5 | 为电梯底坑墙搭建模板 | 4d | 2004-03-17 | 2004-03-22 | 36 | 214d | 0d | G.C. 毛坯木工 | 32h |
| 38 | 1.5.6 | 设增强和加固螺栓 | 4d | 2004-03-29 | 2004-04-01 | 35 | 0d |  | G.C. 毛坯木工 | 32h |
| 39 | 1.5.7 | 浇筑基柱和地基 | 5d | 2004-04-02 | 2004-04-08 | 38 | 0d |  | G.C. 混凝土工 | 40h |
| 40 | 1.5.8 | 浇筑混凝土电梯墙 | 1d | 2004-03-23 | 2004-03-23 | 37 | 214d | 0d | G.C. 混凝土工 | 8h |
| 41 | 1.5.9 | 硬化电梯墙混凝土 | 7d | 2004-03-24 | 2004-04-01 | 40 | 214d | 0d | G.C. 劳工 [10%] | 5.6h |
| 42 | 1.5.10 | 硬化基柱和地基 | 7d | 2004-04-09 | 2004-04-19 | 39 | 0d |  | G.C. 劳工 [10%] | 5.6h |
| 43 | 1.5.11 | 拆除墙面模板 | 1d | 2004-04-02 | 2004-04-02 | 41 | 214d | 0d | G.C. 劳工 [10%] | 0.8h |
| 44 | 1.5.12 | 拆除柱墩和地基模板 | 3d | 2004-04-20 | 2004-04-22 | 42 | 0d |  | G.C. 劳工 | 24h |
| 45 | 1.5.13 | 在电梯底坑安装气压输送管 | 3d | 2004-04-05 | 2004-04-07 | 43 | 214d | 0d | 电梯承包商 | 24h |
| 46 | 1.5.14 | 准备在电梯底坑浇筑混凝土层 | 1d | 2004-04-08 | 2004-04-08 | 45 | 214d | 60d | G.C. 混凝土工 | 8h |
| 47 | 1.6 | **架设钢架结构** | 45d | 2004-04-23 | 2004-06-24 |  | 0d |  |  | 328h |
| 48 | 1.6.1 | 架设钢柱、梁和托梁: 一层和二层 | 2w | 2004-04-23 | 2004-05-06 | 44, 17 | 0d |  | 钢架架设承包商 | 80h |
| 49 | 1.6.2 | 架设钢柱、梁和托梁: 三层和楼顶 | 2w | 2004-05-07 | 2004-05-20 | 48 | 0d |  | 钢架架设承包商 | 80h |
| 50 | 1.6.3 | 安装各式铁件和支柱: 一层和二层 | 2w | 2004-05-07 | 2004-05-20 | 48 | 164d | 10d | 钢架架设承包商 [75%] | 60h |
| 51 | 1.6.4 | 安装各式铁件和支柱: 三层和楼顶 | 2w | 2004-05-21 | 2004-06-03 | 49 | 0d |  | 钢架架设承包商 [75%] | 60h |
| 52 | 1.6.5 | 安装楼梯和各式铁栏杆 | 2w | 2004-06-04 | 2004-06-17 | 51 | 0d |  | 钢架架设承包商 [50%] | 40h |
| 53 | 1.6.6 | 修整钢结构的油漆 | 1w | 2004-06-18 | 2004-06-24 | 52 | 0d |  | 钢架架设承包商 [20%] | 8h |
| 54 | 1.7 | **搭建模板并浇筑混凝土: 楼层和楼顶** | 85d | 2004-05-07 | 2004-09-02 |  | 35d |  |  | 600.88h |
| 55 | 1.7.1 | 为第二层楼板搭建模板，包括所有的楼层开口 | 5d | 2004-06-25 | 2004-07-01 | 53, 14, 15, 16, 48 | 0d |  | G.C. 毛坯木工; G.C. 劳工 [20%] | 48h |
| 56 | 1.7.2 | 安装钢筋和楼内设施(包括机械、电气和管道) | 5d | 2004-05-07 | 2004-05-13 | 48 | 35d |  | G.C. 劳工 [33%]; 管道工程承包商 [33%]; 电气承包商 [33%] | 39.6h |
| 57 | 1.7.3 | 浇筑第二层楼板 | 4d | 2004-07-02 | 2004-07-07 | 56, 55 | 0d |  | G.C. 混凝土工 | 32h |
| 58 | 1.7.4 | 硬化第二层楼板 | 7d | 2004-07-08 | 2004-07-16 | 57 | 0d |  | G.C. 劳工 [10%] | 5.6h |
| 59 | 1.7.5 | 拆除第二层楼板的模板 | 2d | 2004-07-19 | 2004-07-20 | 58 | 99d | 0d | G.C. 劳工 | 16h |
| 60 | 1.7.6 | 为第三层楼板搭建模板，包括所有的楼层开口 | 5d | 2004-07-19 | 2004-07-23 | 58 | 0d |  | G.C. 毛坯木工 [50%]; G.C. 劳工 [20%] | 28h |
| 61 | 1.7.7 | 安装钢筋和楼内设施(包括机械、电气和管道) | 5d | 2004-07-19 | 2004-07-23 | 58 | 0d |  | G.C. 劳工 [33%]; 管道工程承包商 [33%]; 电气承包商 [33%] | 39.6h |
| 62 | 1.7.8 | 浇筑第三层楼板 | 4d | 2004-07-26 | 2004-07-29 | 61, 60 | 0d |  | G.C. 混凝土工 | 32h |
| 63 | 1.7.9 | 硬化第三层楼板 | 7d | 2004-07-30 | 2004-08-09 | 62 | 0d |  | G.C. 劳工 [10%] | 5.6h |
| 64 | 1.7.10 | 拆除第三层楼板的模板 | 2d | 2004-08-10 | 2004-08-11 | 63 | 16d |  | G.C. 劳工 | 16h |
| 65 | 1.7.11 | 为楼顶搭建模板，包括所有的楼层开口 | 5d | 2004-08-10 | 2004-08-16 | 63 | 0d |  | G.C. 毛坯木工; G.C. 劳工 [20%] | 48h |
| 66 | 1.7.12 | 安装钢筋和楼内设施(包括机械、电气和管道) | 5d | 2004-08-10 | 2004-08-16 | 63 | 0d |  | G.C. 劳工 [33%]; 管道工程承包商 [33%]; 电气承包商 [33%] | 39.6h |
| 67 | 1.7.13 | 浇筑楼板 | 4d | 2004-08-17 | 2004-08-20 | 66, 65 | 0d |  | G.C. 混凝土工 | 32h |
| 68 | 1.7.14 | 硬化楼板 | 7d | 2004-08-23 | 2004-08-31 | 67 | 0d |  | G.C. 劳工 [10%] | 5.6h |
| 69 | 1.7.15 | 拆除楼顶的模板 | 2d | 2004-09-01 | 2004-09-02 | 68 | 0d |  | G.C. 劳工 | 16h |
| 70 | 1.7.16 | 为第一层楼板搭建模板 | 4d | 2004-07-21 | 2004-07-26 | 59 | 100d | 1d | G.C. 毛坯木工 | 32h |
| 71 | 1.7.17 | 安装地下电气设施 | 1w | 2004-07-21 | 2004-07-27 | 59 | 99d | 0d | 电气承包商 | 40h |
| 72 | 1.7.18 | 安装地下管道设施 | 1w | 2004-07-21 | 2004-07-27 | 59 | 99d | 0d | 管道工程承包商 | 40h |
| 73 | 1.7.19 | 安装钢筋和楼内设施 | 4d | 2004-07-21 | 2004-07-26 | 59 | 100d | 1d | G.C. 劳工 [33%]; 管道工程承包商 [33%]; 电气承包商 [33%] | 31.68h |
| 74 | 1.7.20 | 浇筑第一层楼板 | 4d | 2004-07-28 | 2004-08-02 | 70, 73, 71, 72 | 99d | 0d | G.C. 混凝土工 | 32h |
| 75 | 1.7.21 | 硬化第一层楼板 | 7d | 2004-08-03 | 2004-08-11 | 74 | 99d | 0d | G.C. 劳工 [10%] | 5.6h |
| 76 | 1.7.22 | 拆除第一层的模板 | 2d | 2004-08-12 | 2004-08-13 | 75 | 99d | 0d | G.C. 劳工 | 16h |

| ID | WBS | Task | Duration | Start | Finish | Predecessors | Total slack | Free slack | Resources | Work |
| --- | --- | --- | --- | --- | --- | --- | --- | --- | --- | --- |
| 77 | 1.8 | **木工工程** | 15d | 2004-09-03 | 2004-09-23 |  | 0d |  |  | 120h |
| 78 | 1.8.1 | 安装外部盖板和金属支柱 | 3w | 2004-09-03 | 2004-09-23 | 64, 69 | 0d |  | 干饰面内墙承包商 | 120h |
| 79 | 1.9 | **砖石工程** | 110d | 2004-06-04 | 2004-11-04 |  | 80d |  |  | 656h |
| 80 | 1.9.1 | 构建卫生间和砖墙管道 | 4w | 2004-08-16 | 2004-09-10 | 76, 14 | 99d | 0d | 管道工程承包商 | 160h |
| 81 | 1.9.2 | 铺设核心、机械和卫生间部分的砖石 | 4w | 2004-06-04 | 2004-07-01 | 50, 51 | 154d | 0d | 砖石工程承包商 | 160h |
| 82 | 1.9.3 | 铺设外部砖石 | 5w | 2004-09-24 | 2004-10-28 | 78 | 0d |  | 砖石工程承包商 | 200h |
| 83 | 1.9.4 | 安装屋顶排水设施 | 2d | 2004-10-29 | 2004-11-01 | 82 | 77d | 2d | 屋顶工程承包商 | 16h |
| 84 | 1.9.5 | 粘贴卫生间中的磁砖 | 2w | 2004-09-13 | 2004-09-24 | 80 | 99d | 0d | 磁砖工程承包商 | 80h |
| 85 | 1.9.6 | 清洁砖石 | 1w | 2004-10-29 | 2004-11-04 | 82 | 80d | 0d | 砖石工程承包商 [50%] | 20h |
| 86 | 1.9.7 | 清洁卫生间磁砖 | 1w | 2004-09-27 | 2004-10-01 | 84 | 99d | 64d | 磁砖工程承包商 [50%] | 20h |
| 87 | 1.10 | **屋顶工程** | 31d | 2004-10-29 | 2004-12-10 |  | 75d |  |  | 208h |
| 88 | 1.10.1 | 在胸墙上安装遮雨板 | 4d | 2004-10-29 | 2004-11-03 | 82 | 75d | 0d | 屋顶工程承包商 | 32h |
| 89 | 1.10.2 | 浇筑轻型混凝土屋顶填料 | 2d | 2004-11-04 | 2004-11-05 | 12, 83, 88 | 75d | 0d | 屋顶工程承包商 | 16h |
| 90 | 1.10.3 | 安装无缝屋顶材料 | 5d | 2004-11-15 | 2004-11-19 | 89FS+5d | 75d | 0d | 屋顶工程承包商 | 40h |
| 91 | 1.10.4 | 在无缝屋顶上铺石质道材 | 5d | 2004-11-22 | 2004-11-26 | 90 | 75d | 0d | 屋顶工程承包商 | 40h |
| 92 | 1.10.5 | 安装屋顶设备 | 2w | 2004-11-29 | 2004-12-10 | 91 | 75d | 24d | 取暖通风空调工程承包商 | 80h |
| 93 | 1.11 | **幕墙和商店门面封闭** | 60d | 2004-10-29 | 2005-01-20 |  | 0d |  |  | 600h |
| 94 | 1.11.1 | 安装幕墙铝框架和玻璃 | 5w | 2004-10-29 | 2004-12-02 | 82 | 0d |  | 幕墙承包商 | 200h |
| 95 | 1.11.2 | 安装木柱隔墙和干饰面内墙 | 5w | 2004-12-03 | 2005-01-06 | 94 | 0d |  | 干饰面内墙承包商 | 200h |
| 96 | 1.11.3 | 安装内部门和硬件 | 2w | 2005-01-07 | 2005-01-20 | 95 | 5d |  | G.C. 精细木工 | 80h |
| 97 | 1.11.4 | 安装商店前门和硬件 | 3w | 2004-10-29 | 2004-11-18 | 82 | 35d |  | 幕墙承包商 | 120h |
| 98 | 1.12 | **结束建筑** | 80d | 2004-12-03 | 2005-03-24 |  | 7d |  |  | 1200h |
| 99 | 1.12.1 | 安装木工制品和木门窗镶边 | 3w | 2005-01-07 | 2005-01-27 | 97, 95 | 0d |  | G.C. 精细木工 | 120h |
| 100 | 1.12.2 | 油漆墙壁和木工制品 | 4w | 2005-01-28 | 2005-02-24 | 99, 96 | 0d |  | 油漆承包商 | 160h |
| 101 | 1.12.3 | 在吊顶空间中安装管道 | 3w | 2004-12-03 | 2004-12-23 | 94 | 25d | 0d | 电气承包商 | 120h |
| 102 | 1.12.4 | 在吊顶空间中安装通风管道 | 3w | 2005-01-07 | 2005-01-27 | 95, 101 | 20d | 0d | 取暖通风空调工程承包商 | 120h |
| 103 | 1.12.5 | 安装顶管 | 2w | 2005-01-28 | 2005-02-10 | 95, 102 | 20d | 0d | 干饰面内墙承包商 | 80h |
| 104 | 1.12.6 | 安装天花板 | 2w | 2005-02-11 | 2005-02-24 | 103 | 20d |  | 干饰面内墙承包商 | 80h |
| 105 | 1.12.7 | 贴墙纸 | 2w | 2005-02-11 | 2005-02-24 | 103 | 20d |  | 油漆承包商 | 80h |
| 106 | 1.12.8 | 铺地毯 | 4w | 2005-02-25 | 2005-03-24 | 100 | 0d |  | 地毯承包商 | 160h |
| 107 | 1.12.9 | 安装硬件和附件 | 3w | 2005-02-25 | 2005-03-17 | 100 | 5d |  | G.C. 精细木工 | 120h |
| 108 | 1.12.10 | 完成内部和外部绿化工作 | 2w | 2005-02-25 | 2005-03-10 | 100 | 7d | 0d | 绿化承包商 | 80h |
| 109 | 1.12.11 | 铺停车场和路缘石并划分停车位 | 2w | 2005-03-11 | 2005-03-24 | 108 | 7d |  | 筑路承包商 | 80h |

| ID | WBS | Task | Duration | Start | Finish | Predecessors | Total slack | Free slack | Resources | Work |
| --- | --- | --- | --- | --- | --- | --- | --- | --- | --- | --- |
| 110 | 1.13 | **电梯** | 40d | 2004-07-02 | 2004-08-26 |  | 154d |  |  | 320h |
| 111 | 1.13.1 | 将电梯设备安装在电梯井中 | 4w | 2004-07-02 | 2004-07-29 | 81, 46, 13 | 154d | 0d | 电梯承包商 | 160h |
| 112 | 1.13.2 | 安装机房设备 | 2w | 2004-07-30 | 2004-08-12 | 111 | 154d | 0d | 电梯承包商 | 80h |
| 113 | 1.13.3 | 测试及对齐门和设备 | 2w | 2004-08-13 | 2004-08-26 | 112 | 154d |  | 电梯承包商 | 80h |
| 114 | 1.14 | **管道工程** | 90d | 2004-11-05 | 2005-03-10 |  | 10d |  |  | 440h |
| 115 | 1.14.1 | 在干饰面内墙中安装管道 | 4w | 2004-12-03 | 2004-12-30 | 94 | 35d | 0d | 管道工程承包商 | 160h |
| 116 | 1.14.2 | 连接防火线竖管及安装阀门 | 2w | 2004-11-05 | 2004-11-18 | 85 | 80d | 70d | 管道工程承包商 | 80h |
| 117 | 1.14.3 | 安装管道支架和装饰件 | 3w | 2004-12-31 | 2005-01-20 | 86, 115, 80 | 35d | 25d | 管道工程承包商 | 120h |
| 118 | 1.14.4 | 冲洗、测试和清洁管道和支架 | 2w | 2005-02-25 | 2005-03-10 | 100, 116, 117 | 10d |  | 管道工程承包商 | 80h |
| 119 | 1.15 | **电气工程** | 139d | 2004-08-16 | 2005-02-24 |  | 23d |  |  | 656h |
| 120 | 1.15.1 | 在砖石墙中安装电气设备 | 4w | 2004-08-16 | 2004-09-10 | 76, 15 | 99d | 74d | 电气承包商 | 160h |
| 121 | 1.15.2 | 在干饰面内墙中安装电气设备 | 4w | 2004-12-03 | 2004-12-30 | 94 | 35d | 10d | 电气承包商 | 160h |
| 122 | 1.15.3 | 将电线通入管道并设置区域变压器 | 3w | 2004-12-24 | 2005-01-13 | 120, 101 | 25d | 0d | 电气承包商 | 120h |
| 123 | 1.15.4 | 安装电气设备及终端 | 3w | 2005-01-14 | 2005-02-03 | 122, 121 | 25d | 5d | 电气承包商 | 120h |
| 124 | 1.15.5 | 为取暖、通风和空调设备制做电气终端 | 2d | 2005-01-14 | 2005-01-17 | 122, 92 | 51d | 18d | 电气承包商 | 16h |
| 125 | 1.15.6 | 安装灯具，测试和清洁 | 2w | 2005-02-11 | 2005-02-24 | 103, 123 | 20d |  | 电气承包商 | 80h |
| 126 | 1.16 | **取暖、通风和空调** | 180d | 2004-07-02 | 2005-03-10 |  | 33d |  |  | 600h |
| 127 | 1.16.1 | 安装机房设备 | 2w | 2004-07-02 | 2004-07-15 | 81, 16 | 168d | 100d | 取暖通风空调工程承包商 | 80h |
| 128 | 1.16.2 | 在砖石墙中安装机械设备 | 4w | 2004-08-16 | 2004-09-10 | 76 | 127d | 59d | 取暖通风空调工程承包商 | 160h |
| 129 | 1.16.3 | 在干饰面内墙中安装机械设备 | 2w | 2004-12-03 | 2004-12-16 | 94 | 93d |  | 取暖通风空调工程承包商 | 80h |
| 130 | 1.16.4 | 在建筑物的暗槽中安装管道 | 3w | 2004-12-03 | 2004-12-23 | 127, 128, 94 | 68d | 35d | 取暖通风空调工程承包商 | 120h |
| 131 | 1.16.5 | 安装取暖、通风和空调管道装饰物，并测试和平衡系统 | 4w | 2005-02-11 | 2005-03-10 | 103, 130, 124 | 33d |  | 取暖通风空调工程承包商 | 160h |
| 132 | 1.17 | **进行最终清理并投入使用** | 60d | 2005-01-07 | 2005-03-31 |  | 18d |  |  | 96h |
| 133 | 1.17.1 | 在公用区铺设耐磨砖地面 | 1w | 2005-01-07 | 2005-01-13 | 95 | 46d | 0d | 磁砖工程承包商 | 40h |
| 134 | 1.17.2 | 清洁耐磨砖地面 | 4d | 2005-01-14 | 2005-01-19 | 133 | 46d |  | 磁砖工程承包商 [50%] | 16h |
| 135 | 1.17.3 | 将瓦砾从建筑物中清理出去并进行最终的清洁工作 | 4d | 2005-03-25 | 2005-03-30 | 106, 105, 107, 108, 118, 125, 104, 134 | 0d |  | G.C. 劳工 | 32h |
| 136 | 1.17.4 | 实际完工日期 | 1d | 2005-03-31 | 2005-03-31 | 135 | 18d |  | G.C. 主管人员 | 8h |

| ID | WBS | Task | Duration | Start | Finish | Predecessors | Total slack | Resources | Work |
| --- | --- | --- | --- | --- | --- | --- | --- | --- | --- |
| 137 | 1.18 | **完成最终检查** | 6d | 2005-03-31 | 2005-04-07 |  | 0d |  | 48h |
| 138 | 1.18.1 | 完成对电梯的检查和认证 | 3d | 2005-03-31 | 2005-04-04 | 135, 113 | 0d | 电梯承包商 | 24h |
| 139 | 1.18.2 | 通过建筑师检查 | 1d | 2005-04-05 | 2005-04-05 | 135, 109, 138 | 0d | G.C. 主管人员 [50%]; G.C. 项目经理 [50%] | 8h |
| 140 | 1.18.3 | 通过当地建筑管理部门的检查 | 1d | 2005-04-06 | 2005-04-06 | 139 | 0d | G.C. 项目经理 [50%]; G.C. 主管人员 [50%] | 8h |
| 141 | 1.18.4 | 通过消防安全检查 | 1d | 2005-04-07 | 2005-04-07 | 140 | 0d | G.C. 主管人员 [50%]; G.C. 项目经理 [50%] | 8h |
| 142 | 1.19 | 完成所有检查所需的项目 | 2w | 2005-04-08 | 2005-04-21 | 141 | 0d | G.C. 主管人员 [11%]; G.C. 劳工 [11%]; 管道工程承包商 [11%]; 电气承包商 [11%]; 取暖通风空调工程承包商 [11%]; 干饰面内墙承包商 [11%]; 地毯承包商 [11%]; 筑路承包商 [11%]; 油漆承包商 [11%] | 79.2h |
| 143 | 1.20 | 获得使用许可 | 2d | 2005-04-22 | 2005-04-25 | 142 | 0d | G.C. 项目经理 | 16h |
| 144 | 1.21 | 发布最终完成文档，其中包含质保书 | 1d | 2005-04-22 | 2005-04-22 | 142 | 1d | G.C. 项目经理 | 8h |
| 145 | 1.22 | 发出最后的付款要求 | 1d | 2005-04-26 | 2005-04-26 | 143, 144 | 0d | G.C. 项目经理 [33%]; G.C. 会计人员 [33%]; G.C. 总经理 [33%] | 7.92h |
