# 工程设计

Schedule from MS Project, 2004-01-01 to 2006-05-08.

## Calendars

- 标准: Mon-Fri 08:00-12:00, 13:00-17:00; Sat-Sun off.

## Resources

| Resource |
| --- |
| 设计师 |
| 项目工程师 |
| 专业工程师 |
| 成本工程师 |
| 绘图员 |
| 生产计划员 |
| 项目出资人 |

## Schedule

| ID | WBS | Task | Type | Duration | Start | Finish | Predecessors | Total slack | Free slack | Resources | Work |
| --- | --- | --- | --- | --- | --- | --- | --- | --- | --- | --- | --- |
| 1 | 1 | **可行性分析** |  | 80d | 2004-01-01 | 2004-04-21 |  | 0d |  |  | 3256h |
| 2 | 1.1 | **规划和控制** |  | 20d | 2004-01-01 | 2004-01-28 |  | 0d |  |  | 320h |
| 3 | 1.1.1 | 制定阐明项目机会的商业计划 |  | 5d | 2004-01-01 | 2004-01-07 |  | 0d |  | 项目出资人 | 40h |
| 4 | 1.1.2 | 定义项目目标和信息需求 |  | 5d | 2004-01-08 | 2004-01-14 | 3 | 0d |  | 项目出资人 | 40h |
| 5 | 1.1.3 | 确定项目目标应符合的行业标准 |  | 5d | 2004-01-15 | 2004-01-21 | 4 | 0d |  | 项目出资人; 项目工程师 | 80h |
| 6 | 1.1.4 | 制定初步的可行性分析日程和人员配备计划 |  | 5d | 2004-01-15 | 2004-01-21 | 4 | 0d |  | 项目工程师 | 40h |
| 7 | 1.1.5 | 结束初步规划 | milestone | 0d | 2004-01-21 | 2004-01-21 | 6 | 0d |  |  |  |
| 8 | 1.1.6 | 制定拨款策略 |  | 5d | 2004-01-22 | 2004-01-28 | 7 | 40d | 27d | 项目出资人 | 40h |
| 9 | 1.1.7 | 制定管理模式和人员配备计划 |  | 5d | 2004-01-22 | 2004-01-28 | 7 | 50d |  | 项目出资人; 项目工程师 | 80h |
| 10 | 1.2 | **选址** |  | 40d | 2004-01-22 | 2004-03-17 |  | 0d |  |  | 864h |
| 11 | 1.2.1 | 确定候选场地 |  | 10d | 2004-01-22 | 2004-02-04 | 7 | 0d |  | 项目出资人; 项目工程师 | 160h |
| 12 | 1.2.2 | 定义对基础设施的要求 |  | 15d | 2004-02-05 | 2004-02-25 | 21, 11 | 0d |  | 项目工程师 | 120h |
| 13 | 1.2.3 | 定义对公用事业的需求 |  | 10d | 2004-02-05 | 2004-02-18 | 21, 11 | 5d |  | 项目工程师; 专业工程师 | 160h |
| 14 | 1.2.4 | 确定项目的场地 |  | 5d | 2004-02-05 | 2004-02-11 | 21, 11 | 10d |  | 项目工程师; 专业工程师 | 80h |
| 15 | 1.2.5 | 评估行政管理和环境问题所带来的影响 |  | 10d | 2004-02-05 | 2004-02-18 | 21, 11 | 2d | 0d | 项目工程师; 专业工程师 | 160h |
| 16 | 1.2.6 | 确定需要获得的许可 |  | 3d | 2004-02-19 | 2004-02-23 | 15 | 2d |  | 项目工程师 | 24h |
| 17 | 1.2.7 | 推荐场地 |  | 10d | 2004-02-26 | 2004-03-10 | 15, 12, 13, 14, 16 | 0d |  | 项目出资人; 项目工程师 | 160h |
| 18 | 1.2.8 | 审阅场地和计划 |  | 5d | 2004-03-11 | 2004-03-17 | 17 | 0d |  |  |  |
| 19 | 1.3 | **定义范围** |  | 45d | 2004-01-22 | 2004-03-24 |  | 0d |  |  | 616h |
| 20 | 1.3.1 | 确定项目目标的大致范围 |  | 5d | 2004-01-22 | 2004-01-28 | 4, 5 | 0d |  | 项目出资人; 项目工程师 | 80h |
| 21 | 1.3.2 | 评估项目需求并制定主要研究项目列表 |  | 5d | 2004-01-29 | 2004-02-04 | 20 | 0d |  | 项目工程师; 专业工程师 | 80h |
| 22 | 1.3.3 | 开始主要项目的研究 |  | 2d | 2004-02-05 | 2004-02-06 | 21 | 8d | 0d | 专业工程师 | 16h |
| 23 | 1.3.4 | 结束主要项目的研究并提出建议 |  | 15d | 2004-02-09 | 2004-02-27 | 22 | 8d | 0d | 专业工程师 | 120h |
| 24 | 1.3.5 | 确定明确的范围 |  | 5d | 2004-03-01 | 2004-03-05 | 23 | 8d | 0d | 项目工程师; 专业工程师 | 80h |
| 25 | 1.3.6 | 准备最终的可行性分析日程 |  | 10d | 2004-03-08 | 2004-03-19 | 8, 24 | 13d |  | 项目工程师; 专业工程师 | 160h |
| 26 | 1.3.7 | 提供书面的范围信息 |  | 5d | 2004-03-18 | 2004-03-24 | 24, 18 | 10d |  | 项目工程师; 专业工程师 | 80h |

Notes:
- 1: 作出判断: / 是否进行此项目?

| ID | WBS | Task | Type | Duration | Start | Finish | Predecessors | Total slack | Free slack | Resources | Work |
| --- | --- | --- | --- | --- | --- | --- | --- | --- | --- | --- | --- |
| 27 | 1.4 | **专业支持** |  | 43d | 2004-02-09 | 2004-04-07 |  | 0d |  |  | 1296h |
| 28 | 1.4.1 | 拟定可交付结果列表 |  | 6d | 2004-02-09 | 2004-02-16 | 22 | 11d | 0d | 项目工程师; 专业工程师 | 96h |
| 29 | 1.4.2 | 开始制定流程图和标准 |  | 5d | 2004-02-17 | 2004-02-23 | 28 | 17d |  | 专业工程师 | 40h |
| 30 | 1.4.3 | 开始绘制各专业图纸并拟定设备列表 |  | 11d | 2004-02-17 | 2004-03-02 | 28 | 11d |  | 项目工程师; 专业工程师 | 176h |
| 31 | 1.4.4 | 开始规划概念性布局 |  | 11d | 2004-02-17 | 2004-03-02 | 28 | 11d |  | 专业工程师; 项目工程师; 绘图员 | 264h |
| 32 | 1.4.5 | 结束制定流程图和标准 |  | 15d | 2004-03-18 | 2004-04-07 | 29, 24, 23, 18 | 0d |  | 专业工程师; 绘图员 | 240h |
| 33 | 1.4.6 | 结束绘制各专业图纸并拟定设备列表 |  | 15d | 2004-03-18 | 2004-04-07 | 30, 24, 23, 18 | 0d |  | 专业工程师; 项目工程师; 绘图员 | 360h |
| 34 | 1.4.7 | 结束规划概念性布局 |  | 15d | 2004-03-18 | 2004-04-07 | 31, 24, 23, 18 | 0d |  | 绘图员 | 120h |
| 35 | 1.5 | **结束可行性分析阶段** |  | 10d | 2004-04-08 | 2004-04-21 |  | 0d |  |  | 160h |
| 36 | 1.5.1 | 准备概念性范围报告和评估报告以供审阅 |  | 5d | 2004-04-08 | 2004-04-14 | 25, 8, 9, 26, 32, 33, 34 | 0d |  | 项目工程师; 成本工程师; 绘图员 | 120h |
| 37 | 1.5.2 | 评估商业计划，如必要则重新制定 |  | 5d | 2004-04-15 | 2004-04-21 | 36 | 0d |  | 项目出资人 | 40h |
| 38 | 1.5.3 | 可行性分析阶段结束 | milestone | 0d | 2004-04-21 | 2004-04-21 | 37 | 0d |  |  |  |
| 39 | 2 | **定义** |  | 85d | 2004-04-22 | 2004-08-18 |  | 0d |  |  | 2840h |
| 40 | 2.1 | **规划和控制** |  | 15d | 2004-04-22 | 2004-05-12 |  | 0d |  |  | 320h |
| 41 | 2.1.1 | 审阅概念性计划 |  | 5d | 2004-04-22 | 2004-04-28 | 38 | 0d |  | 项目出资人; 项目工程师 | 80h |
| 42 | 2.1.2 | 更新项目人员配备计划 |  | 5d | 2004-04-22 | 2004-04-28 | 38 | 55d |  | 项目工程师; 专业工程师 | 80h |
| 43 | 2.1.3 | 确定工程设计定义阶段的可交付结果 |  | 5d | 2004-04-29 | 2004-05-05 | 41 | 15d | 0d | 项目工程师; 专业工程师 | 80h |
| 44 | 2.1.4 | 预测项目的意外开支和间接成本因素 |  | 5d | 2004-05-06 | 2004-05-12 | 43 | 45d |  | 项目工程师; 成本工程师 | 80h |
| 45 | 2.2 | **定义范围** |  | 45d | 2004-04-29 | 2004-06-30 |  | 0d |  |  | 760h |
| 46 | 2.2.1 | 审阅研究项目列表 |  | 5d | 2004-04-29 | 2004-05-05 | 41 | 0d |  | 项目工程师; 专业工程师 | 80h |
| 47 | 2.2.2 | 提出设计要求 |  | 5d | 2004-05-06 | 2004-05-12 | 43 | 15d |  | 专业工程师 | 40h |
| 48 | 2.2.3 | 建立供应商资料需求/设备预算 |  | 10d | 2004-05-06 | 2004-05-19 | 46 | 0d |  | 项目工程师; 专业工程师 | 160h |
| 49 | 2.2.4 | 制定设备规格要求和列表 |  | 10d | 2004-05-20 | 2004-06-02 | 41, 48 | 0d |  | 项目工程师; 专业工程师 | 160h |
| 50 | 2.2.5 | 绘制管道和设备图(PID) |  | 20d | 2004-06-03 | 2004-06-30 | 43, 48, 49 | 0d |  | 专业工程师; 设计师 | 320h |

| ID | WBS | Task | Type | Duration | Start | Finish | Predecessors | Total slack | Free slack | Resources | Work |
| --- | --- | --- | --- | --- | --- | --- | --- | --- | --- | --- | --- |
| 51 | 2.3 | **专业支持** |  | 40d | 2004-05-06 | 2004-06-30 |  | 0d |  |  | 880h |
| 52 | 2.3.1 | 审阅对管理机构的要求 |  | 20d | 2004-05-06 | 2004-06-02 | 46 | 0d |  | 专业工程师 | 160h |
| 53 | 2.3.2 | 制定大致安排和场地计划 |  | 20d | 2004-06-03 | 2004-06-30 | 47, 43, 48, 49 | 0d |  | 专业工程师; 设计师 | 320h |
| 54 | 2.3.3 | 制定各专业的控制图纸、列表和规格说明 |  | 20d | 2004-06-03 | 2004-06-30 | 43, 52, 49 | 0d |  | 专业工程师; 设计师 | 320h |
| 55 | 2.3.4 | 对建筑投入适宜性的评估 |  | 10d | 2004-06-17 | 2004-06-30 | 53SS+5%, 50SS+5%, 54SS+5% | 10d |  | 专业工程师 | 80h |
| 56 | 2.4 | **结束定义阶段** |  | 45d | 2004-06-17 | 2004-08-18 |  | 0d |  |  | 880h |
| 57 | 2.4.1 | 编写范围文档(包括基础设施) |  | 20d | 2004-06-17 | 2004-07-14 | 53SS+5%, 50SS+5%, 54SS+5% | 0d |  | 项目工程师; 专业工程师 | 320h |
| 58 | 2.4.2 | 生成项目资金预算 |  | 15d | 2004-06-17 | 2004-07-07 | 53SS+5%, 50SS+5% | 5d |  | 成本工程师 | 120h |
| 59 | 2.4.3 | 建立项目日程 |  | 10d | 2004-06-17 | 2004-06-30 | 53SS+5%, 50SS+5% | 10d |  | 项目工程师; 生产计划员 | 160h |
| 60 | 2.4.4 | 核查项目定义、范围和预算 |  | 5d | 2004-07-15 | 2004-07-21 | 57, 58, 59, 42, 48, 53, 44, 50, 55 | 0d |  | 项目出资人; 项目工程师; 成本工程师 | 120h |
| 61 | 2.4.5 | 范围定义结束/发布成本预算 | milestone | 0d | 2004-07-21 | 2004-07-21 | 60 | 0d |  |  |  |
| 62 | 2.4.6 | 拨发项目款项 |  | 20d | 2004-07-22 | 2004-08-18 | 61 | 0d |  | 项目出资人 | 160h |
| 63 | 2.4.7 | 项目获得批准 | milestone | 0d | 2004-08-18 | 2004-08-18 | 62 | 0d |  |  |  |
| 64 | 3 | **设计** |  | 201.25d | 2004-08-19 | 2005-05-27 |  | 0d |  |  | 31880h |
| 65 | 3.1 | **规划和控制** |  | 166d | 2004-08-19 | 2005-04-07 |  | 0d |  |  | 7520h |
| 66 | 3.1.1 | 核查项目定义、范围和预算 |  | 1d | 2004-08-19 | 2004-08-19 | 63 | 0d |  | 项目出资人; 项目工程师 | 16h |
| 67 | 3.1.2 | 制定或更新项目流程 |  | 10d | 2004-08-20 | 2004-09-02 | 66 | 0d |  | 项目工程师 | 80h |
| 68 | 3.1.3 | 确定最终的设计和建筑日程 |  | 6d | 2004-08-20 | 2004-08-27 | 66 | 4d | 0d | 生产计划员; 项目工程师 | 96h |
| 69 | 3.1.4 | 制定和管理问题列表 |  | 100d | 2004-08-20 | 2005-01-06 | 66 | 98.25d |  | 项目工程师 | 800h |
| 70 | 3.1.5 | 采购交货时间较长的设备 |  | 133d | 2004-08-24 | 2005-02-24 | 84 | 58d | 30.5d | 项目工程师 | 1064h |
| 71 | 3.1.6 | 制定和执行采购和承包计划 |  | 3d | 2004-08-25 | 2004-08-27 | 68SS+5%, 84 | 4d |  | 项目出资人; 项目工程师 | 48h |
| 72 | 3.1.7 | 制定设计阶段计划并配备人员 |  | 3d | 2004-09-03 | 2004-09-07 | 66, 67 | 7.75d |  | 项目工程师 | 24h |
| 73 | 3.1.8 | 为规格说明和绘图定义工程设计演示文稿和目录 |  | 3d | 2004-09-03 | 2004-09-07 | 68SS+5%, 67, 71 | 0d |  | 项目工程师; 专业工程师 | 48h |
| 74 | 3.1.9 | 实施文档控制 |  | 5d | 2004-09-03 | 2004-09-09 | 67 | 38.25d | 5d | 项目工程师 | 40h |
| 75 | 3.1.10 | 建立项目监控机制 |  | 5d | 2004-09-03 | 2004-09-09 | 67, 71 | 38.25d | 5d | 项目工程师 | 40h |
| 76 | 3.1.11 | 建立项目成本控制和盈余分析系统 |  | 10d | 2004-09-03 | 2004-09-16 | 66, 67 | 33.25d | 0d | 项目工程师; 生产计划员; 成本工程师 | 240h |
| 77 | 3.1.12 | 最终确定可交付结果列表 |  | 10d | 2004-09-03 | 2004-09-17 | 66, 73SS+2.5%, 71 | 0d |  | 项目工程师; 专业工程师 | 160h |
| 78 | 3.1.13 | 实施项目报告制度 |  | 145d | 2004-09-17 | 2005-04-07 | 76, 67, 74, 75 | 33.25d |  | 项目工程师 | 1160h |
| 79 | 3.1.14 | 要求支付得到批准的/合同规定的报酬 |  | 100d | 2004-10-01 | 2005-02-17 | 85 | 68.25d |  | 项目工程师 | 800h |
| 80 | 3.1.15 | 采购设备 |  | 123d | 2004-10-08 | 2005-03-29 | 85, 88SS+5% | 27.5d | 0d | 项目工程师 | 984h |
| 81 | 3.1.16 | 制做图纸(包括供应商的图纸) |  | 100d | 2004-10-08 | 2005-02-24 | 85, 88SS+5% | 63.25d |  | 项目工程师; 生产计划员 | 1600h |
| 82 | 3.1.17 | 培训启动计划 |  | 20d | 2005-02-09 | 2005-03-08 | 89 | 55.25d |  | 项目工程师; 专业工程师 | 320h |

| ID | WBS | Task | Duration | Start | Finish | Predecessors | Total slack | Free slack | Resources | Work |
| --- | --- | --- | --- | --- | --- | --- | --- | --- | --- | --- |
| 83 | 3.2 | **进一步明确范围** | 123d | 2004-08-20 | 2005-02-08 |  | 5d |  |  | 2032h |
| 84 | 3.2.1 | 更新项目设计准则 | 2d | 2004-08-20 | 2004-08-23 | 66 | 5d | 0d | 项目工程师; 专业工程师 | 32h |
| 85 | 3.2.2 | 设计问题: 设备列表 | 30d | 2004-08-20 | 2004-09-30 | 66 | 27.5d | 0d | 专业工程师 | 240h |
| 86 | 3.2.3 | 专业设计问题: 管道和设备图(PID) | 30d | 2004-09-08 | 2004-10-19 | 73 | 35.25d | 0d | 专业工程师; 设计师 | 480h |
| 87 | 3.2.4 | 专业设计问题: 总体布局图(GA)/场地计划 | 30d | 2004-09-08 | 2004-10-19 | 73 | 35.25d | 0d | 专业工程师; 设计师 | 480h |
| 88 | 3.2.5 | 设备规格说明、投标和供应商选择 | 40d | 2004-09-10 | 2004-11-04 | 73, 85SS+5% | 27.5d | 0d | 项目工程师; 专业工程师 | 640h |
| 89 | 3.2.6 | 处理设备功能说明 | 20d | 2005-01-12 | 2005-02-08 | 106SS+7.5% | 35.25d | 0d | 专业工程师 | 160h |
| 90 | 3.3 | **专业支持** | 200.25d | 2004-08-20 | 2005-05-27 |  | 0d |  |  | 22328h |
| 91 | 3.3.1 | 建立专业指导规范要求 | 2d | 2004-08-20 | 2004-08-23 | 66 | 18.75d |  | 专业工程师 | 16h |
| 92 | 3.3.2 | 审阅并最终制定专业标准和规格说明 | 5d | 2004-09-17 | 2004-09-24 | 73, 91, 72, 77 | 0d |  | 专业工程师 | 40h |
| 93 | 3.3.3 | **开始专业设计** | 55d | 2004-09-24 | 2004-12-10 |  | 0d |  |  | 3280h |
| 94 | 3.3.3.1 | 开始建筑学设计 | 25d | 2004-09-24 | 2004-10-29 | 92 | 0d |  | 专业工程师; 设计师 | 400h |
| 95 | 3.3.3.2 | 开始土木工程设计 | 30d | 2004-10-01 | 2004-11-12 | 94SS+5d | 0d |  | 专业工程师; 设计师 | 480h |
| 96 | 3.3.3.3 | 开始机械设计 | 30d | 2004-10-08 | 2004-11-19 | 95SS+5d | 0d |  | 专业工程师; 设计师 | 480h |
| 97 | 3.3.3.4 | 开始管道设计 | 30d | 2004-10-15 | 2004-11-26 | 96SS+5d | 0d |  | 专业工程师; 设计师 | 480h |
| 98 | 3.3.3.5 | 开始结构设计 | 30d | 2004-10-01 | 2004-11-12 | 94SS+5d | 20d |  | 专业工程师; 设计师 | 480h |
| 99 | 3.3.3.6 | 开始电气设计 | 30d | 2004-10-22 | 2004-12-03 | 97SS+5d | 0d |  | 专业工程师; 设计师 | 480h |
| 100 | 3.3.3.7 | 开始基础设施设计 | 30d | 2004-10-29 | 2004-12-10 | 99SS+5d | 0d |  | 专业工程师; 设计师 | 480h |
| 101 | 3.3.4 | 执行第一次质量检查 | 5d | 2004-12-01 | 2004-12-08 | 94SS+7.5%, 95SS+7.5%, 96SS+7.5%, 97SS+7.5%, 98SS+7.5%, 99SS+7.5%, 100SS+7.5% | 0d |  | 专业工程师 | 40h |
| 102 | 3.3.5 | 供应商图纸检查(所有专业) | 60d | 2004-11-19 | 2005-02-11 | 80SS+2.5%, 70SS+2.5% | 27.5d | 0d | 专业工程师 | 480h |
| 103 | 3.3.6 | 供应商图纸认证(所有专业) | 5d | 2005-02-11 | 2005-02-18 | 102 | 27.5d |  | 专业工程师; 项目工程师 | 80h |
| 104 | 3.3.7 | 跨专业工程设计检查 | 5d | 2004-12-01 | 2004-12-08 | 94SS+7.5%, 95SS+7.5%, 96SS+7.5%, 97SS+7.5%, 98SS+7.5%, 99SS+7.5%, 100SS+7.5% | 0d |  | 专业工程师; 设计师 | 80h |
| 105 | 3.3.8 | 完成设备列表 | 90d | 2004-10-01 | 2005-02-03 | 85 | 38.25d |  | 专业工程师; 项目工程师 | 1440h |
| 106 | 3.3.9 | 完成设备连接图 | 80d | 2004-10-20 | 2005-02-08 | 86 | 35.25d | 0d | 专业工程师; 设计师; 绘图员 | 1920h |
| 107 | 3.3.10 | 完成总体布局图/场地计划 | 80d | 2004-10-20 | 2005-02-08 | 87 | 35.25d |  | 专业工程师; 设计师; 绘图员 | 1920h |

Notes:
- 94: 此任务包括: / 效果图 / 楼层布置计划 / 建筑物立面图 / 完成日程
- 95: 此任务包括: / 平面布置图 / 腐蚀 / 定坡度 / 地下管道 / 基础设施
- 96: 此任务包括: / 水箱 / 特殊设备 / 采暖、通风和空调 / 原料处理 / 水泵
- 97: 此任务包括: / 设备连接图 / 计划 / 零件 / 等角投影图 / 防火 / 管道工程 / 吊架 / 应力计算 / 管线列表
- 98: 此任务包括: / 钢材 / 板石 / 设备支持 / 地基
- 99: 此任务包括: / 供电计划 / 发动机控制中心(MCC) / 可编程逻辑控制器(PLC) / 接地 / 照明 / 通讯 / 基础
- 100: 此任务包括: / 设备连接图 / 数据表 / 循环 / 逻辑 / 位置 / 索引

| ID | WBS | Task | Type | Duration | Start | Finish | Predecessors | Total slack | Free slack | Resources | Work |
| --- | --- | --- | --- | --- | --- | --- | --- | --- | --- | --- | --- |
| 108 | 3.3.11 | **完成专业设计** |  | 80d | 2004-12-08 | 2005-03-30 |  | 0d |  |  | 12240h |
| 109 | 3.3.11.1 | 完成建筑学设计 |  | 70d | 2004-12-08 | 2005-03-16 | 104, 87, 101 | 10d | 7.5d | 专业工程师; 设计师; 绘图员 | 1680h |
| 110 | 3.3.11.2 | 完成土木工程设计 |  | 70d | 2004-12-08 | 2005-03-16 | 104, 87, 101 | 10d |  | 专业工程师; 设计师; 绘图员 | 1680h |
| 111 | 3.3.11.3 | 完成机械设计 |  | 70d | 2004-12-08 | 2005-03-16 | 104, 87, 101 | 10d | 7.5d | 专业工程师; 设计师; 绘图员 | 1680h |
| 112 | 3.3.11.4 | 完成结构设计 |  | 70d | 2004-12-08 | 2005-03-16 | 104, 87, 101 | 10d | 7.5d | 专业工程师; 设计师; 绘图员 | 1680h |
| 113 | 3.3.11.5 | 完成管道设计 |  | 70d | 2004-12-08 | 2005-03-16 | 104, 86, 101 | 10d | 7.5d | 专业工程师; 设计师; 绘图员 | 1680h |
| 114 | 3.3.11.6 | 完成电气设计 |  | 80d | 2004-12-08 | 2005-03-30 | 104, 86, 101 | 0d |  | 专业工程师; 设计师; 绘图员 | 1920h |
| 115 | 3.3.11.7 | 完成基础设施设计 |  | 80d | 2004-12-08 | 2005-03-30 | 104, 86, 101 | 0d |  | 专业工程师; 设计师; 绘图员 | 1920h |
| 116 | 3.3.12 | 执行第二次质量检查 |  | 5d | 2005-03-02 | 2005-03-09 | 109SS+7.5%, 111SS+7.5%, 112SS+7.5%, 113SS+7.5%, 114SS+7.5% | 15d |  | 专业工程师 | 40h |
| 117 | 3.3.13 | 检查代码符合性和安全性 |  | 10d | 2005-03-02 | 2005-03-16 | 109SS+7.5%, 111SS+7.5%, 112SS+7.5%, 113SS+7.5%, 114SS+7.5% | 10d |  | 专业工程师 | 80h |
| 118 | 3.3.14 | **完成设计阶段** |  | 42d | 2005-03-30 | 2005-05-27 |  | 0d |  |  | 672h |
| 119 | 3.3.14.1 | 检查并重新绘制图纸和拟定列表(所有专业) |  | 15d | 2005-03-30 | 2005-04-20 | 109, 110, 111, 112, 113, 114, 115, 89, 103, 105, 106, 107, 116, 117 | 0d |  | 专业工程师; 设计师; 绘图员 | 360h |
| 120 | 3.3.14.2 | 绘制得到批准的图纸并得到规范顺应性计算结果(所有专业) |  | 5d | 2005-04-20 | 2005-04-27 | 119 | 0d |  | 专业工程师; 项目工程师 | 80h |
| 121 | 3.3.14.3 | 发布准许、投标和建筑工程 |  | 15d | 2005-04-27 | 2005-05-18 | 120 | 0d |  | 项目工程师 | 120h |
| 122 | 3.3.14.4 | 选择承包商/审阅合同 |  | 5d | 2005-05-18 | 2005-05-25 | 121 | 0d |  | 专业工程师; 项目工程师 | 80h |
| 123 | 3.3.14.5 | 结束项目 - 结束报告，发布记录图纸 |  | 2d | 2005-05-25 | 2005-05-27 | 122, 69, 78, 80, 81, 79, 82, 70 | 0d |  | 项目工程师; 项目出资人 | 32h |
| 124 | 4 | **建筑** |  | 246d | 2005-05-27 | 2006-05-08 | 123 | 0d |  |  |  |
| 125 | 4.1 | 选择建筑承包商 |  | 30d | 2005-05-27 | 2005-07-08 | 123 | 0d |  |  |  |
| 126 | 4.2 | 现场动员 |  | 20d | 2005-07-08 | 2005-08-05 | 125 | 0d |  |  |  |
| 127 | 4.3 | 建筑 |  | 196d | 2005-08-05 | 2006-05-08 | 126 | 0d |  |  |  |
| 128 | 4.4 | 建筑完成 | milestone | 0d | 2006-05-08 | 2006-05-08 | 127 | 0d |  |  |  |
