# MSF 应用开发

Schedule from MS Project, 2004-01-01 to 2005-02-16.

## Calendars

- 标准: Mon-Fri 08:00-12:00, 13:00-17:00; Sat-Sun off.

## Resources

| Resource |
| --- |
| 程序管理人员 |
| 产品管理人员 |
| 开发 |
| 测试 |
| 后勤管理人员 |
| 用户培训 |
| 支持组织 |
| 用户 |

## Schedule

| ID | WBS | Task | Type | Duration | Start | Finish | Predecessors | Total slack | Free slack | Resources | Work |
| --- | --- | --- | --- | --- | --- | --- | --- | --- | --- | --- | --- |
| 1 | 1 | **项目启动** |  | 6d | 2004-01-01 | 2004-01-08 |  | 0d |  | 产品管理人员 | 368h |
| 2 | 1.1 | **组建工作组** |  | 6d | 2004-01-01 | 2004-01-08 |  | 0d |  |  | 320h |
| 3 | 1.1.1 | 定义工作组角色 |  | 2d | 2004-01-01 | 2004-01-02 |  | 0d |  | 程序管理人员; 产品管理人员; 开发; 测试; 后勤管理人员 | 80h |
| 4 | 1.1.2 | 确定所需技能 |  | 2d | 2004-01-01 | 2004-01-02 |  | 0d |  | 程序管理人员; 产品管理人员; 开发; 测试; 后勤管理人员 | 80h |
| 5 | 1.1.3 | 确定资源 |  | 2d | 2004-01-05 | 2004-01-06 | 4, 3 | 0d |  | 程序管理人员; 产品管理人员; 开发; 测试; 后勤管理人员 | 80h |
| 6 | 1.1.4 | 将角色赋予资源 |  | 2d | 2004-01-07 | 2004-01-08 | 5 | 0d |  | 程序管理人员; 产品管理人员; 开发; 测试; 后勤管理人员 | 80h |
| 7 | 1.1.5 | 工作组成立 | milestone | 0d | 2004-01-08 | 2004-01-08 | 6 | 0d |  |  |  |
| 8 | 2 | **构想** |  | 44d | 2004-01-09 | 2004-03-10 | 7 | 0d |  | 产品管理人员 | 1222.4h |
| 9 | 2.1 | 定义初步的商业需求(持续性工作) |  | 29d | 2004-01-09 | 2004-02-18 | 7 | 260d |  | 产品管理人员 [50%]; 程序管理人员 [20%] | 162.4h |
| 10 | 2.2 | 风险管理 |  | 1d | 2004-01-09 | 2004-01-09 | 7 | 43d |  |  |  |
| 11 | 2.3 | **定义项目结构** |  | 9d | 2004-01-09 | 2004-01-21 | 7 | 35d |  |  | 156h |
| 12 | 2.3.1 | 定义跟踪项目的步骤 |  | 5d | 2004-01-09 | 2004-01-15 |  | 39d | 4d | 程序管理人员 [25%]; 产品管理人员 [25%]; 用户培训 [25%]; 测试 [25%]; 开发 [25%]; 后勤管理人员 [25%] | 60h |
| 13 | 2.3.2 | 定义解决问题的步骤 |  | 4d | 2004-01-09 | 2004-01-14 |  | 40d | 5d | 程序管理人员 [25%]; 开发 [25%]; 测试 [25%] | 24h |
| 14 | 2.3.3 | 定义跟踪问题的步骤 |  | 3d | 2004-01-09 | 2004-01-13 |  | 35d | 0d | 开发 [25%]; 测试 [25%]; 程序管理人员 [50%] | 24h |
| 15 | 2.3.4 | 定义控制变更的步骤 |  | 4d | 2004-01-14 | 2004-01-19 | 14 | 35d | 0d | 测试 [25%]; 程序管理人员 [25%]; 开发 [25%]; 产品管理人员 [25%] | 32h |
| 16 | 2.3.5 | 定义责任和期望 |  | 2d | 2004-01-20 | 2004-01-21 | 15 | 35d | 0d | 程序管理人员 [50%]; 产品管理人员 [50%] | 16h |
| 17 | 2.3.6 | 项目结构确定完毕 | milestone | 0d | 2004-01-21 | 2004-01-21 | 12, 13, 16 | 35d |  |  |  |
| 18 | 2.4 | **研究和收集设想** |  | 25d | 2004-01-09 | 2004-02-12 |  | 0d |  |  | 208h |
| 19 | 2.4.1 | 进行初步的用户访问 |  | 2d | 2004-01-09 | 2004-01-12 |  | 0d |  | 产品管理人员; 程序管理人员; 开发 | 48h |
| 20 | 2.4.2 | 定义使用场合 |  | 10d | 2004-01-13 | 2004-01-26 | 19 | 0d |  | 产品管理人员 [25%]; 开发 [25%]; 程序管理人员 [25%] | 60h |
| 21 | 2.4.3 | 制定初步的用户描述 |  | 5d | 2004-01-27 | 2004-02-02 | 20 | 2d | 0d | 产品管理人员 [25%]; 用户培训 [25%] | 20h |
| 22 | 2.4.4 | 制定初步的构想说明 |  | 1d | 2004-02-03 | 2004-02-03 | 21 | 2d |  | 产品管理人员 [25%] | 2h |
| 23 | 2.4.5 | 确立设计目标 |  | 8d | 2004-01-27 | 2004-02-05 | 20 | 0d |  | 产品管理人员 [25%]; 程序管理人员 [25%]; 开发 [25%] | 48h |
| 24 | 2.4.6 | 制定初步的解决方案概念 |  | 5d | 2004-02-06 | 2004-02-12 | 23, 22 | 0d |  | 程序管理人员 [25%]; 用户 [25%]; 开发 [25%] | 30h |

Notes:
- 10: 此任务应贯穿整个构想阶段。体现这一点的方法之一就是执行从任务 12 的开始日期到此任务的开始日期的粘贴链接操作，然后再执行从任务 34 的完成日期到此任务的完成日期的粘贴链接操作。有关详细内容，请参阅模板的帮助文件。

| ID | WBS | Task | Type | Duration | Start | Finish | Predecessors | Total slack | Free slack | Resources | Work |
| --- | --- | --- | --- | --- | --- | --- | --- | --- | --- | --- | --- |
| 25 | 2.5 | **制定初步的项目范围** |  | 19d | 2004-02-13 | 2004-03-10 | 24, 22 | 0d |  |  | 344h |
| 26 | 2.5.1 | 定义关键的成功因素 |  | 2d | 2004-02-13 | 2004-02-16 |  | 0d |  | 产品管理人员 | 16h |
| 27 | 2.5.2 | 定义衡量成功的标准 |  | 1d | 2004-02-17 | 2004-02-17 | 26 | 0d |  | 产品管理人员; 测试 | 16h |
| 28 | 2.5.3 | 定义主要的可交付结果(初步) |  | 3d | 2004-02-18 | 2004-02-20 | 27 | 0d |  | 产品管理人员 [50%]; 程序管理人员 [50%] | 24h |
| 29 | 2.5.4 | 起草构想/范围 |  | 3d | 2004-02-23 | 2004-02-25 | 28 | 0d |  | 程序管理人员; 产品管理人员; 开发; 测试; 后勤管理人员 | 120h |
| 30 | 2.5.5 | 审阅构想/范围 |  | 2d | 2004-02-26 | 2004-02-27 | 29 | 0d |  | 程序管理人员; 产品管理人员; 开发; 测试; 后勤管理人员; 用户培训 | 96h |
| 31 | 2.5.6 | 更新构想/范围 |  | 3d | 2004-03-01 | 2004-03-03 | 30 | 0d |  | 产品管理人员 | 24h |
| 32 | 2.5.7 | 缓冲时间 |  | 4d | 2004-03-04 | 2004-03-09 | 31 | 0d |  |  |  |
| 33 | 2.5.8 | 进行里程碑检查 |  | 1d | 2004-03-10 | 2004-03-10 | 31, 32 | 0d |  | 程序管理人员; 产品管理人员; 开发; 测试; 后勤管理人员; 用户培训 | 48h |
| 34 | 2.6 | 构想得到批准 | milestone | 0d | 2004-03-10 | 2004-03-10 | 33, 28, 17, 10 | 0d |  | 程序管理人员; 产品管理人员; 开发; 测试; 后勤管理人员 |  |
| 35 | 3 | **规划** |  | 59d | 2004-03-11 | 2004-06-01 | 34 | 0d |  |  | 3541.2h |
| 36 | 3.1 | 更新风险评估 |  | 1d | 2004-03-11 | 2004-03-11 | 34 | 58d |  | 程序管理人员 | 8h |
| 37 | 3.2 | 进行用户访问 |  | 10d | 2004-03-11 | 2004-03-24 | 34 | 0d |  | 产品管理人员 [50%]; 开发 [25%]; 测试 [25%]; 后勤管理人员 [25%]; 程序管理人员 [50%] | 140h |
| 38 | 3.3 | **创建功能描述** |  | 31d | 2004-03-12 | 2004-04-23 |  | 0d |  |  | 448h |
| 39 | 3.3.1 | 制定功能描述: 第 0 批 |  | 5d | 2004-03-12 | 2004-03-18 | 37FS-9% | 0d |  | 程序管理人员 [80%]; 产品管理人员 [30%]; 开发 [40%]; 测试 [50%]; 后勤管理人员 [40%]; 用户培训 [40%] | 112h |
| 40 | 3.3.2 | 制定功能描述: 第 1 批 |  | 5d | 2004-03-19 | 2004-03-25 | 39 | 22d | 0d | 程序管理人员 [80%]; 产品管理人员 [30%]; 开发 [40%]; 测试 [50%]; 后勤管理人员 [40%]; 用户培训 [40%] | 112h |
| 41 | 3.3.3 | 制定功能描述: 第 2 批 |  | 5d | 2004-03-26 | 2004-04-01 | 40 | 22d | 0d | 程序管理人员 [80%]; 产品管理人员 [30%]; 开发 [40%]; 测试 [50%]; 后勤管理人员 [40%]; 用户培训 [40%] | 112h |
| 42 | 3.3.4 | 制定功能描述: 第 n 批 |  | 5d | 2004-04-02 | 2004-04-08 | 41 | 22d | 11d | 程序管理人员 [80%]; 产品管理人员 [30%]; 开发 [40%]; 测试 [50%]; 后勤管理人员 [40%]; 用户培训 [40%] | 112h |
| 43 | 3.3.5 | 功能描述基准 | milestone | 0d | 2004-04-23 | 2004-04-23 | 42, 48 | 11d | 2d | 程序管理人员 |  |
| 44 | 3.4 | **开发计划** |  | 28.25d | 2004-03-17 | 2004-04-26 |  | 0d |  |  | 598.8h |
| 45 | 3.4.1 | **创建开发计划** |  | 28d | 2004-03-17 | 2004-04-23 |  | 0d |  |  | 554.8h |
| 46 | 3.4.1.1 | 进行概念性设计 |  | 10d | 2004-03-17 | 2004-03-30 | 39SS+3d | 0d |  | 开发 [80%]; 程序管理人员 [40%]; 测试 [25%]; 产品管理人员 [20%] | 132h |
| 47 | 3.4.1.2 | 进行逻辑设计 |  | 15d | 2004-03-23 | 2004-04-12 | 46SS+4d | 0d |  | 开发 [50%]; 程序管理人员 [50%]; 测试 [25%]; 后勤管理人员 [25%]; 用户培训 [25%] | 210h |
| 48 | 3.4.1.3 | 进行物理设计 |  | 19d | 2004-03-30 | 2004-04-23 | 47SS+5d | 0d |  | 开发 [80%]; 测试 [50%]; 程序管理人员 [10%] | 212.8h |
| 49 | 3.4.2 | 制定开发日程 |  | 5d | 2004-04-19 | 2004-04-26 | 48SS+7.5% | 15.75d |  | 开发; 测试 [10%] | 44h |

Notes:
- 36: 此任务应贯穿整个规划阶段。体现这一点的方法之一就是执行从任务 37 的开始日期到此任务的开始日期的粘贴链接操作，然后再执行从任务 78 的完成日期到此任务的完成日期的粘贴链接操作。有关详细内容，请参阅模板的帮助文件。

| ID | WBS | Task | Type | Duration | Start | Finish | Predecessors | Total slack | Free slack | Resources | Work |
| --- | --- | --- | --- | --- | --- | --- | --- | --- | --- | --- | --- |
| 50 | 3.5 | **测试计划** |  | 35d | 2004-03-17 | 2004-05-04 |  | 9d |  | 测试 | 624h |
| 51 | 3.5.1 | 制定测试计划 |  | 30d | 2004-03-17 | 2004-04-27 | 39SS+3d | 9d | 0d | 测试; 程序管理人员 [25%] | 300h |
| 52 | 3.5.2 | 制定测试日程 |  | 5d | 2004-04-28 | 2004-05-04 | 51, 43 | 9d |  | 测试; 程序管理人员 [10%] | 44h |
| 53 | 3.6 | **用户培训计划** |  | 36d | 2004-03-17 | 2004-05-05 |  | 8d |  | 用户培训 | 691.2h |
| 54 | 3.6.1 | 制定用户培训计划 |  | 30d | 2004-03-17 | 2004-04-27 | 39SS+3d | 8d | 0d | 用户培训; 测试 [20%]; 产品管理人员 [10%]; 用户 [10%] | 336h |
| 55 | 3.6.2 | 制定用户培训日程 |  | 6d | 2004-04-28 | 2004-05-05 | 54 | 8d |  | 用户培训; 程序管理人员 [10%]; 产品管理人员 [20%]; 用户 [10%] | 67.2h |
| 56 | 3.7 | **后勤计划** |  | 48d | 2004-03-11 | 2004-05-17 |  | 0d |  | 后勤管理人员 | 705.6h |
| 57 | 3.7.1 | **制定后勤计划** |  | 43d | 2004-03-11 | 2004-05-10 |  | 0d |  |  | 321.6h |
| 58 | 3.7.1.1 | 进行基础设施分析 |  | 15d | 2004-03-11 | 2004-03-31 |  | 1d |  |  |  |
| 59 | 3.7.1.2 | 制定安全计划 |  | 2d | 2004-03-19 | 2004-03-22 | 39 | 8d |  | 后勤管理人员; 用户 [10%]; 产品管理人员 [10%] | 19.2h |
| 60 | 3.7.1.3 | 制定部署计划 |  | 27d | 2004-04-02 | 2004-05-10 | 39FS-3d, 59, 48SS+3d, 58 | 0d |  | 后勤管理人员; 测试 [20%]; 用户培训 [10%]; 用户 [10%] | 302.4h |
| 61 | 3.7.1.4 | 定购组件 |  | 15d | 2004-04-16 | 2004-05-06 | 60SS+10d | 0d |  |  |  |
| 62 | 3.7.1.5 | 后勤计划完成 | milestone | 0d | 2004-05-06 | 2004-05-06 | 59, 61 | 0d |  |  |  |
| 63 | 3.7.2 | 创建后勤日程 |  | 7d | 2004-05-07 | 2004-05-17 | 62 | 0d |  |  |  |
| 64 | 3.8 | **产品管理计划** |  | 18d | 2004-03-11 | 2004-04-05 |  | 30d |  |  | 48h |
| 65 | 3.8.1 | 制定产品管理计划 |  | 14d | 2004-03-17 | 2004-04-05 | 39SS+3d | 30d |  |  |  |
| 66 | 3.8.2 | 制定产品管理日程 |  | 5d | 2004-03-11 | 2004-03-17 |  | 43d |  | 产品管理人员; 程序管理人员 [20%] | 48h |
| 67 | 3.9 | **程序管理计划** |  | 41d | 2004-03-17 | 2004-05-12 | 39SS+3d | 3d |  |  | 164h |
| 68 | 3.9.1 | 创建程序管理计划 |  | 21d | 2004-03-17 | 2004-04-14 | 39SS+3d | 3d | 0d | 程序管理人员 [50%] | 84h |
| 69 | 3.9.2 | 创建程序管理日程 |  | 20d | 2004-04-15 | 2004-05-12 | 68 | 3d |  | 程序管理人员 [50%] | 80h |
| 70 | 3.10 | 建立项目计划基准 | milestone | 0d | 2004-05-17 | 2004-05-17 | 44, 50, 53, 56, 64, 67, 65 | 0d |  | 程序管理人员; 产品管理人员; 开发; 测试; 后勤管理人员 |  |
| 71 | 3.11 | **合并项目计划** |  | 11d | 2004-05-18 | 2004-06-01 | 70 | 0d |  |  | 113.6h |
| 72 | 3.11.1 | 审阅合并计划 |  | 4d | 2004-05-18 | 2004-05-21 |  | 0d |  | 程序管理人员 [30%]; 产品管理人员 [30%]; 开发 [30%]; 测试 [30%]; 后勤管理人员 [30%]; 用户培训 [30%] | 57.6h |
| 73 | 3.11.2 | 创建合并日程 |  | 2d | 2004-05-24 | 2004-05-25 | 72, 63, 69, 49, 52, 55, 66 | 0d |  |  |  |
| 74 | 3.11.3 | 缓冲时间 |  | 4d | 2004-05-26 | 2004-05-31 | 73 | 0d |  |  |  |
| 75 | 3.11.4 | 确定交货日期 | milestone | 0d | 2004-05-31 | 2004-05-31 | 74 | 0d |  | 程序管理人员; 产品管理人员; 开发; 测试; 后勤管理人员; 用户培训 |  |
| 76 | 3.11.5 | 构想/范围冻结 | milestone | 0d | 2004-05-31 | 2004-05-31 | 75 | 0d |  |  |  |
| 77 | 3.11.6 | 进行里程碑检查 |  | 1d | 2004-06-01 | 2004-06-01 | 76 | 0d |  | 程序管理人员; 产品管理人员; 开发; 测试; 后勤管理人员; 用户培训; 用户 | 56h |
| 78 | 3.12 | 项目计划得到批准 | milestone | 0d | 2004-06-01 | 2004-06-01 | 71, 77, 36 | 0d |  | 程序管理人员; 产品管理人员; 开发; 测试; 后勤管理人员 |  |

| ID | WBS | Task | Type | Duration | Start | Finish | Predecessors | Total slack | Free slack | Resources | Work |
| --- | --- | --- | --- | --- | --- | --- | --- | --- | --- | --- | --- |
| 79 | 4 | **开发** |  | 81d | 2004-06-01 | 2004-09-22 |  | 0d |  | 开发 | 3141.04h |
| 80 | 4.1 | 更新风险评估 |  | 1d | 2004-06-02 | 2004-06-02 | 78 | 79d |  | 程序管理人员 [3%]; 产品管理人员 [3%]; 开发 [3%]; 测试 [3%]; 后勤管理人员 [3%]; 用户培训 [3%] | 1.44h |
| 81 | 4.2 | 提供开发所需的设备/检验概念是否达到 | milestone | 0d | 2004-06-01 | 2004-06-01 | 78 | 0d |  | 后勤管理人员 |  |
| 82 | 4.3 | 建立开发环境/实验室 |  | 5d | 2004-06-02 | 2004-06-08 | 81 | 0d |  | 后勤管理人员 | 40h |
| 83 | 4.4 | **内部发布 #1** |  | 24d | 2004-06-02 | 2004-07-05 |  | 0d |  | 开发 | 691.6h |
| 84 | 4.4.1 | 开发目标组件 |  | 9d | 2004-06-02 | 2004-06-14 | 78 | 15d |  | 开发; 后勤管理人员 | 144h |
| 85 | 4.4.2 | 测试单个组件 |  | 5d | 2004-06-09 | 2004-06-15 | 82 | 0d |  | 测试; 开发 [25%] | 50h |
| 86 | 4.4.3 | 测试组装为整体的应用程序 |  | 6d | 2004-06-11 | 2004-06-18 | 85SS+2d | 0d |  | 测试; 开发 [25%] | 60h |
| 87 | 4.4.4 | 开发增强性能的材料 |  | 4d | 2004-06-02 | 2004-06-07 | 78 | 8d | 0d | 用户培训 | 32h |
| 88 | 4.4.5 | 测试和审查材料 |  | 3d | 2004-06-08 | 2004-06-10 | 87 | 8d | 0d | 测试 | 24h |
| 89 | 4.4.6 | 制定分发步骤 |  | 9d | 2004-06-11 | 2004-06-23 | 88 | 8d |  | 后勤管理人员; 测试 [30%] | 93.6h |
| 90 | 4.4.7 | 创建分发产品 |  | 2d | 2004-06-21 | 2004-06-22 | 85, 86 | 0d |  | 程序管理人员; 开发; 测试; 后勤管理人员; 用户培训 | 80h |
| 91 | 4.4.8 | 分发给合适的对象 |  | 1d | 2004-06-23 | 2004-06-23 | 90 | 0d |  | 程序管理人员; 后勤管理人员 | 16h |
| 92 | 4.4.9 | 缓冲时间 |  | 8d | 2004-06-24 | 2004-07-05 | 91 | 0d |  |  |  |
| 93 | 4.5 | 内部发布 #1 结束 | milestone | 0d | 2004-07-05 | 2004-07-05 | 83, 92 | 0d |  | 程序管理人员; 产品管理人员; 开发; 测试; 后勤管理人员 |  |
| 94 | 4.6 | 审阅来自内部发布的结果 |  | 2d | 2004-07-06 | 2004-07-07 | 93 | 0d |  |  |  |
| 95 | 4.7 | 进行发布后的审阅 |  | 1d | 2004-07-08 | 2004-07-08 | 94 | 0d |  |  |  |
| 96 | 4.8 | **内部发布 #n** |  | 24d | 2004-07-06 | 2004-08-06 |  | 0d |  | 开发 | 696h |
| 97 | 4.8.1 | 开发目标组件 |  | 10d | 2004-07-06 | 2004-07-19 | 93 | 3d |  | 开发; 测试 [50%]; 后勤管理人员 | 200h |
| 98 | 4.8.2 | 测试单个组件 |  | 4d | 2004-07-06 | 2004-07-09 | 93 | 9d |  | 测试 | 32h |
| 99 | 4.8.3 | 测试组装为整体的应用程序 |  | 5d | 2004-07-06 | 2004-07-12 | 93 | 18d |  | 测试 | 40h |
| 100 | 4.8.4 | 开发增强性能的材料 |  | 4d | 2004-07-09 | 2004-07-14 | 95 | 0d |  | 用户培训 | 32h |
| 101 | 4.8.5 | 测试和审查材料 |  | 3d | 2004-07-15 | 2004-07-19 | 100 | 0d |  | 测试 | 24h |
| 102 | 4.8.6 | 制定分发步骤 |  | 3d | 2004-07-20 | 2004-07-22 | 101 | 0d |  | 后勤管理人员 | 24h |
| 103 | 4.8.7 | 创建分发产品 |  | 4d | 2004-07-23 | 2004-07-28 | 98, 97, 102 | 0d |  | 开发; 测试; 后勤管理人员; 用户培训 | 128h |
| 104 | 4.8.8 | 缓冲时间 |  | 6d | 2004-07-29 | 2004-08-05 | 103 | 0d |  |  |  |
| 105 | 4.8.9 | 分发给合适的对象 |  | 1d | 2004-08-06 | 2004-08-06 | 99, 104 | 0d |  | 后勤管理人员; 程序管理人员; 产品管理人员 | 24h |
| 106 | 4.9 | 内部发布 #n 结束 |  | 1d | 2004-08-09 | 2004-08-09 | 96, 105 | 0d |  | 程序管理人员; 产品管理人员; 开发; 测试; 后勤管理人员 | 40h |
| 107 | 4.10 | 审阅来自内部发布的结果 |  | 2d | 2004-08-10 | 2004-08-11 | 106 | 0d |  | 程序管理人员; 产品管理人员; 开发; 测试; 后勤管理人员; 用户培训 | 96h |
| 108 | 4.11 | 功能说明冻结 |  | 1d | 2004-08-12 | 2004-08-12 | 107 | 0d |  |  |  |
| 109 | 4.12 | 最后的特性开发 |  | 10d | 2004-08-13 | 2004-08-26 | 108 | 0d |  | 开发; 测试 [50%] | 120h |
| 110 | 4.13 | 最后的后勤开发 |  | 9d | 2004-08-13 | 2004-08-25 | 108 | 1d |  | 后勤管理人员; 测试 [50%] | 108h |
| 111 | 4.14 | 最后的性能支持开发 |  | 5d | 2004-08-13 | 2004-08-19 | 108 | 5d |  | 用户培训; 测试 [50%] | 60h |
| 112 | 4.15 | 特性开发结束 | milestone | 0d | 2004-08-26 | 2004-08-26 | 109, 111, 110 | 0d |  |  |  |

Notes:
- 80: 此任务应贯穿整个开发阶段。体现这一点的方法之一就是执行从任务 81 的开始日期到此任务的开始日期的粘贴链接操作，然后再执行从任务 122 的完成日期到此任务的完成日期的粘贴链接操作。有关详细内容，请参阅模板的帮助文件。

| ID | WBS | Task | Type | Duration | Start | Finish | Predecessors | Total slack | Resources | Work |
| --- | --- | --- | --- | --- | --- | --- | --- | --- | --- | --- |
| 113 | 4.16 | **更新计划和日程** |  | 13d | 2004-08-27 | 2004-09-14 |  | 0d | 程序管理人员 | 360h |
| 114 | 4.16.1 | 更新开发计划 |  | 4d | 2004-08-27 | 2004-09-01 | 112 | 0d | 开发 | 32h |
| 115 | 4.16.2 | 更新测试计划 |  | 3d | 2004-08-27 | 2004-08-31 | 114SS | 10d | 测试 | 24h |
| 116 | 4.16.3 | 更新后勤计划 |  | 13d | 2004-08-27 | 2004-09-14 | 114SS | 0d | 后勤管理人员 | 104h |
| 117 | 4.16.4 | 更新程序管理计划 |  | 3d | 2004-08-27 | 2004-08-31 | 114SS | 10d | 程序管理人员 | 24h |
| 118 | 4.16.5 | 更新产品管理计划 |  | 3d | 2004-08-27 | 2004-08-31 | 114SS | 10d | 产品管理人员 | 24h |
| 119 | 4.16.6 | 更新用户培训计划 |  | 6d | 2004-08-27 | 2004-09-03 | 114SS | 7d | 用户培训 | 48h |
| 120 | 4.17 | 缓冲时间 |  | 3d | 2004-09-15 | 2004-09-17 | 114, 115, 116, 119, 117, 118 | 0d | 程序管理人员; 产品管理人员; 开发; 测试; 后勤管理人员; 用户培训 | 144h |
| 121 | 4.18 | 进行里程碑检查 |  | 2d | 2004-09-20 | 2004-09-21 | 120 | 0d | 程序管理人员; 产品管理人员; 开发; 测试; 后勤管理人员; 用户培训 | 96h |
| 122 | 4.19 | 项目范围规划完成 |  | 1d | 2004-09-22 | 2004-09-22 | 113, 121, 80 | 0d | 程序管理人员; 产品管理人员; 开发; 测试; 后勤管理人员 | 40h |
| 123 | 5 | **稳定** |  | 73d | 2004-09-23 | 2005-01-03 |  | 0d | 后勤管理人员 | 1684h |
| 124 | 5.1 | 更新风险评估 |  | 1d | 2004-09-23 | 2004-09-23 | 122, 103 | 71d | 程序管理人员 [10%]; 产品管理人员 [10%]; 开发 [10%]; 测试 [10%]; 后勤管理人员 [10%]; 用户培训 [10%]; 支持组织 [10%]; 用户 [10%] | 6.4h |
| 125 | 5.2 | **发布测试版 1** |  | 32d | 2004-09-23 | 2004-11-05 |  | 0d |  | 784h |
| 126 | 5.2.1 | 制定测试版计划 |  | 3d | 2004-09-23 | 2004-09-27 | 103, 122 | 0d | 程序管理人员; 后勤管理人员 | 48h |
| 127 | 5.2.2 | 征寻和选择用户 |  | 2d | 2004-09-28 | 2004-09-29 | 126 | 0d | 产品管理人员; 程序管理人员 | 32h |
| 128 | 5.2.3 | 准备测试版产品包 |  | 8d | 2004-09-28 | 2004-10-07 | 120, 127SS | 0d | 程序管理人员; 开发; 后勤管理人员; 测试 | 256h |
| 129 | 5.2.4 | 开始测试 | milestone | 0d | 2004-10-07 | 2004-10-07 | 128 | 0d |  |  |
| 130 | 5.2.5 | 提供测试支持 |  | 8d | 2004-10-08 | 2004-10-19 | 129 | 0d | 开发; 后勤管理人员 | 128h |
| 131 | 5.2.6 | 收集用户反馈 |  | 7d | 2004-10-20 | 2004-10-28 | 130 | 0d |  |  |
| 132 | 5.2.7 | 结束测试支持 | milestone | 0d | 2004-10-28 | 2004-10-28 | 131 | 0d |  |  |
| 133 | 5.2.8 | 修补缺陷 |  | 10d | 2004-10-25 | 2004-11-05 | 132FS-4d | 0d | 开发; 程序管理人员; 后勤管理人员; 用户培训 | 320h |
| 134 | 5.2.9 | 结束测试 | milestone | 0d | 2004-11-05 | 2004-11-05 | 130, 133 | 0d |  |  |
| 135 | 5.3 | 发布测试版 n |  | 1d | 2004-11-08 | 2004-11-08 | 134 | 0d |  |  |
| 136 | 5.4 | 修补缺陷 |  | 10d | 2004-11-09 | 2004-11-22 | 135 | 0d | 开发; 测试; 程序管理人员 [25%] | 180h |
| 137 | 5.5 | 收集错误 |  | 1d | 2004-11-23 | 2004-11-23 | 136 | 0d |  |  |
| 138 | 5.6 | 改正高优先级的错误 |  | 10d | 2004-11-24 | 2004-12-07 | 137 | 0d |  |  |
| 139 | 5.7 | 发布无错误版 | milestone | 0d | 2004-12-07 | 2004-12-07 | 138 | 0d | 程序管理人员 |  |
| 140 | 5.8 | 进行最后的错误分类 |  | 5d | 2004-12-08 | 2004-12-14 | 139 | 0d |  |  |

Notes:
- 124: 此任务应贯穿整个稳定阶段。体现这一点的方法之一就是执行从任务 126 的开始日期到此任务的开始日期的粘贴链接操作，然后再执行从任务 147 的完成日期到此任务的完成日期的粘贴链接操作。有关详细内容，请参阅模板的帮助文件。

| ID | WBS | Task | Type | Duration | Start | Finish | Predecessors | Total slack | Resources | Work |
| --- | --- | --- | --- | --- | --- | --- | --- | --- | --- | --- |
| 141 | 5.9 | **发布版候选 1** |  | 7d | 2004-12-15 | 2004-12-23 | 140 | 0d |  | 129.6h |
| 142 | 5.9.1 | 进行工作组评估 |  | 2d | 2004-12-15 | 2004-12-16 |  | 0d | 开发; 后勤管理人员 [80%]; 程序管理人员 [50%]; 产品管理人员 [30%]; 用户培训 [50%]; 测试 [75%] | 61.6h |
| 143 | 5.9.2 | 客户/用户评估 |  | 2d | 2004-12-17 | 2004-12-20 | 142 | 0d | 产品管理人员; 用户培训 | 32h |
| 144 | 5.9.3 | 支持评估 |  | 3d | 2004-12-21 | 2004-12-23 | 143 | 0d | 支持组织; 后勤管理人员 [25%]; 程序管理人员 [25%] | 36h |
| 145 | 5.10 | 发布版候选 n |  | 6d | 2004-12-24 | 2004-12-31 | 144 | 0d |  |  |
| 146 | 5.11 | 黄金发布版 | milestone | 0d | 2004-12-31 | 2004-12-31 | 145 | 0d |  |  |
| 147 | 5.12 | 发布 |  | 1d | 2005-01-03 | 2005-01-03 | 146, 124 | 0d |  |  |
| 148 | 6 | 项目后检查 |  | 2d | 2005-02-15 | 2005-02-16 | 147FS+30d | 0d |  |  |
