# 新产品

Schedule from MS Project, 2004-01-01 to 2006-12-07.

## Calendars

- 标准: Mon-Fri 08:00-12:00, 13:00-17:00; Sat-Sun off.

## Resources

| Resource |
| --- |
| 管理人员 |
| 产品工程设计 |
| 法律 |
| 市场 |
| 项目经理 |
| 加工工程师 |
| 生产工程师 |
| 安全 |
| 会计 |
| 用户 |
| 采购 |

## Schedule

| ID | WBS | Task | Type | Duration | Start | Finish | Predecessors | Total slack | Resources | Work |
| --- | --- | --- | --- | --- | --- | --- | --- | --- | --- | --- |
| 1 | 1 | **新产品开发模板** |  | 766d | 2004-01-01 | 2006-12-07 |  | 0d |  | 15688h |
| 2 | 1.1 | **新产品的初步筛选阶段** |  | 9d | 2004-01-01 | 2004-01-13 |  | 0d |  | 72h |
| 3 | 1.1.1 | 确定新产品的市场机会 | milestone | 0d | 2004-01-01 | 2004-01-01 |  | 0d | 管理人员; 产品工程设计 |  |
| 4 | 1.1.2 | 说明新产品设想(一页书面形式的披露材料) |  | 2d | 2004-01-01 | 2004-01-02 | 3 | 0d | 产品工程设计 | 16h |
| 5 | 1.1.3 | 为进行可行性决策搜集信息 |  | 6d | 2004-01-05 | 2004-01-12 | 4 | 0d | 产品工程设计 | 48h |
| 6 | 1.1.4 | 召开筛选委员会会议(决策是否采纳设想) |  | 1d | 2004-01-13 | 2004-01-13 | 5 | 0d | 产品工程设计 | 8h |
| 7 | 1.1.5 | 决策点: 是否进行初步研究 | milestone | 0d | 2004-01-13 | 2004-01-13 | 6 | 0d | 管理人员; 产品工程设计 |  |
| 8 | 1.2 | **初步研究阶段** |  | 53d | 2004-01-14 | 2004-03-26 |  | 0d |  | 1216h |
| 9 | 1.2.1 | 为初步研究分配资源 |  | 1d | 2004-01-14 | 2004-01-14 | 7 | 0d | 管理人员 | 8h |
| 10 | 1.2.2 | 制定初步研究计划 |  | 5d | 2004-01-15 | 2004-01-21 | 9 | 751d | 产品工程设计; 项目经理 | 80h |
| 11 | 1.2.3 | 对市场进行评估 |  | 10d | 2004-01-15 | 2004-01-28 | 9 | 746d | 市场 | 80h |
| 12 | 1.2.4 | 分析竞争情况 |  | 5d | 2004-01-15 | 2004-01-21 | 9 | 0d | 市场 | 40h |
| 13 | 1.2.5 | **技术可行性分析** |  | 20d | 2004-01-22 | 2004-02-18 |  | 0d |  | 160h |
| 14 | 1.2.5.1 | 生产实验室规模的产品 |  | 10d | 2004-01-22 | 2004-02-04 | 12 | 0d | 产品工程设计 | 80h |
| 15 | 1.2.5.2 | 评估内部产品 |  | 5d | 2004-02-05 | 2004-02-11 | 14 | 0d | 产品工程设计 | 40h |
| 16 | 1.2.5.3 | 确定生产所需的加工过程 |  | 5d | 2004-02-12 | 2004-02-18 | 15 | 0d | 加工工程师 | 40h |
| 17 | 1.2.6 | 评估生产能力 |  | 10d | 2004-02-19 | 2004-03-03 | 16 | 0d | 产品工程设计; 生产工程师 | 160h |
| 18 | 1.2.7 | 确定安全因素 |  | 10d | 2004-02-19 | 2004-03-03 | 17SS | 0d | 安全 | 80h |
| 19 | 1.2.8 | 确定环境因素 |  | 10d | 2004-02-19 | 2004-03-03 | 18SS | 0d | 产品工程设计; 法律 | 160h |
| 20 | 1.2.9 | 检查法律问题 |  | 10d | 2004-02-19 | 2004-03-03 | 19SS | 0d | 法律; 项目经理 | 160h |
| 21 | 1.2.10 | 进行财务评估 |  | 10d | 2004-03-04 | 2004-03-17 | 20, 17, 18, 19 | 0d | 会计 | 80h |
| 22 | 1.2.11 | 进行风险分析 |  | 5d | 2004-03-18 | 2004-03-24 | 21 | 0d | 产品工程设计; 项目经理 | 80h |
| 23 | 1.2.12 | 起草初步开发阶段计划 |  | 10d | 2004-03-04 | 2004-03-17 | 21SS | 5d | 产品工程设计 | 80h |
| 24 | 1.2.13 | 做出初步研究阶段的决策 |  | 2d | 2004-03-25 | 2004-03-26 | 22, 23 | 0d | 管理人员; 产品工程设计; 项目经理 | 48h |
| 25 | 1.2.14 | 决策点: 是否进入开发阶段 | milestone | 0d | 2004-03-26 | 2004-03-26 | 24 | 704d | 管理人员; 项目经理 |  |

| ID | WBS | Task | Type | Duration | Start | Finish | Predecessors | Total slack | Free slack | Resources | Work |
| --- | --- | --- | --- | --- | --- | --- | --- | --- | --- | --- | --- |
| 26 | 1.3 | **开发阶段** |  | 264d | 2004-03-29 | 2005-03-31 |  | 0d |  |  | 5408h |
| 27 | 1.3.1 | 为开发阶段计划分配资源 |  | 1d | 2004-03-29 | 2004-03-29 | 24 | 0d |  | 管理人员; 项目经理 | 16h |
| 28 | 1.3.2 | **市场评估** |  | 40d | 2004-03-30 | 2004-05-24 |  | 2d |  |  | 480h |
| 29 | 1.3.2.1 | 搜集市场信息 |  | 15d | 2004-03-30 | 2004-04-19 | 27 | 2d | 0d | 产品工程设计; 市场 | 240h |
| 30 | 1.3.2.2 | 确定并联系抽样用户群 |  | 5d | 2004-04-20 | 2004-04-26 | 29 | 12d | 10d | 市场 | 40h |
| 31 | 1.3.2.3 | 进行竞争者分析 |  | 15d | 2004-04-20 | 2004-05-10 | 29 | 2d | 0d | 市场 | 120h |
| 32 | 1.3.2.4 | 重新定义产品需求 |  | 10d | 2004-05-11 | 2004-05-24 | 30, 31 | 2d |  | 产品工程设计 | 80h |
| 33 | 1.3.3 | **产品技术评估** |  | 204d | 2004-03-30 | 2005-01-07 |  | 0d |  |  | 3488h |
| 34 | 1.3.3.1 | 确定产品特征(性能标准) |  | 2d | 2004-03-30 | 2004-03-31 | 27 | 0d |  | 产品工程设计 | 16h |
| 35 | 1.3.3.2 | 研究原型生产过程 |  | 10d | 2004-04-01 | 2004-04-14 | 34 | 0d |  | 产品工程设计 | 80h |
| 36 | 1.3.3.3 | 生产原型产品 |  | 25d | 2004-04-15 | 2004-05-19 | 35 | 0d |  | 产品工程设计 | 200h |
| 37 | 1.3.3.4 | 进行内部产品审查 |  | 5d | 2004-05-20 | 2004-05-26 | 36 | 0d |  | 管理人员; 产品工程设计 | 80h |
| 38 | 1.3.3.5 | 为专利申请过程建立档案 |  | 10d | 2004-04-01 | 2004-04-14 | 34 | 229d | 194d | 产品工程设计 | 80h |
| 39 | 1.3.3.6 | 进行市场/技术审查 |  | 92d | 2004-05-27 | 2004-10-01 | 37, 32 | 0d |  | 市场; 产品工程设计 | 1472h |
| 40 | 1.3.3.7 | 重新设计生产过程(如果必要) |  | 10d | 2004-10-04 | 2004-10-15 | 39 | 0d |  | 产品工程设计; 加工工程师 | 160h |
| 41 | 1.3.3.8 | 修改原型生产过程 |  | 15d | 2004-10-18 | 2004-11-05 | 40 | 0d |  | 加工工程师 | 120h |
| 42 | 1.3.3.9 | 制定用户产品测试计划 |  | 5d | 2004-11-08 | 2004-11-12 | 41 | 20d |  | 项目经理 | 40h |
| 43 | 1.3.3.10 | 生产用于用户测试的产品 |  | 25d | 2004-11-08 | 2004-12-10 | 41 | 0d |  | 产品工程设计; 市场; 项目经理 | 600h |
| 44 | 1.3.3.11 | 审查初步的生产过程 |  | 10d | 2004-12-13 | 2004-12-24 | 43 | 10d |  | 加工工程师; 生产工程师 | 160h |
| 45 | 1.3.3.12 | 展开用户对原型产品的测试 |  | 20d | 2004-12-13 | 2005-01-07 | 43, 42 | 0d |  | 产品工程设计; 项目经理; 用户 | 480h |
| 46 | 1.3.4 | **概念评估** |  | 57d | 2005-01-10 | 2005-03-29 |  | 0d |  |  | 1376h |
| 47 | 1.3.4.1 | 进行市场/技术审查 |  | 2d | 2005-01-10 | 2005-01-11 | 45, 44 | 0d |  | 管理人员; 产品工程设计; 市场 | 48h |
| 48 | 1.3.4.2 | 准备初步的生产设计 |  | 20d | 2005-01-12 | 2005-02-08 | 47 | 0d |  | 产品工程设计 | 160h |
| 49 | 1.3.4.3 | 评估可供选择的外包生产方案 |  | 10d | 2005-02-09 | 2005-02-22 | 48 | 467d |  | 法律; 加工工程师 | 160h |
| 50 | 1.3.4.4 | 审查法律和专利方面的问题 |  | 10d | 2005-01-12 | 2005-01-25 | 47, 38 | 35d |  | 管理人员; 法律 | 160h |
| 51 | 1.3.4.5 | 审查环境问题 |  | 10d | 2005-02-09 | 2005-02-22 | 48 | 5d |  | 产品工程设计 | 80h |
| 52 | 1.3.4.6 | 审查产品安全性 |  | 15d | 2005-01-12 | 2005-02-01 | 47 | 20d |  | 产品工程设计; 安全 | 240h |
| 53 | 1.3.4.7 | 评估/预测产品生命周期 |  | 15d | 2005-02-09 | 2005-03-01 | 48 | 0d |  | 产品工程设计; 项目经理 | 240h |
| 54 | 1.3.4.8 | 更新财政分析 |  | 10d | 2005-03-02 | 2005-03-15 | 53, 52, 51, 57 | 0d |  | 会计 | 80h |
| 55 | 1.3.4.9 | 风险分析 |  | 10d | 2005-03-16 | 2005-03-29 | 50, 54, 52 | 0d |  | 产品工程设计 | 80h |
| 56 | 1.3.4.10 | 审查初步的研究标准 |  | 2d | 2005-03-16 | 2005-03-17 | 54 | 8d |  | 管理人员; 产品工程设计; 法律 | 48h |
| 57 | 1.3.4.11 | 制定试生产阶段计划 |  | 5d | 2005-01-12 | 2005-01-18 | 48SS | 30d |  | 产品工程设计; 项目经理 | 80h |
| 58 | 1.3.5 | 进行开发阶段审查 |  | 2d | 2005-03-30 | 2005-03-31 | 55, 56, 57 | 0d |  | 产品工程设计; 项目经理; 加工工程师 | 48h |
| 59 | 1.3.6 | 决策点: 是否进入试生产阶段 | milestone | 0d | 2005-03-31 | 2005-03-31 | 58 | 0d |  | 管理人员; 项目经理 |  |

| ID | WBS | Task | Duration | Start | Finish | Predecessors | Total slack | Resources | Work |
| --- | --- | --- | --- | --- | --- | --- | --- | --- | --- |
| 60 | 1.4 | **试生产阶段** | 115d | 2005-04-01 | 2005-09-08 |  | 0d |  | 1992h |
| 61 | 1.4.1 | 为试生产阶段分配资源 | 1d | 2005-04-01 | 2005-04-01 | 58, 59 | 0d | 管理人员; 项目经理 | 16h |
| 62 | 1.4.2 | 确保用户能参予商品化试验阶段的工作 | 5d | 2005-04-04 | 2005-04-08 | 61 | 0d | 法律; 项目经理 | 80h |
| 63 | 1.4.3 | **试生产** | 70d | 2005-04-11 | 2005-07-15 |  | 0d |  | 1160h |
| 64 | 1.4.3.1 | 排定日程/保留试生产所需的设施 | 5d | 2005-04-11 | 2005-04-15 | 62 | 0d | 项目经理 | 40h |
| 65 | 1.4.3.2 | 解决原材料和成品的后勤问题 | 5d | 2005-04-18 | 2005-04-22 | 64 | 0d | 产品工程设计; 项目经理 | 80h |
| 66 | 1.4.3.3 | 复查试生产计划和要求 | 5d | 2005-04-11 | 2005-04-15 | 62 | 5d | 产品工程设计; 项目经理 | 80h |
| 67 | 1.4.3.4 | 开始试生产 | 30d | 2005-04-25 | 2005-06-03 | 65, 66 | 0d | 产品工程设计 | 240h |
| 68 | 1.4.3.5 | 监控用户试用情况 | 20d | 2005-04-25 | 2005-05-20 | 67SS | 0d | 产品工程设计 | 160h |
| 69 | 1.4.3.6 | 审查初步试生产的结果 | 10d | 2005-05-23 | 2005-06-03 | 68 | 0d | 产品工程设计; 项目经理 | 160h |
| 70 | 1.4.3.7 | 继续试生产 | 30d | 2005-06-06 | 2005-07-15 | 69 | 0d | 产品工程设计 | 240h |
| 71 | 1.4.3.8 | 完成对用户试用情况的监控 | 20d | 2005-06-06 | 2005-07-01 | 70SS | 0d | 产品工程设计 | 160h |
| 72 | 1.4.4 | **试验结果分析** | 49d | 2005-07-04 | 2005-09-08 |  | 0d |  | 736h |
| 73 | 1.4.4.1 | 确认销售和营销策略 | 5d | 2005-07-04 | 2005-07-08 | 71 | 0d | 市场; 项目经理 | 80h |
| 74 | 1.4.4.2 | 确认产品的安全性 | 5d | 2005-07-04 | 2005-07-08 | 73SS | 0d | 项目经理; 安全 | 80h |
| 75 | 1.4.4.3 | 重新评估生产过程 | 15d | 2005-07-11 | 2005-07-29 | 73, 74 | 0d | 加工工程师 | 120h |
| 76 | 1.4.4.4 | 制定商品化计划 | 15d | 2005-08-01 | 2005-08-19 | 75 | 0d | 产品工程设计; 市场 | 240h |
| 77 | 1.4.4.5 | 复查财务状况 | 5d | 2005-08-22 | 2005-08-26 | 76 | 5d | 会计 | 40h |
| 78 | 1.4.4.6 | 复查专利和法律问题 | 10d | 2005-08-22 | 2005-09-02 | 76 | 0d | 法律 | 80h |
| 79 | 1.4.4.7 | 指定商品化过程的领导职责和资源 | 2d | 2005-09-05 | 2005-09-06 | 77, 78 | 0d | 管理人员; 项目经理 | 32h |
| 80 | 1.4.4.8 | 对试生产阶段进行审查并做出商品化决策 | 2d | 2005-09-07 | 2005-09-08 | 79 | 0d | 管理人员; 产品工程设计; 市场; 加工工程师 | 64h |
| 81 | 1.5 | **商品化阶段** | 195d | 2005-09-09 | 2006-06-08 |  | 0d |  | 3480h |
| 82 | 1.5.1 | **产品的生产和监控** | 168d | 2005-09-09 | 2006-05-02 |  | 0d |  | 2608h |
| 83 | 1.5.1.1 | 确认产品规范 | 3d | 2005-09-09 | 2005-09-13 | 80 | 0d | 产品工程设计; 生产工程师 | 48h |
| 84 | 1.5.1.2 | 确认用户对规范的接受程度并参与试验 | 10d | 2005-09-14 | 2005-09-27 | 83 | 0d | 产品工程设计; 项目经理 | 160h |
| 85 | 1.5.1.3 | 确定生产过程的要求 | 10d | 2005-09-28 | 2005-10-11 | 84 | 0d | 加工工程师; 生产工程师 | 160h |
| 86 | 1.5.1.4 | 设计和定购新的设备 | 30d | 2005-10-12 | 2005-11-22 | 85 | 0d | 产品工程设计; 采购 | 480h |
| 87 | 1.5.1.5 | 安装并测试新的设备或改装的设备 | 30d | 2005-11-23 | 2006-01-03 | 86 | 0d | 产品工程设计; 生产工程师 | 480h |
| 88 | 1.5.1.6 | 确认生产能力 | 10d | 2006-01-04 | 2006-01-17 | 87 | 0d | 生产工程师 | 80h |
| 89 | 1.5.1.7 | 制定并审查生产试验计划(解决后勤问题) | 5d | 2006-01-18 | 2006-01-24 | 88 | 0d | 产品工程设计; 项目经理 | 80h |
| 90 | 1.5.1.8 | 开始商业产量的生产 | 40d | 2006-01-25 | 2006-03-21 | 89 | 0d | 产品工程设计; 生产工程师 | 640h |
| 91 | 1.5.1.9 | 监控用户接受程度试验 | 30d | 2006-03-22 | 2006-05-02 | 90 | 0d | 产品工程设计; 项目经理 | 480h |

| ID | WBS | Task | Duration | Start | Finish | Predecessors | Total slack | Free slack | Resources | Work |
| --- | --- | --- | --- | --- | --- | --- | --- | --- | --- | --- |
| 92 | 1.5.2 | **商品化分析** | 57d | 2006-03-22 | 2006-06-08 |  | 0d |  |  | 872h |
| 93 | 1.5.2.1 | 进行内部产品测试 | 15d | 2006-03-22 | 2006-04-11 | 90 | 15d |  | 产品工程设计 | 120h |
| 94 | 1.5.2.2 | 审查生产业绩 | 10d | 2006-05-03 | 2006-05-16 | 91, 93 | 0d |  | 管理人员; 产品工程设计; 项目经理 | 240h |
| 95 | 1.5.2.3 | 确定长期生产需求 | 15d | 2006-05-17 | 2006-06-06 | 94 | 0d |  | 加工工程师; 生产工程师 | 240h |
| 96 | 1.5.2.4 | 重新计算产品经济效益 | 10d | 2006-05-17 | 2006-05-30 | 94 | 5d |  | 产品工程设计; 市场; 会计 | 240h |
| 97 | 1.5.2.5 | 确认继续进行商品化的决策 | 2d | 2006-06-07 | 2006-06-08 | 96, 95 | 0d |  | 管理人员; 项目经理 | 32h |
| 98 | 1.6 | **商品化完成后的回顾** | 130d | 2006-06-09 | 2006-12-07 |  | 0d |  |  | 3520h |
| 99 | 1.6.1 | 确定产品是否达到用户对成本/性能比的期望 | 60d | 2006-06-09 | 2006-08-31 | 97 | 0d |  | 管理人员; 项目经理 | 960h |
| 100 | 1.6.2 | 确定销售是否达到了预期值 | 60d | 2006-06-09 | 2006-08-31 | 99SS | 40d | 0d | 管理人员; 市场 | 960h |
| 101 | 1.6.3 | 确定产品在竞争对手做出反应的情况下是否保持了市场份额 | 30d | 2006-09-01 | 2006-10-12 | 100 | 40d |  | 管理人员; 市场 | 480h |
| 102 | 1.6.4 | 评估生产过程的稳定性和成本效益 | 40d | 2006-09-01 | 2006-10-26 | 99 | 0d |  | 项目经理; 生产工程师 | 640h |
| 103 | 1.6.5 | 确定当前的经济状况是否与预期的经济状况相一致 | 15d | 2006-10-27 | 2006-11-16 | 102 | 0d |  | 市场 | 120h |
| 104 | 1.6.6 | 评估扩大产品和产品线的可能性 | 15d | 2006-11-17 | 2006-12-07 | 103 | 0d |  | 管理人员; 产品工程设计; 市场 | 360h |
