# Microsoft Office 2003 部署

Schedule from MS Project, 2003-09-15 to 2004-03-23.

## Calendars

- 标准: Mon-Fri 08:00-12:00, 13:00-17:00; Sat-Sun off.

## Resources

| Resource |
| --- |
| 项目经理 |
| 数据库管理员 |
| 部署管理员 |
| 台式计算机管理员 |
| Intranet/Internet 管理员 |
| 浏览器管理员 |
| 网络管理员 |
| 测试/QA 负责人 |
| 用户教育/培训负责人 |
| 后勤管理负责人 |
| 风险承担者 |

## Schedule

| ID | WBS | Task | Type | Duration | Start | Finish | Predecessors | Total slack | Free slack | Resources | Work |
| --- | --- | --- | --- | --- | --- | --- | --- | --- | --- | --- | --- |
| 1 | 1 | **Microsoft Office 2003 部署** |  | 136.5d | 2003-09-15 | 2004-03-23 |  | 0d |  |  | 1912h |
| 2 | 1.1 | **构想** |  | 10d | 2003-09-15 | 2003-09-26 |  | 0d |  |  | 104h |
| 3 | 1.1.1 | 汇总当前信息工作者工具 |  | 2d | 2003-09-15 | 2003-09-16 |  | 0d |  | 风险承担者 | 16h |
| 4 | 1.1.2 | 确定公司台式计算机虚构关系(例如，跨国公司) |  | 2d | 2003-09-17 | 2003-09-18 | 3 | 0d |  | 风险承担者 | 16h |
| 5 | 1.1.3 | 确定项目范围(例如，早期的使用者、部门部署) |  | 3d | 2003-09-19 | 2003-09-23 | 4 | 0d |  | 风险承担者 | 24h |
| 6 | 1.1.4 | 确定主要里程碑 |  | 1d | 2003-09-24 | 2003-09-24 | 5 | 0d |  | 项目经理; 风险承担者 | 16h |
| 7 | 1.1.5 | 确保执行的资金 |  | 2d | 2003-09-25 | 2003-09-26 | 6 | 0d |  | 项目经理; 风险承担者 | 32h |
| 8 | 1.1.6 | 完成构想 | milestone | 0d | 2003-09-26 | 2003-09-26 | 7 | 0d |  |  |  |
| 9 | 1.2 | **规划** |  | 37.5d | 2003-09-29 | 2003-11-19 | 2 | 0d |  |  | 888h |
| 10 | 1.2.1 | **召集项目组和定义角色** |  | 1.5d | 2003-09-29 | 2003-09-30 |  | 0d |  |  | 40h |
| 11 | 1.2.1.1 | 指派/定义项目经理 |  | 1d | 2003-09-29 | 2003-09-29 |  | 0d |  | 风险承担者 | 8h |
| 12 | 1.2.1.2 | 指派/定义数据库管理员 |  | 4h | 2003-09-30 | 2003-09-30 | 11 | 0d |  | 项目经理 | 4h |
| 13 | 1.2.1.3 | 指派/定义部署管理员 |  | 4h | 2003-09-30 | 2003-09-30 | 11 | 0d |  | 项目经理 | 4h |
| 14 | 1.2.1.4 | 指派/定义台式计算机管理员 |  | 4h | 2003-09-30 | 2003-09-30 | 11 | 0d |  | 项目经理 | 4h |
| 15 | 1.2.1.5 | 指派/定义 Intranet/Internet 管理员 |  | 4h | 2003-09-30 | 2003-09-30 | 11 | 0d |  | 项目经理 | 4h |
| 16 | 1.2.1.6 | 指派/定义浏览器管理员 |  | 4h | 2003-09-30 | 2003-09-30 | 11 | 0d |  | 项目经理 | 4h |
| 17 | 1.2.1.7 | 指派/定义网络管理员 |  | 4h | 2003-09-30 | 2003-09-30 | 11 | 0d |  | 项目经理 | 4h |
| 18 | 1.2.1.8 | 指派/定义测试/QA 负责人 |  | 4h | 2003-09-30 | 2003-09-30 | 11 | 0d |  | 项目经理 | 4h |
| 19 | 1.2.1.9 | 指派/定义用户教育/培训负责人 |  | 4h | 2003-09-30 | 2003-09-30 | 11 | 0d |  | 项目经理 | 4h |
| 20 | 1.2.1.10 | 召集项目组和定义角色完成 | milestone | 0d | 2003-09-30 | 2003-09-30 | 19, 18, 12, 13, 14, 17, 16, 15 | 0d |  |  |  |
| 21 | 1.2.2 | **确定共存策略** |  | 2d | 2003-09-30 | 2003-10-02 | 10 | 29d | 0d |  | 24h |
| 22 | 1.2.2.1 | 确定公司内部的互操作性问题(例如，Office 版本、套件) |  | 1d | 2003-09-30 | 2003-10-01 |  | 29d | 0d | 台式计算机管理员 | 8h |
| 23 | 1.2.2.2 | 确定与合作伙伴的互操作性问题(例如，Office 版本、套件) |  | 1d | 2003-09-30 | 2003-10-01 |  | 29d | 0d | 台式计算机管理员 | 8h |
| 24 | 1.2.2.3 | 确定与第三方、集成的 Office 程序包的互操作性问题 |  | 1d | 2003-10-01 | 2003-10-02 | 23, 22 | 29d | 0d | 台式计算机管理员 | 8h |
| 25 | 1.2.2.4 | 共存策略工作确定完毕 | milestone | 0d | 2003-10-02 | 2003-10-02 | 24 | 29d |  |  |  |

Notes:
- 1: 此 Microsoft Project 模板是为了方便企业环境中 Microsoft Office 2003 的部署而设计的。该模板的设计是为了将执行组织集中在关键步骤上，这些步骤确保了成功的、经过周密计划的执行。 / 请参阅帮助获取有关此模板的各部分的更多信息。

| ID | WBS | Task | Type | Duration | Start | Finish | Predecessors | Total slack | Free slack | Resources | Work |
| --- | --- | --- | --- | --- | --- | --- | --- | --- | --- | --- | --- |
| 26 | 1.2.3 | **确定迁移策略** |  | 5d | 2003-10-02 | 2003-10-09 | 21 | 29d |  |  | 64h |
| 27 | 1.2.3.1 | 确定转换的文档(例如，Office 97 以前版本创建的字处理、电子表格、演示文稿) |  | 1d | 2003-10-02 | 2003-10-03 |  | 29d | 0d | 台式计算机管理员 | 8h |
| 28 | 1.2.3.2 | 制定文档迁移策略 |  | 1d | 2003-10-03 | 2003-10-06 | 27 | 29d | 0d | 台式计算机管理员 | 8h |
| 29 | 1.2.3.3 | 确定文档用于前摄的文档迁移(大量转换) |  | 1d | 2003-10-06 | 2003-10-07 | 28 | 31d | 2d | 台式计算机管理员 | 8h |
| 30 | 1.2.3.4 | 确定文档用于 "as-used" 文档迁移 |  | 1d | 2003-10-06 | 2003-10-07 | 28 | 31d | 2d | 台式计算机管理员 | 8h |
| 31 | 1.2.3.5 | 确定未迁移的文档 |  | 1d | 2003-10-06 | 2003-10-07 | 28 | 31d | 2d | 台式计算机管理员 | 8h |
| 32 | 1.2.3.6 | 确定用于迁移的宏和模板 |  | 1d | 2003-10-06 | 2003-10-07 | 28 | 29d | 0d | 台式计算机管理员 | 8h |
| 33 | 1.2.3.7 | 确定迁移的数据库 |  | 1d | 2003-10-07 | 2003-10-08 | 32 | 29d | 0d | 数据库管理员 | 8h |
| 34 | 1.2.3.8 | 确定用于迁移的自定义应用程序 |  | 1d | 2003-10-08 | 2003-10-09 | 33 | 29d | 0d | 台式计算机管理员 | 8h |
| 35 | 1.2.3.9 | 确定迁移策略完毕 | milestone | 0d | 2003-10-09 | 2003-10-09 | 29, 30, 34, 28, 31 | 29d |  |  |  |
| 36 | 1.2.4 | **确定台式计算机操作系统** |  | 1d | 2003-09-30 | 2003-10-01 | 10 | 0d |  |  | 32h |
| 37 | 1.2.4.1 | 确定 Windows NT Server 4.0 终端服务器版(终端服务器)/Windows 2000 或 Windows Server 2003 的终端服务功能(终端服务) |  | 1d | 2003-09-30 | 2003-10-01 |  | 0d |  | 台式计算机管理员 | 8h |
| 38 | 1.2.4.2 | 确定 16 位 Windows |  | 1d | 2003-09-30 | 2003-10-01 |  | 0d |  | 台式计算机管理员 | 8h |
| 39 | 1.2.4.3 | 确定 Windows 95/98 |  | 1d | 2003-09-30 | 2003-10-01 |  | 0d |  | 台式计算机管理员 | 8h |
| 40 | 1.2.4.4 | 确定 Windows NT、Windows 2000、Windows XP |  | 1d | 2003-09-30 | 2003-10-01 |  | 0d |  | 台式计算机管理员 | 8h |
| 41 | 1.2.4.5 | 确定台式计算机操作系统完毕 | milestone | 0d | 2003-10-01 | 2003-10-01 | 38, 39, 40, 37 | 0d |  |  |  |
| 42 | 1.2.5 | **确定配置/自定义** |  | 12d | 2003-10-01 | 2003-10-17 | 36 | 0d |  |  | 192h |
| 43 | 1.2.5.1 | 确定终端服务器/终端服务 |  | 3d | 2003-10-01 | 2003-10-06 |  | 2d |  | 网络管理员 | 24h |
| 44 | 1.2.5.2 | 确定文件服务器配置 |  | 3d | 2003-10-01 | 2003-10-06 |  | 2d |  | 网络管理员 | 24h |
| 45 | 1.2.5.3 | 确定台式计算机标准配置 |  | 3d | 2003-10-01 | 2003-10-06 |  | 2d |  | 台式计算机管理员 | 24h |
| 46 | 1.2.5.4 | 确定便携式计算机标准配置 |  | 3d | 2003-10-01 | 2003-10-06 |  | 2d |  | 台式计算机管理员 | 24h |
| 47 | 1.2.5.5 | 确定多语言支持 |  | 3d | 2003-10-01 | 2003-10-06 |  | 0d |  | 网络管理员 | 24h |
| 48 | 1.2.5.6 | 确定应用程序和功能设置 |  | 2d | 2003-10-06 | 2003-10-08 | 47 | 0d |  | 台式计算机管理员 | 16h |
| 49 | 1.2.5.7 | 确定功能安装说明(例如，安装首先使用的功能、本地运行、从 CD 中运行) |  | 3d | 2003-10-08 | 2003-10-13 | 43, 44, 45, 46, 48 | 0d |  | 台式计算机管理员 | 24h |
| 50 | 1.2.5.8 | 确定多个安装位置 |  | 1d | 2003-10-13 | 2003-10-14 | 49 | 0d |  | 网络管理员 | 8h |
| 51 | 1.2.5.9 | 确定用户配置文件/桌面防范策略 |  | 1d | 2003-10-14 | 2003-10-15 | 50 | 0d |  | 台式计算机管理员 | 8h |
| 52 | 1.2.5.10 | 确定自定义用户设置 |  | 1d | 2003-10-15 | 2003-10-16 | 51 | 0d |  | 台式计算机管理员 | 8h |
| 53 | 1.2.5.11 | 确定用于分发的其他文件(例如，模板、自定义“帮助”文件) |  | 1d | 2003-10-16 | 2003-10-17 | 52 | 0d |  | 台式计算机管理员 | 8h |
| 54 | 1.2.5.12 | 完成确定配置/自定义 | milestone | 0d | 2003-10-17 | 2003-10-17 | 43, 44, 45, 46, 53 | 0d |  |  |  |

Notes:
- 36: 在此阶段中，您将确定台式计算机操作系统，这些操作系统会影响部署策略。此时将需要升级 16 位的 Windows 操作系统。Windows 95/98 和 Windows Me 与 Windows NT、Windows 2000 和 Windows XP 不同，因为 Windows NT、Windows 2000 和 Windows XP 要求使用工作站管理员权限。
- 42: 如果在大型组织中部署 Office，则首先在网络服务器上安装 Office 可能效率最高。此时，可以让用户从管理安装位置运行安装程序。 / 创建了管理安装的位置后，许多选项都可用于管理 Office 的部署。通过使用Office 自定义安装向导，您可以修改管理安装位置来控制组织中所有用户在其计算机上安装 Office 的方式。 / 使用Office 自定义安装向导，您可以: / - 定义在用户的计算机上安装 Office 的路径。 / - 定义 Office 应用程序所有功能的安装说明。 / - 将自己的文件和注册表项添加到 Office 安装程序中，以便它们可以与 Office 一起安装。 / - 自定义 Office 应用程序快捷方式。 / - 为 Office 定义网络服务器列表，如果主服务器不可用，可以使用列表中的其他服务器。 / - 指定 Office 安装完成后，在用户的计算机上要安装的其他产品或要运行的其他程序。 / - 自定义配置 Internet Explorer 和 Outlook 2003 的方式。 / 使用向导微调选项后，您的修改将成为从您的管理安装位置运行 Office 安装程序的任何用户的标准设置。甚至可以让用户以静默模式运行安装程序(无需用户交互)，您的修改会明确定义安装 Office 的方式。
- 47: Office 2003 的核心功能允许全世界各地的用户使用他们自己的语言运行 Office 用户界面和联机帮助，以及用多种语言创建文档。

| ID | WBS | Task | Type | Duration | Start | Finish | Predecessors | Total slack | Free slack | Resources | Work |
| --- | --- | --- | --- | --- | --- | --- | --- | --- | --- | --- | --- |
| 55 | 1.2.6 | **确定协作平台考虑事项** |  | 5d | 2003-09-30 | 2003-10-07 | 10 | 31d |  |  | 80h |
| 56 | 1.2.6.1 | 检查并规划 Windows SharePoint Services 部署(请参阅“Microsoft Windows SharePoint Services 部署”模板获取帮助) |  | 5d | 2003-09-30 | 2003-10-07 |  | 31d | 0d | 项目经理 | 40h |
| 57 | 1.2.6.2 | 检查并规划 SharePoint Portal Server 部署(请参阅“Microsoft SharePoint Portal Server 2003 部署”模板获取帮助) |  | 5d | 2003-09-30 | 2003-10-07 |  | 31d | 0d | 项目经理 | 40h |
| 58 | 1.2.6.3 | 完成确定协作平台考虑事项 | milestone | 0d | 2003-10-07 | 2003-10-07 | 56, 57 | 31d |  |  |  |
| 59 | 1.2.7 | **确定消息系统平台方面应该考虑的因素** |  | 3d | 2003-09-30 | 2003-10-03 | 10 | 33d |  |  | 24h |
| 60 | 1.2.7.1 | 确定消息客户端迁移(例如，Microsoft Exchange Server、Microsoft Mail、Lotus cc:Mail、Notes) |  | 1d | 2003-09-30 | 2003-10-01 |  | 33d | 0d | 网络管理员 | 8h |
| 61 | 1.2.7.2 | 确定 Microsoft Office Outlook 2003 配置选项 |  | 1d | 2003-10-01 | 2003-10-02 | 60 | 33d | 0d | 台式计算机管理员 | 8h |
| 62 | 1.2.7.3 | 迁移 Microsoft Exchange Server |  | 1d | 2003-10-02 | 2003-10-03 | 61 | 33d | 0d | 网络管理员 | 8h |
| 63 | 1.2.7.4 | 确定消息系统平台方面应考虑的因素完毕 | milestone | 0d | 2003-10-03 | 2003-10-03 | 62 | 33d |  |  |  |
| 64 | 1.2.8 | **确定部署的技术要求** |  | 1.5d | 2003-10-17 | 2003-10-20 | 42 | 0d |  |  | 76h |
| 65 | 1.2.8.1 | **确定终端服务器需求** |  | 1d | 2003-10-17 | 2003-10-20 |  | 0.5d |  |  | 8h |
| 66 | 1.2.8.1.1 | 确定软件要求 |  | 4h | 2003-10-17 | 2003-10-17 | 54 | 0.5d | 0d | 网络管理员 | 4h |
| 67 | 1.2.8.1.2 | 确定硬件要求 |  | 4h | 2003-10-20 | 2003-10-20 | 66 | 0.5d |  | 网络管理员 | 4h |
| 68 | 1.2.8.2 | **确定文件服务器需求** |  | 1d | 2003-10-17 | 2003-10-20 |  | 0.5d |  |  | 8h |
| 69 | 1.2.8.2.1 | 确定软件要求 |  | 4h | 2003-10-17 | 2003-10-17 | 54 | 0.5d | 0d | 网络管理员 | 4h |
| 70 | 1.2.8.2.2 | 确定硬件要求 |  | 4h | 2003-10-20 | 2003-10-20 | 69 | 0.5d |  | 网络管理员 | 4h |
| 71 | 1.2.8.3 | **确定台式计算机技术需求** |  | 1d | 2003-10-17 | 2003-10-20 |  | 0d |  |  | 12h |
| 72 | 1.2.8.3.1 | **确定台式计算机软件要求** |  | 0.5d | 2003-10-17 | 2003-10-17 |  | 0d |  |  | 8h |
| 73 | 1.2.8.3.1.1 | 确定 Windows 95/98 软件要求 |  | 4h | 2003-10-17 | 2003-10-17 | 54 | 0d |  | 台式计算机管理员 | 4h |
| 74 | 1.2.8.3.1.2 | 确定 Windows NT、Windows 2000 和 Windows XP 软件需求 |  | 4h | 2003-10-17 | 2003-10-17 | 54 | 0d |  | 台式计算机管理员 | 4h |
| 75 | 1.2.8.3.2 | 确定硬件要求 |  | 4h | 2003-10-20 | 2003-10-20 | 74, 73 | 0.5d |  | 台式计算机管理员 | 4h |
| 76 | 1.2.8.4 | **确定便携式计算机需求** |  | 1d | 2003-10-17 | 2003-10-20 |  | 0d |  |  | 8h |
| 77 | 1.2.8.4.1 | **确定便携式计算机软件需求** |  | 0.5d | 2003-10-17 | 2003-10-17 |  | 0d |  |  | 8h |
| 78 | 1.2.8.4.1.1 | 确定 Windows 95/98 软件要求 |  | 4h | 2003-10-17 | 2003-10-17 | 54 | 0d |  | 台式计算机管理员 | 4h |
| 79 | 1.2.8.4.1.2 | 确定 Windows NT、Windows 2000 和 Windows XP 软件需求 |  | 4h | 2003-10-17 | 2003-10-17 | 54 | 0d |  | 台式计算机管理员 | 4h |
| 80 | 1.2.8.4.2 | 确定硬件要求 |  | 4h | 2003-10-20 | 2003-10-20 | 79, 78 | 0.5d |  |  |  |

| ID | WBS | Task | Type | Duration | Start | Finish | Predecessors | Total slack | Free slack | Resources | Work |
| --- | --- | --- | --- | --- | --- | --- | --- | --- | --- | --- | --- |
| 81 | 1.2.8.5 | **安装多语言支持** |  | 1.5d | 2003-10-17 | 2003-10-20 |  | 0d |  |  | 40h |
| 82 | 1.2.8.5.1 | **确定终端服务器/终端服务需求** |  | 1d | 2003-10-17 | 2003-10-20 |  | 0.5d |  |  | 8h |
| 83 | 1.2.8.5.1.1 | 确定软件要求 |  | 4h | 2003-10-17 | 2003-10-17 |  | 0.5d | 0d | 网络管理员 | 4h |
| 84 | 1.2.8.5.1.2 | 确定硬件要求 |  | 4h | 2003-10-20 | 2003-10-20 | 83 | 0.5d |  | 网络管理员 | 4h |
| 85 | 1.2.8.5.2 | **确定文件服务器需求** |  | 1d | 2003-10-17 | 2003-10-20 |  | 0.5d |  |  | 8h |
| 86 | 1.2.8.5.2.1 | 确定软件要求 |  | 4h | 2003-10-17 | 2003-10-17 |  | 0.5d | 0d | 网络管理员 | 4h |
| 87 | 1.2.8.5.2.2 | 确定硬件要求 |  | 4h | 2003-10-20 | 2003-10-20 | 86 | 0.5d |  | 网络管理员 | 4h |
| 88 | 1.2.8.5.3 | **确定台式计算机技术需求** |  | 1d | 2003-10-20 | 2003-10-20 |  | 0d |  |  | 12h |
| 89 | 1.2.8.5.3.1 | **确定台式计算机软件要求** |  | 0.5d | 2003-10-20 | 2003-10-20 |  | 0d |  |  | 8h |
| 90 | 1.2.8.5.3.1.1 | 确定 Windows 95/98 软件要求 |  | 4h | 2003-10-20 | 2003-10-20 | 73 | 0d |  | 台式计算机管理员 | 4h |
| 91 | 1.2.8.5.3.1.2 | 确定 Windows NT、Windows 2000 和 Windows XP 软件需求 |  | 4h | 2003-10-20 | 2003-10-20 | 74 | 0d |  | 台式计算机管理员 | 4h |
| 92 | 1.2.8.5.3.2 | 确定硬件要求 |  | 4h | 2003-10-20 | 2003-10-20 | 90, 91 | 0d |  | 台式计算机管理员 | 4h |
| 93 | 1.2.8.5.4 | **确定便携式计算机需求** |  | 1d | 2003-10-20 | 2003-10-20 |  | 0d |  |  | 12h |
| 94 | 1.2.8.5.4.1 | **确定便携式计算机软件需求** |  | 0.5d | 2003-10-20 | 2003-10-20 |  | 0d |  |  | 8h |
| 95 | 1.2.8.5.4.1.1 | 确定 Windows 95/98 软件要求 |  | 4h | 2003-10-20 | 2003-10-20 | 78 | 0d |  | 台式计算机管理员 | 4h |
| 96 | 1.2.8.5.4.1.2 | 确定 Windows NT、Windows 2000 和 Windows XP 软件需求 |  | 4h | 2003-10-20 | 2003-10-20 | 79 | 0d |  | 台式计算机管理员 | 4h |
| 97 | 1.2.8.5.4.2 | 确定硬件要求 |  | 4h | 2003-10-20 | 2003-10-20 | 95, 96 | 0d |  | 台式计算机管理员 | 4h |
| 98 | 1.2.8.6 | 确定部署的技术要求完毕 | milestone | 0d | 2003-10-20 | 2003-10-20 | 65, 68, 71, 76, 81 | 0d |  |  |  |
| 99 | 1.2.9 | **规划安全性** |  | 5d | 2003-10-21 | 2003-10-27 | 64 | 16.5d |  |  | 48h |
| 100 | 1.2.9.1 | 确定安全策略 |  | 1d | 2003-10-21 | 2003-10-21 |  | 20.5d | 4d | Intranet/Internet 管理员 | 8h |
| 101 | 1.2.9.2 | 检查数字版权管理 |  | 5d | 2003-10-21 | 2003-10-27 |  | 16.5d | 0d | Intranet/Internet 管理员 | 40h |
| 102 | 1.2.9.3 | 完成规划安全性 | milestone | 0d | 2003-10-27 | 2003-10-27 | 100, 101 | 16.5d |  |  |  |
| 103 | 1.2.10 | **定义分销策略** |  | 1d | 2003-10-21 | 2003-10-21 | 64 | 0d |  |  | 48h |
| 104 | 1.2.10.1 | 确定 Internet 下载 |  | 1d | 2003-10-21 | 2003-10-21 |  | 0d |  | Intranet/Internet 管理员 | 8h |
| 105 | 1.2.10.2 | 确定 Intranet 下载 |  | 1d | 2003-10-21 | 2003-10-21 |  | 0d |  | Intranet/Internet 管理员 | 8h |
| 106 | 1.2.10.3 | 确定压缩磁盘部署 |  | 1d | 2003-10-21 | 2003-10-21 |  | 0d |  | 部署管理员 | 8h |
| 107 | 1.2.10.4 | 定义部署工具(例如，Microsoft Systems Management Server) |  | 1d | 2003-10-21 | 2003-10-21 |  | 0d |  | 部署管理员 | 8h |
| 108 | 1.2.10.5 | 定义设备更换(用于 Office 2003 的新图像) |  | 1d | 2003-10-21 | 2003-10-21 |  | 0d |  | 部署管理员 | 8h |
| 109 | 1.2.10.6 | 查看 Microsoft 软件更新服务(SUS) |  | 1d | 2003-10-21 | 2003-10-21 |  | 0d |  | 部署管理员 | 8h |
| 110 | 1.2.10.7 | 定义分销策略完成 | milestone | 0d | 2003-10-21 | 2003-10-21 | 104, 105, 106, 107, 109, 108 | 0d |  |  |  |

Notes:
- 100: 默认情况下，Microsoft Office 2003 已启用多个安全选项。您可以在 Word 2003、Excel 2003 和 PowerPoint 2003 中预先确定安全级别以防止宏病毒。有关详细信息，请参阅 Microsoft Office 2003 Resource Kit。

| ID | WBS | Task | Type | Duration | Start | Finish | Predecessors | Total slack | Free slack | Resources | Work |
| --- | --- | --- | --- | --- | --- | --- | --- | --- | --- | --- | --- |
| 111 | 1.2.11 | **指定自定义程序包配置** |  | 10.5d | 2003-10-22 | 2003-11-05 | 103 | 0d |  |  | 124h |
| 112 | 1.2.11.1 | 确定语言版本 |  | 1d | 2003-10-22 | 2003-10-22 |  | 0d |  | 项目经理 | 8h |
| 113 | 1.2.11.2 | 确定自定义的“帮助”说明 |  | 2d | 2003-10-23 | 2003-10-24 | 112 | 0d |  | 用户教育/培训负责人 | 16h |
| 114 | 1.2.11.3 | 查看 Office 2003 安装程序(使用“自定义安装向导”和“Office 配置文件向导”) |  | 1d | 2003-10-27 | 2003-10-27 | 113 | 0d |  | 台式计算机管理员 | 8h |
| 115 | 1.2.11.4 | 确定组件安装选项(Microsoft Office Excel 2003、Microsoft Office Word 2003、Microsoft Office Access 2003、Microsoft Office FrontPage 2003) |  | 1d | 2003-10-28 | 2003-10-28 | 114 | 0d |  | 台式计算机管理员 | 8h |
| 116 | 1.2.11.5 | 确定自定义命令行参数 |  | 1d | 2003-10-29 | 2003-10-29 | 115 | 0d |  | 台式计算机管理员 | 8h |
| 117 | 1.2.11.6 | 确定浏览商标标识 |  | 4h | 2003-10-30 | 2003-10-30 | 116 | 0d |  | 浏览器管理员 | 4h |
| 118 | 1.2.11.7 | **确定浏览器设置** |  | 2d | 2003-10-30 | 2003-11-03 | 117 | 2d |  |  | 40h |
| 119 | 1.2.11.7.1 | 确定可预先配置的设置 |  | 1d | 2003-10-30 | 2003-10-31 |  | 3d |  | 浏览器管理员 | 8h |
| 120 | 1.2.11.7.2 | 确定可自动配置的浏览器选项 |  | 1d | 2003-10-30 | 2003-10-31 |  | 3d |  | 浏览器管理员 | 8h |
| 121 | 1.2.11.7.3 | 确定浏览器安全设置 |  | 1d | 2003-10-30 | 2003-10-31 |  | 3d |  | 浏览器管理员 | 8h |
| 122 | 1.2.11.7.4 | 确定 Internet 邮件和新闻选项 |  | 1d | 2003-10-30 | 2003-10-31 |  | 2d | 0d | 浏览器管理员 | 8h |
| 123 | 1.2.11.7.5 | 确定 Active Desktop 的设置 |  | 1d | 2003-10-31 | 2003-11-03 | 122 | 2d |  | 台式计算机管理员 | 8h |
| 124 | 1.2.11.8 | **详细描述系统/用户策略** |  | 4d | 2003-10-30 | 2003-11-05 | 117 | 0d |  |  | 32h |
| 125 | 1.2.11.8.1 | 定义系统/用户策略 |  | 1d | 2003-10-30 | 2003-10-31 |  | 0d |  | 台式计算机管理员 | 8h |
| 126 | 1.2.11.8.2 | 定义支持系统策略所需的基础结构 |  | 1d | 2003-10-31 | 2003-11-03 | 125 | 0d |  | 台式计算机管理员 | 8h |
| 127 | 1.2.11.8.3 | 定义系统策略和过程的管理 |  | 1d | 2003-11-03 | 2003-11-04 | 126 | 0d |  | 台式计算机管理员 | 8h |
| 128 | 1.2.11.8.4 | 建立策略/用户 |  | 1d | 2003-11-04 | 2003-11-05 | 127 | 0d |  | 台式计算机管理员 | 8h |
| 129 | 1.2.11.9 | 指定自定义程序包配置完成 | milestone | 0d | 2003-10-31 | 2003-10-31 | 125 | 3d |  |  |  |
| 130 | 1.2.12 | **制定培训策略** |  | 10d | 2003-11-05 | 2003-11-19 | 111 | 0d |  |  | 96h |
| 131 | 1.2.12.1 | 查看 Office 联机培训 |  | 1d | 2003-11-05 | 2003-11-06 |  | 9d |  | 用户教育/培训负责人 | 8h |
| 132 | 1.2.12.2 | 查看“协助中心” |  | 1d | 2003-11-05 | 2003-11-06 |  | 9d |  | 用户教育/培训负责人 | 8h |
| 133 | 1.2.12.3 | 编写培训材料 |  | 10d | 2003-11-05 | 2003-11-19 |  | 0d |  | 用户教育/培训负责人 | 80h |
| 134 | 1.2.12.4 | 完成制定培训策略 | milestone | 0d | 2003-11-19 | 2003-11-19 | 131, 132, 133 | 0d |  |  |  |

Notes:
- 115: 在 Office 2003 中，可以按功能选择安装选项。这意味着不仅可以在本地安装 Word 2003 同时将 PowerPoint 2003 留在服务器上，而且还可以只在本地专门加载 Word 2003 可执行文件但将 Word 2003 的帮助文件留在服务器上。
- 124: 可以对 Microsoft Office 2003 进行高度的自定义。通过设置选项或添加自定义模板或工具，Office 用户可以更改 Office 的运行方式。例如，销售部门可以创建发票的自定义模板或创建行业专用术语的自定义词典。 / 为保存文档，用户可以将屏幕分辨率中的每项都更改为文件格式。这些用户设置可以存储在一个 Office 用户配置文件中。Office 用户配置文件可以包含用户对 Office 2003 环境进行的大多数的自定义。 / Office 配置文件向导是用于存储和检索 Office 2003 自定义设置的工具。在部署 Office 2003 以便所有用户以相同的设置开始时，您可以使用Office 配置文件向导创建和部署标准用户配置文件。 / Office 配置文件向导执行两个功能: / 保存 Office 用户配置文件和恢复 Office 用户配置文件。保存 Office 用户配置文件时，您可以创建 Office 配置文件设置(OPS)文件。用要包含的所有用户设置创建 OPS 文件后，可以将该文件包含在 Windows 安装程序转换文件(MST)中。在部署 Office 2003 时将分发这些设置。 / 您也可以使用Office 配置文件向导来帮助将用户定义的设置从一台计算机备份和还原到另一台计算机中。. / 您可以自定义Office 配置文件向导来捕获某一个用户设置，而不是计算机中所有的 Office 2003 设置，或者作为Office 自定义安装向导来运行。您也可以从命令行来运行Office 配置文件向导。

| ID | WBS | Task | Type | Duration | Start | Finish | Predecessors | Total slack | Free slack | Resources | Work |
| --- | --- | --- | --- | --- | --- | --- | --- | --- | --- | --- | --- |
| 135 | 1.2.13 | **确定测试方案** |  | 5d | 2003-11-05 | 2003-11-12 | 111 | 5d |  |  | 40h |
| 136 | 1.2.13.1 | 确定台式计算机测试方案 |  | 1d | 2003-11-05 | 2003-11-06 |  | 5d | 0d | 测试/QA 负责人 | 8h |
| 137 | 1.2.13.2 | 确定服务器测试方案 |  | 1d | 2003-11-06 | 2003-11-07 | 136 | 5d | 0d | 测试/QA 负责人 | 8h |
| 138 | 1.2.13.3 | 确定第三方应用程序测试方案 |  | 1d | 2003-11-07 | 2003-11-10 | 137 | 5d | 0d | 测试/QA 负责人 | 8h |
| 139 | 1.2.13.4 | 确定自定义应用程序测试方案 |  | 1d | 2003-11-10 | 2003-11-11 | 138 | 5d | 0d | 测试/QA 负责人 | 8h |
| 140 | 1.2.13.5 | 确定共存测试方案 |  | 1d | 2003-11-11 | 2003-11-12 | 139 | 5d | 0d | 测试/QA 负责人 | 8h |
| 141 | 1.2.13.6 | 确定测试方案完成 | milestone | 0d | 2003-11-12 | 2003-11-12 | 140 | 5d |  |  |  |
| 142 | 1.2.14 | 规划工作完成 | milestone | 0d | 2003-11-19 | 2003-11-19 | 130, 135 | 0d |  |  |  |
| 143 | 1.3 | **部署** |  | 85d | 2003-11-19 | 2004-03-17 | 9 | 0d |  |  | 832h |
| 144 | 1.3.1 | **创建自定义配置** |  | 11d | 2003-11-19 | 2003-12-04 |  | 0d |  |  | 88h |
| 145 | 1.3.1.1 | 安装并运行 Office 2003 Resource Kit |  | 1d | 2003-11-19 | 2003-11-20 |  | 0d |  | 台式计算机管理员 | 8h |
| 146 | 1.3.1.2 | 创建 Office 2003 管理安装 |  | 1d | 2003-11-20 | 2003-11-21 | 145 | 0d |  | 台式计算机管理员 | 8h |
| 147 | 1.3.1.3 | 创建多语言用户界面包的管理安装 |  | 1d | 2003-11-21 | 2003-11-24 | 146 | 0d |  | 台式计算机管理员 | 8h |
| 148 | 1.3.1.4 | 创建自定义用户设置 |  | 1d | 2003-11-24 | 2003-11-25 | 147 | 0d |  | 台式计算机管理员 | 8h |
| 149 | 1.3.1.5 | 使用“Office 配置文件向导”捕获自定义的用户设置 |  | 1d | 2003-11-25 | 2003-11-26 | 148 | 0d |  | 台式计算机管理员 | 8h |
| 150 | 1.3.1.6 | 使用“自定义安装向导”创建转换文件(*.mst) |  | 1d | 2003-11-26 | 2003-11-27 | 149 | 0d |  | 台式计算机管理员 | 8h |
| 151 | 1.3.1.7 | 创建自定义“帮助”文件(基于组织的“帮助”- 技术支持、过渡支持、公司常见问题) |  | 1d | 2003-11-27 | 2003-11-28 | 150 | 0d |  | 台式计算机管理员 | 8h |
| 152 | 1.3.1.8 | 编译包含分布式文件的自定义程序包 |  | 1d | 2003-11-28 | 2003-12-01 | 151 | 0d |  | 台式计算机管理员 | 8h |
| 153 | 1.3.1.9 | 配置浏览器自动配置文件 |  | 1d | 2003-12-01 | 2003-12-02 | 152 | 0d |  | 浏览器管理员 | 8h |
| 154 | 1.3.1.10 | 配置下载站点并安装分布式文件 |  | 1d | 2003-12-02 | 2003-12-03 | 153 | 0d |  | 网络管理员 | 8h |
| 155 | 1.3.1.11 | 将分发文件复制到光盘和软盘上 |  | 1d | 2003-12-03 | 2003-12-04 | 154 | 0d |  | 部署管理员 | 8h |
| 156 | 1.3.1.12 | 创建自定义配置完毕 | milestone | 0d | 2003-12-04 | 2003-12-04 | 155 | 0d |  |  |  |
| 157 | 1.3.2 | **部署协作工具** |  | 10d | 2003-11-19 | 2003-12-03 |  | 1d |  |  | 80h |
| 158 | 1.3.2.1 | 完成 Windows SharePoint Services 部署(请参阅“Microsoft Windows SharePoint Services 部署”模板获取帮助) |  | 5d | 2003-11-19 | 2003-11-26 |  | 1d | 0d | 项目经理 | 40h |
| 159 | 1.3.2.2 | 完成 SharePoint Portal Server 部署(请参阅“Microsoft SharePoint Portal Server 2003 部署”模板获取帮助) |  | 5d | 2003-11-26 | 2003-12-03 | 158 | 1d | 0d | 项目经理 | 40h |
| 160 | 1.3.2.3 | 完成部署协作工具 | milestone | 0d | 2003-12-03 | 2003-12-03 | 159 | 1d |  |  |  |

| ID | WBS | Task | Type | Duration | Start | Finish | Predecessors | Total slack | Resources | Work |
| --- | --- | --- | --- | --- | --- | --- | --- | --- | --- | --- |
| 161 | 1.3.3 | **制定测试方案** |  | 6d | 2003-12-04 | 2003-12-12 | 144, 157 | 0d |  | 48h |
| 162 | 1.3.3.1 | 制定台式计算机测试方案 |  | 1d | 2003-12-04 | 2003-12-05 |  | 0d | 测试/QA 负责人 | 8h |
| 163 | 1.3.3.2 | 制定服务器测试方案 |  | 1d | 2003-12-05 | 2003-12-08 | 162 | 0d | 测试/QA 负责人 | 8h |
| 164 | 1.3.3.3 | 确定第三方应用程序测试方案 |  | 1d | 2003-12-08 | 2003-12-09 | 163 | 0d | 测试/QA 负责人 | 8h |
| 165 | 1.3.3.4 | 制定自定义应用程序测试方案 |  | 1d | 2003-12-09 | 2003-12-10 | 164 | 0d | 测试/QA 负责人 | 8h |
| 166 | 1.3.3.5 | 制定宏和模板测试方案 |  | 1d | 2003-12-10 | 2003-12-11 | 165 | 0d | 测试/QA 负责人 | 8h |
| 167 | 1.3.3.6 | 制定文件共存测试方案 |  | 1d | 2003-12-11 | 2003-12-12 | 166 | 0d | 测试/QA 负责人 | 8h |
| 168 | 1.3.3.7 | 制定测试方案完成 | milestone | 0d | 2003-12-12 | 2003-12-12 | 167 | 0d |  |  |
| 169 | 1.3.4 | **部署概念验证** |  | 12d | 2003-12-12 | 2003-12-30 | 161 | 0d |  | 144h |
| 170 | 1.3.4.1 | **准备概念验证** |  | 2d | 2003-12-12 | 2003-12-16 |  | 0d |  | 16h |
| 171 | 1.3.4.1.1 | 准备测试计划和清单 |  | 1d | 2003-12-12 | 2003-12-15 |  | 0d | 测试/QA 负责人 | 8h |
| 172 | 1.3.4.1.2 | 准备测试环境 |  | 1d | 2003-12-15 | 2003-12-16 | 171 | 0d | 测试/QA 负责人 | 8h |
| 173 | 1.3.4.2 | **将自定义程序包部署到实验室机器中** |  | 2d | 2003-12-16 | 2003-12-18 |  | 0d |  | 24h |
| 174 | 1.3.4.2.1 | 运行 Office 安装程序在每个客户端上安装自定义程序包 |  | 1d | 2003-12-16 | 2003-12-17 | 172 | 0d | 部署管理员 | 8h |
| 175 | 1.3.4.2.2 | 安装并测试所有选项 |  | 1d | 2003-12-17 | 2003-12-18 | 174 | 0d | 部署管理员; 测试/QA 负责人 | 16h |
| 176 | 1.3.4.3 | **操作实验室客户端软件** |  | 5d | 2003-12-18 | 2003-12-25 |  | 0d |  | 80h |
| 177 | 1.3.4.3.1 | 运行 Active Desktop 以便进行测试 |  | 1d | 2003-12-18 | 2003-12-19 | 175 | 0d | 测试/QA 负责人 | 8h |
| 178 | 1.3.4.3.2 | 运行 Office 2003 进行测试 |  | 1d | 2003-12-19 | 2003-12-22 | 177 | 0d | 测试/QA 负责人 | 8h |
| 179 | 1.3.4.3.3 | 测试首次使用时安装 |  | 1d | 2003-12-22 | 2003-12-23 | 178 | 0d | 测试/QA 负责人 | 8h |
| 180 | 1.3.4.3.4 | 测试自修复应用程序 |  | 1d | 2003-12-23 | 2003-12-24 | 179 | 0d | 测试/QA 负责人 | 8h |
| 181 | 1.3.4.3.5 | **运行商务应用程序以便进行测试** |  | 1d | 2003-12-24 | 2003-12-25 |  | 0d |  | 48h |
| 182 | 1.3.4.3.5.1 | 测试协作功能 |  | 1d | 2003-12-24 | 2003-12-25 | 180 | 0d | 测试/QA 负责人 | 8h |
| 183 | 1.3.4.3.5.2 | 测试综合的管理知识 |  | 1d | 2003-12-24 | 2003-12-25 | 180 | 0d | 测试/QA 负责人 | 8h |
| 184 | 1.3.4.3.5.3 | 测试数据分析/集成(例如，Microsoft SQL Server) |  | 1d | 2003-12-24 | 2003-12-25 | 180 | 0d | 测试/QA 负责人 | 8h |
| 185 | 1.3.4.3.5.4 | 测试内部开发的应用程序 |  | 1d | 2003-12-24 | 2003-12-25 | 180 | 0d | 测试/QA 负责人 | 8h |
| 186 | 1.3.4.3.5.5 | 测试第三方应用程序 |  | 1d | 2003-12-24 | 2003-12-25 | 180 | 0d | 测试/QA 负责人 | 8h |
| 187 | 1.3.4.3.5.6 | 模板和宏 |  | 1d | 2003-12-24 | 2003-12-25 | 180 | 0d | 测试/QA 负责人 | 8h |

| ID | WBS | Task | Type | Duration | Start | Finish | Predecessors | Total slack | Resources | Work |
| --- | --- | --- | --- | --- | --- | --- | --- | --- | --- | --- |
| 188 | 1.3.4.4 | **将实验室客户端软件还原到初始状态** |  | 3d | 2003-12-25 | 2003-12-30 | 176 | 0d |  | 24h |
| 189 | 1.3.4.4.1 | 卸载 Office 2003 和加载项 |  | 1d | 2003-12-25 | 2003-12-26 |  | 0d | 部署管理员 | 8h |
| 190 | 1.3.4.4.2 | 确认 Office 2003 组件已删除 |  | 1d | 2003-12-26 | 2003-12-29 | 189 | 0d | 测试/QA 负责人 | 8h |
| 191 | 1.3.4.4.3 | 测试桌面和商务应用程序 |  | 1d | 2003-12-29 | 2003-12-30 | 190 | 0d | 测试/QA 负责人 | 8h |
| 192 | 1.3.4.5 | 完成部署概念验证 | milestone | 0d | 2003-12-30 | 2003-12-30 | 188 | 0d |  |  |
| 193 | 1.3.5 | **部署试生产** |  | 21d | 2003-12-30 | 2004-01-28 | 169 | 0d |  | 192h |
| 194 | 1.3.5.1 | **规划试生产** |  | 6d | 2003-12-30 | 2004-01-07 |  | 0d |  | 48h |
| 195 | 1.3.5.1.1 | 确定试生产组/个体 |  | 1d | 2003-12-30 | 2003-12-31 |  | 0d | 项目经理 | 8h |
| 196 | 1.3.5.1.2 | 记录资源和任务 |  | 1d | 2003-12-31 | 2004-01-01 | 195 | 0d | 项目经理 | 8h |
| 197 | 1.3.5.1.3 | 制定用户团体的联系材料(例如，常见问题、网站、电子邮件) |  | 1d | 2004-01-01 | 2004-01-02 | 196 | 0d | 用户教育/培训负责人 | 8h |
| 198 | 1.3.5.1.4 | 制定用户支持计划 |  | 1d | 2004-01-02 | 2004-01-05 | 197 | 0d | 项目经理 | 8h |
| 199 | 1.3.5.1.5 | 制定用户培训计划 |  | 1d | 2004-01-05 | 2004-01-06 | 198 | 0d | 用户教育/培训负责人 | 8h |
| 200 | 1.3.5.1.6 | 为试生产组创建自定义配置 |  | 1d | 2004-01-06 | 2004-01-07 | 199 | 0d | 部署管理员 | 8h |
| 201 | 1.3.5.2 | **部署到试生产组** |  | 6d | 2004-01-07 | 2004-01-15 |  | 0d |  | 48h |
| 202 | 1.3.5.2.1 | 与试生产用户通讯 |  | 1d | 2004-01-07 | 2004-01-08 | 200 | 0d | 用户教育/培训负责人 | 8h |
| 203 | 1.3.5.2.2 | 处理用户培训 |  | 1d | 2004-01-08 | 2004-01-09 | 202 | 0d | 用户教育/培训负责人 | 8h |
| 204 | 1.3.5.2.3 | 迁移确定的文件、宏、模板和自定义解决方案 |  | 1d | 2004-01-09 | 2004-01-12 | 203 | 0d | 部署管理员 | 8h |
| 205 | 1.3.5.2.4 | 确保支持组织准备就绪 |  | 1d | 2004-01-12 | 2004-01-13 | 204 | 0d | 项目经理 | 8h |
| 206 | 1.3.5.2.5 | 创建组/部门(例如，会计 MST、秘书 MST、R&D MST)的自定义配置 |  | 1d | 2004-01-13 | 2004-01-14 | 205 | 0d | 网络管理员 | 8h |
| 207 | 1.3.5.2.6 | 将自定义程序包部署到每个客户端 |  | 1d | 2004-01-14 | 2004-01-15 | 206 | 0d | 部署管理员 | 8h |
| 208 | 1.3.5.3 | **测试试生产** |  | 6d | 2004-01-15 | 2004-01-23 |  | 0d |  | 48h |
| 209 | 1.3.5.3.1 | 处理台式计算机测试方案 |  | 1d | 2004-01-15 | 2004-01-16 | 207 | 0d | 测试/QA 负责人 | 8h |
| 210 | 1.3.5.3.2 | 处理服务器测试方案 |  | 1d | 2004-01-16 | 2004-01-19 | 209 | 0d | 测试/QA 负责人 | 8h |
| 211 | 1.3.5.3.3 | 处理第三方应用程序测试方案 |  | 1d | 2004-01-19 | 2004-01-20 | 210 | 0d | 测试/QA 负责人 | 8h |
| 212 | 1.3.5.3.4 | 处理自定义应用程序测试方案 |  | 1d | 2004-01-20 | 2004-01-21 | 211 | 0d | 测试/QA 负责人 | 8h |
| 213 | 1.3.5.3.5 | 处理宏和模板测试方案 |  | 1d | 2004-01-21 | 2004-01-22 | 212 | 0d | 测试/QA 负责人 | 8h |
| 214 | 1.3.5.3.6 | 处理文件共存测试方案 |  | 1d | 2004-01-22 | 2004-01-23 | 213 | 0d | 测试/QA 负责人 | 8h |

| ID | WBS | Task | Type | Duration | Start | Finish | Predecessors | Total slack | Resources | Work |
| --- | --- | --- | --- | --- | --- | --- | --- | --- | --- | --- |
| 215 | 1.3.5.4 | **评估试生产** |  | 3d | 2004-01-23 | 2004-01-28 |  | 0d |  | 48h |
| 216 | 1.3.5.4.1 | 获得用户反馈 |  | 1d | 2004-01-23 | 2004-01-26 | 214 | 0d | 项目经理 | 8h |
| 217 | 1.3.5.4.2 | 评估经验教训 |  | 1d | 2004-01-26 | 2004-01-27 | 216 | 0d | 项目经理 | 8h |
| 218 | 1.3.5.4.3 | 根据需要修改项目 |  | 1d | 2004-01-27 | 2004-01-28 | 217 | 0d | 项目经理; 部署管理员; 台式计算机管理员; 网络管理员 | 32h |
| 219 | 1.3.5.5 | 完成部署试生产 | milestone | 0d | 2004-01-28 | 2004-01-28 | 215 | 0d |  |  |
| 220 | 1.3.6 | **部署生产系统** |  | 35d | 2004-01-28 | 2004-03-17 | 193 | 0d |  | 280h |
| 221 | 1.3.6.1 | **制定部署目的** |  | 4d | 2004-01-28 | 2004-02-03 |  | 0d |  | 32h |
| 222 | 1.3.6.1.1 | 定义部署目标 |  | 1d | 2004-01-28 | 2004-01-29 | 219 | 0d | 项目经理 | 8h |
| 223 | 1.3.6.1.2 | 制定部署规格 |  | 1d | 2004-01-29 | 2004-01-30 | 222 | 0d | 项目经理 | 8h |
| 224 | 1.3.6.1.3 | 制定审阅过程 |  | 1d | 2004-01-30 | 2004-02-02 | 223 | 0d | 项目经理 | 8h |
| 225 | 1.3.6.1.4 | 制定首展计划安排和后勤计划 |  | 1d | 2004-02-02 | 2004-02-03 | 224 | 0d | 项目经理 | 8h |
| 226 | 1.3.6.2 | **部署到组织** |  | 25d | 2004-02-03 | 2004-03-09 |  | 0d |  | 200h |
| 227 | 1.3.6.2.1 | 创建自定义配置 |  | 1d | 2004-02-03 | 2004-02-04 | 225 | 0d | 部署管理员 | 8h |
| 228 | 1.3.6.2.2 | 与用户通讯 |  | 1d | 2004-02-04 | 2004-02-05 | 227 | 0d | 用户教育/培训负责人 | 8h |
| 229 | 1.3.6.2.3 | 处理用户培训 |  | 10d | 2004-02-05 | 2004-02-19 | 228 | 0d | 用户教育/培训负责人 | 80h |
| 230 | 1.3.6.2.4 | 迁移确定的文件、宏、模板和自定义解决方案 |  | 1d | 2004-02-19 | 2004-02-20 | 229 | 0d | 部署管理员 | 8h |
| 231 | 1.3.6.2.5 | 确保支持组织准备就绪(例如，管理、技术支持) |  | 2d | 2004-02-20 | 2004-02-24 | 230 | 0d | 项目经理 | 16h |
| 232 | 1.3.6.2.6 | 将自定义程序包部署到每个客户端 |  | 10d | 2004-02-24 | 2004-03-09 | 231 | 0d | 部署管理员 | 80h |
| 233 | 1.3.6.3 | **测试部署** |  | 6d | 2004-03-09 | 2004-03-17 |  | 0d |  | 48h |
| 234 | 1.3.6.3.1 | 处理台式计算机测试方案 |  | 1d | 2004-03-09 | 2004-03-10 | 232 | 0d | 测试/QA 负责人 | 8h |
| 235 | 1.3.6.3.2 | 处理服务器测试方案 |  | 1d | 2004-03-10 | 2004-03-11 | 234 | 0d | 测试/QA 负责人 | 8h |
| 236 | 1.3.6.3.3 | 处理第三方应用程序测试方案 |  | 1d | 2004-03-11 | 2004-03-12 | 235 | 0d | 测试/QA 负责人 | 8h |
| 237 | 1.3.6.3.4 | 处理宏和模板测试方案 |  | 1d | 2004-03-12 | 2004-03-15 | 236 | 0d | 测试/QA 负责人 | 8h |
| 238 | 1.3.6.3.5 | 处理自定义应用程序测试方案 |  | 1d | 2004-03-15 | 2004-03-16 | 237 | 0d | 测试/QA 负责人 | 8h |
| 239 | 1.3.6.3.6 | 处理文件共存测试方案 |  | 1d | 2004-03-16 | 2004-03-17 | 238 | 0d | 测试/QA 负责人 | 8h |
| 240 | 1.3.6.4 | 完成部署生产系统 | milestone | 0d | 2004-03-17 | 2004-03-17 | 239 | 0d | 测试/QA 负责人 |  |
| 241 | 1.3.7 | 部署工作完成 | milestone | 0d | 2004-03-17 | 2004-03-17 | 220 | 0d |  |  |

| ID | WBS | Task | Type | Duration | Start | Finish | Predecessors | Total slack | Resources | Work |
| --- | --- | --- | --- | --- | --- | --- | --- | --- | --- | --- |
| 242 | 1.4 | **执行后审查** |  | 4d | 2004-03-17 | 2004-03-23 | 143 | 0d |  | 88h |
| 243 | 1.4.1 | 获得用户反馈 |  | 1d | 2004-03-17 | 2004-03-18 |  | 0d | 项目经理; 用户教育/培训负责人 | 16h |
| 244 | 1.4.2 | 评估经验教训 |  | 1d | 2004-03-18 | 2004-03-19 | 243 | 0d | 项目经理 | 8h |
| 245 | 1.4.3 | 根据需要修改项目 |  | 1d | 2004-03-19 | 2004-03-22 | 244 | 0d | 部署管理员; 台式计算机管理员; Intranet/Internet 管理员; 浏览器管理员; 网络管理员; 用户教育/培训负责人 | 48h |
| 246 | 1.4.4 | 建立正在进行的办公室规划小组 |  | 1d | 2004-03-22 | 2004-03-23 | 245 | 0d | 项目经理; 风险承担者 | 16h |
| 247 | 1.4.5 | 执行后审查工作完毕 | milestone | 0d | 2004-03-23 | 2004-03-23 | 246 | 0d |  |  |
| 248 | 1.5 | 完成 Microsoft Office 2003 部署 | milestone | 0d | 2004-03-23 | 2004-03-23 | 247 | 0d |  |  |
