# 迁移办公室

Schedule from MS Project, 2004-01-01 to 2004-06-25.

## Calendars

- 标准: Mon-Fri 08:00-12:00, 13:00-17:00; Sat-Sun off.

## Resources

| Resource |
| --- |
| 首席迁移官 |
| 办公室经理 |
| 电信管理员 |
| 网络支持经理 |
| 邮件室管理员 |
| 环保工程师 |
| 财务经理 |
| 本地电话公司 |
| 清洁服务 |
| 网络管理员 |
| 搬迁 |

## Schedule

| ID | WBS | Task | Type | Duration | Start | Finish | Predecessors | Total slack | Free slack | Resources | Work |
| --- | --- | --- | --- | --- | --- | --- | --- | --- | --- | --- | --- |
| 1 | 1 | **迁移办公室** |  | 127d | 2004-01-01 | 2004-06-25 |  | 0d |  |  | 2192h |
| 2 | 1.1 | **搬迁日之前二到六个月** |  | 77d | 2004-01-01 | 2004-04-16 |  | 0d |  |  | 816h |
| 3 | 1.1.1 | 列出必须满足的新办公区关键需求 |  | 7d | 2004-01-01 | 2004-01-09 |  | 0d |  | 首席迁移官 | 56h |
| 4 | 1.1.2 | 确定可能的办公地点 |  | 20d | 2004-01-12 | 2004-02-06 | 3 | 0d |  | 首席迁移官 | 160h |
| 5 | 1.1.3 | 对办公区进行最终决定 |  | 10d | 2004-02-09 | 2004-02-20 | 4 | 0d |  | 首席迁移官 | 80h |
| 6 | 1.1.4 | 结束办公区的租赁 |  | 10d | 2004-02-23 | 2004-03-05 | 5 | 0d |  | 首席迁移官 | 80h |
| 7 | 1.1.5 | 确定主要租户改进需求 |  | 15d | 2004-03-08 | 2004-03-26 | 6 | 0d |  | 办公室经理 | 120h |
| 8 | 1.1.6 | 获得承包商对主要租户改进的评估 |  | 5d | 2004-03-29 | 2004-04-02 | 7 | 0d |  | 办公室经理 | 40h |
| 9 | 1.1.7 | 确定新办公室的成本(办公椅、办公桌、设备) |  | 10d | 2004-02-23 | 2004-03-05 | 5 | 20d | 0d | 首席迁移官 | 80h |
| 10 | 1.1.8 | 准备搬迁的预算 |  | 10d | 2004-03-08 | 2004-03-19 | 9 | 20d |  | 首席迁移官 | 80h |
| 11 | 1.1.9 | 选择搬迁日 |  | 1d | 2004-03-08 | 2004-03-08 | 6 | 29d |  | 首席迁移官 | 8h |
| 12 | 1.1.10 | 雇用承包商进行主要的租户改进 |  | 5d | 2004-04-05 | 2004-04-09 | 8 | 0d |  | 办公室经理 | 40h |
| 13 | 1.1.11 | 获得必要的许可 |  | 5d | 2004-04-12 | 2004-04-16 | 12 | 0d |  | 首席迁移官 | 40h |
| 14 | 1.1.12 | 评估电话系统需求 |  | 1d | 2004-03-08 | 2004-03-08 | 6 | 29d |  | 电信管理员 | 8h |
| 15 | 1.1.13 | 预定新电话号码 |  | 1d | 2004-03-08 | 2004-03-08 | 6 | 29d |  | 电信管理员 | 8h |
| 16 | 1.1.14 | 预定新传真号码 |  | 1d | 2004-03-08 | 2004-03-08 | 6 | 29d |  | 电信管理员 | 8h |
| 17 | 1.1.15 | 与雇员交流 |  | 1d | 2004-03-08 | 2004-03-08 | 6 | 29d |  | 首席迁移官 | 8h |
| 18 | 1.1.16 | 分为一个清理物品阶段 | milestone | 0d | 2004-04-16 | 2004-04-16 | 3, 4, 5, 6, 7, 8, 9, 10, 11, 12, 13, 14, 15, 16, 17 | 0d |  |  |  |
| 19 | 1.2 | **搬迁日之前一到两个月** |  | 28d | 2004-04-19 | 2004-05-26 |  | 0d |  |  | 536h |
| 20 | 1.2.1 | 设计办公区 |  | 23d | 2004-04-19 | 2004-05-19 | 18 | 0d |  | 办公室经理 | 184h |
| 21 | 1.2.2 | 分配办公区 |  | 5d | 2004-05-20 | 2004-05-26 | 20 | 0d |  | 办公室经理 | 40h |
| 22 | 1.2.3 | 订购办公椅 |  | 1d | 2004-05-20 | 2004-05-20 | 20 | 4d |  | 办公室经理 | 8h |
| 23 | 1.2.4 | 订购办公桌 |  | 1d | 2004-05-20 | 2004-05-20 | 20 | 4d |  | 办公室经理 | 8h |
| 24 | 1.2.5 | 订购系统设备 |  | 1d | 2004-05-20 | 2004-05-20 | 20 | 4d |  | 网络支持经理 | 8h |
| 25 | 1.2.6 | 订购新办公设备 |  | 1d | 2004-05-20 | 2004-05-20 | 20 | 4d |  | 办公室经理 | 8h |
| 26 | 1.2.7 | 获得搬迁公司的估价 |  | 12d | 2004-04-19 | 2004-05-04 | 18 | 8d | 0d | 首席迁移官 | 96h |
| 27 | 1.2.8 | 雇用搬运工 |  | 1d | 2004-05-05 | 2004-05-05 | 26 | 15d |  | 首席迁移官 | 8h |
| 28 | 1.2.9 | 评估服务器机房需求 |  | 2d | 2004-05-20 | 2004-05-21 | 20 | 3d |  | 网络支持经理 | 16h |
| 29 | 1.2.10 | 评估计算机网络需求 |  | 2d | 2004-05-20 | 2004-05-21 | 20 | 3d |  | 网络支持经理 | 16h |
| 30 | 1.2.11 | 为通知订购更改的地址标签 |  | 1d | 2004-05-05 | 2004-05-05 | 26 | 15d |  | 邮件室管理员 | 8h |
| 31 | 1.2.12 | 为通知订购新地址标签 |  | 1d | 2004-05-05 | 2004-05-05 | 26 | 15d |  | 邮件室管理员 | 8h |
| 32 | 1.2.13 | 获得标志设计公司的估价 |  | 7d | 2004-05-05 | 2004-05-13 | 26 | 8d | 0d | 办公室经理 | 56h |
| 33 | 1.2.14 | 订购新地点的标志 |  | 1d | 2004-05-14 | 2004-05-14 | 32 | 8d |  | 办公室经理 | 8h |
| 34 | 1.2.15 | 订购电话系统 |  | 1d | 2004-05-20 | 2004-05-20 | 20 | 3d | 0d | 电信管理员 | 8h |
| 35 | 1.2.16 | 订购电话线 |  | 1d | 2004-05-21 | 2004-05-21 | 34 | 3d |  | 电信管理员 | 8h |
| 36 | 1.2.17 | 订购 internet 电话线 |  | 1d | 2004-05-21 | 2004-05-21 | 34 | 3d |  | 网络支持经理 | 8h |
| 37 | 1.2.18 | 安排内部维护服务 |  | 1d | 2004-05-14 | 2004-05-14 | 32 | 8d |  | 环保工程师 | 8h |
| 38 | 1.2.19 | 安排外部维护服务 |  | 1d | 2004-05-14 | 2004-05-14 | 32 | 8d |  | 环保工程师 | 8h |
| 39 | 1.2.20 | 安排处理垃圾 |  | 1d | 2004-05-14 | 2004-05-14 | 32 | 8d |  | 办公室经理 | 8h |
| 40 | 1.2.21 | 安排清洁服务 |  | 1d | 2004-05-14 | 2004-05-14 | 32 | 8d |  | 办公室经理 | 8h |
| 41 | 1.2.22 | 安排回收 |  | 1d | 2004-05-14 | 2004-05-14 | 32 | 8d |  | 办公室经理 | 8h |
| 42 | 1.2.23 | 分为两个清理物品阶段 | milestone | 0d | 2004-05-26 | 2004-05-26 | 20, 21, 22, 23, 24, 25, 26, 27, 28, 29, 30, 31, 32, 33, 34, 35, 36, 37, 38, 39, 40, 41 | 0d |  |  |  |

Notes:
- 3: 组织搬迁工作组参与此任务。该工作组应代表您的单位的不同部门。
- 6: 确保公司律师审阅了与租赁相关的所有文档。此审阅过程可能需要花一定时间，但也是关键的一步。
- 7: 通过为各部门领导准备好标准的反馈表单并要求其在指定日期之前交回，从不同部门获得输入值。

| ID | WBS | Task | Type | Duration | Start | Finish | Predecessors | Total slack | Free slack | Resources | Work |
| --- | --- | --- | --- | --- | --- | --- | --- | --- | --- | --- | --- |
| 43 | 1.3 | **搬迁日之前二到四周** |  | 10d | 2004-05-27 | 2004-06-09 |  | 0d |  |  | 224h |
| 44 | 1.3.1 | 评估正被运送到新地点的资产 |  | 3d | 2004-05-27 | 2004-05-31 | 42 | 0d |  | 财务经理 | 24h |
| 45 | 1.3.2 | 获得新地方的商业保险报价 |  | 6d | 2004-06-01 | 2004-06-08 | 44 | 0d |  | 办公室经理 | 48h |
| 46 | 1.3.3 | 为新地方购买保险 |  | 1d | 2004-06-09 | 2004-06-09 | 45 | 0d |  | 办公室经理 | 8h |
| 47 | 1.3.4 | 订购安全系统 |  | 1d | 2004-05-27 | 2004-05-27 | 42 | 9d |  | 办公室经理 | 8h |
| 48 | 1.3.5 | 订购钥匙、门卡 |  | 1d | 2004-05-27 | 2004-05-27 | 42 | 9d |  | 办公室经理 | 8h |
| 49 | 1.3.6 | 安排饮料服务 |  | 1d | 2004-05-27 | 2004-05-27 | 42 | 9d |  | 办公室经理 | 8h |
| 50 | 1.3.7 | 将地址更改信息发送给所有供应商 |  | 1d | 2004-05-27 | 2004-05-27 | 42 | 9d |  | 邮件室管理员 | 8h |
| 51 | 1.3.8 | 将地址更改信息发送给所有客户 |  | 1d | 2004-05-27 | 2004-05-27 | 42 | 9d |  | 邮件室管理员 | 8h |
| 52 | 1.3.9 | 将地址更改信息发送给所有向其订阅内容的单位或个人 |  | 1d | 2004-05-27 | 2004-05-27 | 42 | 9d |  | 邮件室管理员 | 8h |
| 53 | 1.3.10 | 将设备搬迁情况通知给所有承租人 |  | 1d | 2004-05-27 | 2004-05-27 | 42 | 9d |  | 办公室经理 | 8h |
| 54 | 1.3.11 | 订购带有新地址的支票 |  | 1d | 2004-05-27 | 2004-05-27 | 42 | 9d |  | 办公室经理 | 8h |
| 55 | 1.3.12 | 订购远距离服务 |  | 1d | 2004-05-27 | 2004-05-27 | 42 | 9d |  | 电信管理员 | 8h |
| 56 | 1.3.13 | 转让免税号码或定购新的号码 |  | 1d | 2004-05-27 | 2004-05-27 | 42 | 9d |  | 电信管理员 | 8h |
| 57 | 1.3.14 | 处理旧办公设备计划 |  | 3d | 2004-05-27 | 2004-05-31 | 42 | 7d |  | 办公室经理 | 24h |
| 58 | 1.3.15 | 处理旧的办公设备 |  | 1d | 2004-05-27 | 2004-05-27 | 42 | 9d |  | 办公室经理 | 8h |
| 59 | 1.3.16 | 处理旧办公用具计划 |  | 3d | 2004-05-27 | 2004-05-31 | 42 | 7d |  | 办公室经理 | 24h |
| 60 | 1.3.17 | 处理旧的办公桌椅 |  | 1d | 2004-05-27 | 2004-05-27 | 42 | 9d |  | 办公室经理 | 8h |
| 61 | 1.3.18 | 分为三个清理物品阶段 | milestone | 0d | 2004-06-09 | 2004-06-09 | 44, 45, 46, 47, 48, 49, 50, 51, 52, 53, 54, 55, 56, 57, 58, 59, 60 | 0d |  |  |  |
| 62 | 1.4 | **搬迁日之前一天到两周** |  | 10d | 2004-06-10 | 2004-06-23 |  | 0d |  |  | 536h |
| 63 | 1.4.1 | 安装电话线 |  | 1d | 2004-06-10 | 2004-06-10 | 61 | 2d | 0d | 本地电话公司 | 8h |
| 64 | 1.4.2 | 安装电话系统 |  | 4d | 2004-06-11 | 2004-06-16 | 63 | 2d | 0d | 电信管理员 | 32h |
| 65 | 1.4.3 | 分配新电话号码、分机 |  | 2d | 2004-06-17 | 2004-06-18 | 64 | 2d | 0d | 电信管理员 | 16h |
| 66 | 1.4.4 | 订购新信头和信封 |  | 1d | 2004-06-10 | 2004-06-10 | 61 | 9d |  | 办公室经理 | 8h |
| 67 | 1.4.5 | 订购新业务名片 |  | 1d | 2004-06-10 | 2004-06-10 | 61 | 9d |  | 办公室经理 | 8h |
| 68 | 1.4.6 | 订购新业务表单 |  | 1d | 2004-06-10 | 2004-06-10 | 61 | 9d |  | 办公室经理 | 8h |
| 69 | 1.4.7 | 安排断开水、电设施的连接 |  | 1d | 2004-06-10 | 2004-06-10 | 61 | 9d |  | 办公室经理 | 8h |
| 70 | 1.4.8 | 修复新办公室 |  | 1d | 2004-06-10 | 2004-06-10 | 61 | 9d |  | 环保工程师 | 8h |
| 71 | 1.4.9 | 清扫新办公室 |  | 1d | 2004-06-10 | 2004-06-10 | 61 | 9d |  | 清洁服务 | 8h |
| 72 | 1.4.10 | 确定最近的夜间急诊所 |  | 1d | 2004-06-10 | 2004-06-10 | 61 | 9d |  | 邮件室管理员 | 8h |
| 73 | 1.4.11 | 盘点现有办公室设备(综合) |  | 5d | 2004-06-10 | 2004-06-16 | 61 | 5d |  | 办公室经理 | 40h |
| 74 | 1.4.12 | 盘点现有计算机 |  | 5d | 2004-06-10 | 2004-06-16 | 61 | 5d |  | 网络支持经理 | 40h |
| 75 | 1.4.13 | 按办公室盘点现有设备 |  | 5d | 2004-06-10 | 2004-06-16 | 61 | 5d |  | 办公室经理 | 40h |
| 76 | 1.4.14 | 共享文档 |  | 1d | 2004-06-10 | 2004-06-10 | 61 | 9d |  | 办公室经理 | 8h |
| 77 | 1.4.15 | 清除陈旧的材料 |  | 1d | 2004-06-10 | 2004-06-10 | 61 | 9d |  | 办公室经理 | 8h |
| 78 | 1.4.16 | 创建新办公室分机目录 |  | 1d | 2004-06-21 | 2004-06-21 | 65 | 2d |  | 电信管理员 | 8h |
| 79 | 1.4.17 | 创建新办公室布局地图 |  | 1d | 2004-06-10 | 2004-06-10 | 61 | 9d |  | 办公室经理 | 8h |
| 80 | 1.4.18 | 创建新传真封页 |  | 1d | 2004-06-10 | 2004-06-10 | 61 | 9d |  | 办公室经理 | 8h |
| 81 | 1.4.19 | 为雇员创建到新地点的驾驶说明 |  | 1d | 2004-06-10 | 2004-06-10 | 61 | 9d |  | 办公室经理 | 8h |
| 82 | 1.4.20 | 获得新地点的公共交通信息 |  | 1d | 2004-06-10 | 2004-06-10 | 61 | 9d |  | 办公室经理 | 8h |
| 83 | 1.4.21 | 获得运输标签 |  | 1d | 2004-06-10 | 2004-06-10 | 61 | 9d |  | 邮件室管理员 | 8h |
| 84 | 1.4.22 | 将地址更改情况通知给邮局 |  | 1d | 2004-06-10 | 2004-06-10 | 61 | 9d |  | 邮件室管理员 | 8h |
| 85 | 1.4.23 | 根据新的信息更新公司的网站 |  | 1d | 2004-06-10 | 2004-06-10 | 61 | 9d |  | 网络管理员 | 8h |
| 86 | 1.4.24 | 订购搬移箱 |  | 1d | 2004-06-10 | 2004-06-10 | 61 | 9d |  | 邮件室管理员 | 8h |
| 87 | 1.4.25 | 整理办公桌、个人空间 |  | 5d | 2004-06-10 | 2004-06-16 | 61 | 0d |  | 搬迁 | 40h |
| 88 | 1.4.26 | 整理公用区域 |  | 5d | 2004-06-10 | 2004-06-16 | 61 | 3d | 0d | 搬迁 | 40h |
| 89 | 1.4.27 | 标记所有易碎物品 |  | 1d | 2004-06-10 | 2004-06-10 | 61 | 9d |  | 办公室经理 | 8h |
| 90 | 1.4.28 | 拆卸系统设备 |  | 2d | 2004-06-17 | 2004-06-18 | 87 | 0d |  | 网络支持经理 | 16h |
| 91 | 1.4.29 | 存储不搬移的财物 |  | 1d | 2004-06-17 | 2004-06-17 | 87, 88 | 4d |  | 搬迁 | 8h |
| 92 | 1.4.30 | 标记要移动的设备 |  | 2d | 2004-06-17 | 2004-06-18 | 87, 88 | 3d |  | 办公室经理 | 16h |
| 93 | 1.4.31 | 搬移到中央位置 |  | 1d | 2004-06-17 | 2004-06-17 | 87, 88 | 4d |  | 办公室经理 | 8h |
| 94 | 1.4.32 | 在新地点安装系统设备 |  | 3d | 2004-06-21 | 2004-06-23 | 90 | 0d |  | 网络支持经理 | 24h |
| 95 | 1.4.33 | 在新地点安装网络线路 |  | 2d | 2004-06-10 | 2004-06-11 | 61 | 8d |  | 网络支持经理 | 16h |
| 96 | 1.4.34 | 分发新钥匙、卡片 |  | 1d | 2004-06-10 | 2004-06-10 | 61 | 9d |  | 办公室经理 | 8h |
| 97 | 1.4.35 | 收集旧钥匙、卡片 |  | 1d | 2004-06-10 | 2004-06-10 | 61 | 9d |  | 办公室经理 | 8h |
| 98 | 1.4.36 | 将冰箱清空、解冻，并进行清洁 |  | 1d | 2004-06-10 | 2004-06-10 | 61 | 9d |  | 清洁服务 | 8h |
| 99 | 1.4.37 | 将新办公区以代码的形式表示在地图上以帮助搬运工 |  | 1d | 2004-06-10 | 2004-06-10 | 61 | 9d |  | 办公室经理 | 8h |
| 100 | 1.4.38 | 建立搬迁日工作组以向搬运工提供指导 |  | 1d | 2004-06-10 | 2004-06-10 | 61 | 9d |  | 首席迁移官 | 8h |
| 101 | 1.4.39 | 分为四个清理物品阶段 | milestone | 0d | 2004-06-23 | 2004-06-23 | 63, 64, 65, 66, 67, 68, 69, 70, 71, 72, 73, 74, 75, 76, 77, 78, 79, 80, 81, 82, 83, 84, 85, 86, 87, 88, 89, 90, 91, 92, 93, 94, 95, 96, 97, 98, 99, 100 | 0d |  |  |  |

Notes:
- 57: 您的公司可能会考虑为雇员举行一个拍卖会。
- 59: 您的公司可能会考虑为雇员举行一个拍卖会。
- 100: 搬迁日工作组可能希望在搬迁日穿统一的衬衣，或是佩戴姓名标签或其他将会帮助搬运工快速找到他们的标识。

| ID | WBS | Task | Type | Duration | Start | Finish | Predecessors | Total slack | Resources | Work |
| --- | --- | --- | --- | --- | --- | --- | --- | --- | --- | --- |
| 102 | 1.5 | **搬迁日** |  | 1d | 2004-06-24 | 2004-06-24 |  | 0d |  | 32h |
| 103 | 1.5.1 | 在新办公室内贴好代码符号以方便搬运工 |  | 1d | 2004-06-24 | 2004-06-24 | 101 | 0d | 办公室经理 | 8h |
| 104 | 1.5.2 | 安排好搬迁日工作组 |  | 1d | 2004-06-24 | 2004-06-24 | 101 | 0d | 首席迁移官 | 8h |
| 105 | 1.5.3 | 保护主要搬迁路径 |  | 1d | 2004-06-24 | 2004-06-24 | 101 | 0d | 办公室经理 | 8h |
| 106 | 1.5.4 | 将植物和精美艺术品搬移到不同的搬运车内 |  | 1d | 2004-06-24 | 2004-06-24 | 101 | 0d | 搬迁 | 8h |
| 107 | 1.5.5 | 物理意义上的搬迁完成 | milestone | 0d | 2004-06-24 | 2004-06-24 | 103, 104, 105, 106 | 0d |  |  |
| 108 | 1.6 | **搬迁后阶段** |  | 1d | 2004-06-25 | 2004-06-25 |  | 0d |  | 48h |
| 109 | 1.6.1 | 仔细检查是否有损坏或丢失的物品 |  | 1d | 2004-06-25 | 2004-06-25 | 107 | 0d | 办公室经理 | 8h |
| 110 | 1.6.2 | 安排电话训练 |  | 1d | 2004-06-25 | 2004-06-25 | 107 | 0d | 电信管理员 | 8h |
| 111 | 1.6.3 | 安排安全性训练 |  | 1d | 2004-06-25 | 2004-06-25 | 107 | 0d | 办公室经理 | 8h |
| 112 | 1.6.4 | 安排消防训练 |  | 1d | 2004-06-25 | 2004-06-25 | 107 | 0d | 办公室经理 | 8h |
| 113 | 1.6.5 | 定期返回旧办公室取信 |  | 1d | 2004-06-25 | 2004-06-25 | 107 | 0d | 邮件室管理员 | 8h |
| 114 | 1.6.6 | 为客户安排家庭招待会 |  | 1d | 2004-06-25 | 2004-06-25 | 107 | 0d | 首席迁移官 | 8h |
| 115 | 1.6.7 | 办公室搬迁项目完成 | milestone | 0d | 2004-06-25 | 2004-06-25 | 18, 42, 61, 101, 107, 109, 110, 111, 112, 113, 114 | 0d |  |  |
