# 项目管理办公室

Schedule from MS Project, 2004-01-01 to 2004-08-04.

## Calendars

- 标准: Mon-Fri 08:00-12:00, 13:00-17:00; Sat-Sun off.

## Resources

| Resource |
| --- |
| 公司管理 |
| 项目管理办公室协调人 |
| 分析人员 |
| 开发人员 |
| 项目管理办公室雇员分析人员 |

## Schedule

| ID | WBS | Task | Type | Duration | Start | Finish | Predecessors | Total slack | Resources | Work |
| --- | --- | --- | --- | --- | --- | --- | --- | --- | --- | --- |
| 1 | 1 | **项目管理办公室模板** |  | 155d | 2004-01-01 | 2004-08-04 |  | 0d |  | 2308h |
| 2 | 1.1 | **项目范围规划** |  | 10d | 2004-01-01 | 2004-01-14 |  | 0d |  | 160h |
| 3 | 1.1.1 | 确定项目管理办公室的任务范围 |  | 3d | 2004-01-01 | 2004-01-05 |  | 0d | 公司管理; 项目管理办公室协调人 | 48h |
| 4 | 1.1.2 | 记录高级项目管理办公室的要求，包括资源 |  | 2d | 2004-01-06 | 2004-01-07 | 3 | 0d | 公司管理; 项目管理办公室协调人 | 32h |
| 5 | 1.1.3 | 通过商业典范调整项目管理办公室 |  | 3d | 2004-01-08 | 2004-01-12 | 4 | 0d | 公司管理; 项目管理办公室协调人 | 48h |
| 6 | 1.1.4 | 确保执行的资金 |  | 2d | 2004-01-13 | 2004-01-14 | 5 | 0d | 公司管理; 项目管理办公室协调人 | 32h |
| 7 | 1.1.5 | 项目范围规划完成 | milestone | 0d | 2004-01-14 | 2004-01-14 | 6 | 0d |  |  |
| 8 | 1.2 | **规划** |  | 66.5d | 2004-01-15 | 2004-04-16 |  | 0d |  | 1192h |
| 9 | 1.2.1 | **分析/细节管理** |  | 17d | 2004-01-15 | 2004-02-06 |  | 0d |  | 160h |
| 10 | 1.2.1.1 | 审阅说明项目管理办公室任务范围的文档 |  | 1d | 2004-01-15 | 2004-01-15 | 7 | 0d | 项目管理办公室协调人 | 8h |
| 11 | 1.2.1.2 | 建立管理框架 |  | 3d | 2004-01-16 | 2004-01-20 | 10 | 0d | 公司管理; 项目管理办公室协调人 | 48h |
| 12 | 1.2.1.3 | 分析商业目标 |  | 2d | 2004-01-21 | 2004-01-22 | 11 | 0d | 项目管理办公室协调人 | 16h |
| 13 | 1.2.1.4 | 定义任务说明 |  | 2d | 2004-01-23 | 2004-01-26 | 12 | 0d | 项目管理办公室协调人 | 16h |
| 14 | 1.2.1.5 | 定义目标 |  | 3d | 2004-01-27 | 2004-01-29 | 13 | 0d | 项目管理办公室协调人 | 24h |
| 15 | 1.2.1.6 | 制定交流计划 |  | 1d | 2004-01-30 | 2004-01-30 | 14 | 0d | 项目管理办公室协调人 | 8h |
| 16 | 1.2.1.7 | 确保项目管理办公室所需的核心资源 |  | 1w | 2004-02-02 | 2004-02-06 | 15 | 0d | 项目管理办公室协调人 | 40h |
| 17 | 1.2.1.8 | 细节管理工作结束 | milestone | 0d | 2004-02-06 | 2004-02-06 | 16 | 128d |  |  |
| 18 | 1.2.2 | **原则和过程** |  | 20d | 2004-02-09 | 2004-03-05 |  | 0d |  | 640h |
| 19 | 1.2.2.1 | 定义最优过程 |  | 1w | 2004-02-09 | 2004-02-13 | 16 | 0d | 项目管理办公室协调人; 分析人员 | 80h |
| 20 | 1.2.2.2 | 定义最优工具 |  | 1w | 2004-02-09 | 2004-02-13 | 16 | 0d | 项目管理办公室协调人; 分析人员 | 80h |
| 21 | 1.2.2.3 | 定义最优技术 |  | 1w | 2004-02-09 | 2004-02-13 | 16 | 0d | 项目管理办公室协调人; 分析人员 | 80h |
| 22 | 1.2.2.4 | 建立资源关系 |  | 1w | 2004-02-09 | 2004-02-13 | 16 | 0d | 项目管理办公室协调人; 分析人员 | 80h |
| 23 | 1.2.2.5 | 定义统一的准则 |  | 1w | 2004-02-09 | 2004-02-13 | 16 | 0d | 项目管理办公室协调人; 分析人员 | 80h |
| 24 | 1.2.2.6 | 定义项目测试过程 |  | 1w | 2004-02-16 | 2004-02-20 | 19, 20, 21, 23, 22 | 0d | 项目管理办公室协调人; 分析人员 | 80h |
| 25 | 1.2.2.7 | 定义报告要求 |  | 1w | 2004-02-23 | 2004-02-27 | 24 | 0d | 项目管理办公室协调人; 分析人员 | 80h |
| 26 | 1.2.2.8 | 定义项目管理办公室的优先级 |  | 1w | 2004-03-01 | 2004-03-05 | 25 | 0d | 项目管理办公室协调人; 分析人员 | 80h |
| 27 | 1.2.2.9 | 完成原则和过程 | milestone | 0d | 2004-03-05 | 2004-03-05 | 26 | 0d |  |  |

| ID | WBS | Task | Type | Duration | Start | Finish | Predecessors | Total slack | Free slack | Resources | Work |
| --- | --- | --- | --- | --- | --- | --- | --- | --- | --- | --- | --- |
| 28 | 1.2.3 | **项目标准和控制** |  | 28d | 2004-03-08 | 2004-04-14 |  | 0d |  |  | 368h |
| 29 | 1.2.3.1 | 定义安全性/任务/职责 |  | 3d | 2004-03-08 | 2004-03-10 | 27 | 0d |  | 项目管理办公室协调人; 分析人员 | 48h |
| 30 | 1.2.3.2 | 定义系统参数 |  | 5d | 2004-03-11 | 2004-03-17 | 29 | 0d |  | 项目管理办公室协调人; 分析人员 | 80h |
| 31 | 1.2.3.3 | 制定项目编号方法 |  | 2d | 2004-03-18 | 2004-03-19 | 30 | 0d |  | 项目管理办公室协调人; 分析人员 | 32h |
| 32 | 1.2.3.4 | 定义财务报表合并方法 |  | 1w | 2004-03-22 | 2004-03-26 | 31 | 0d |  | 项目管理办公室协调人; 分析人员 | 80h |
| 33 | 1.2.3.5 | 为创建模板确定项目分类 |  | 3d | 2004-03-29 | 2004-03-31 | 32 | 0d |  | 项目管理办公室协调人; 分析人员 | 48h |
| 34 | 1.2.3.6 | 创建项目模板 |  | 2w | 2004-04-01 | 2004-04-14 | 33 | 0d |  | 开发人员 | 80h |
| 35 | 1.2.3.7 | 项目标准和控制完成 | milestone | 0d | 2004-04-14 | 2004-04-14 | 34 | 0d |  |  |  |
| 36 | 1.2.4 | 授权给项目管理办公室 |  | 1d | 2004-04-15 | 2004-04-15 | 35 | 0d |  | 公司管理; 项目管理办公室协调人 | 16h |
| 37 | 1.2.5 | 宣布项目管理办公室的设立 |  | 4h | 2004-04-16 | 2004-04-16 | 36 | 0d |  | 公司管理; 项目管理办公室协调人 | 8h |
| 38 | 1.2.6 | 规划工作完成 | milestone | 0d | 2004-04-16 | 2004-04-16 | 37 | 0d |  |  |  |
| 39 | 1.3 | **启动项目管理办公室** |  | 27d | 2004-04-16 | 2004-05-25 |  | 0d |  |  | 400h |
| 40 | 1.3.1 | 为项目管理办公室配备人员 |  | 1w | 2004-04-16 | 2004-04-23 | 38 | 11d | 0d | 项目管理办公室协调人 | 40h |
| 41 | 1.3.2 | **项目管理办公室对现有项目的支持** |  | 11d | 2004-04-23 | 2004-05-10 |  | 11d |  |  | 104h |
| 42 | 1.3.2.1 | 确定项目管理办公室要支持的现有项目 |  | 2d | 2004-04-23 | 2004-04-27 | 40 | 11d | 0d | 项目管理办公室协调人; 项目管理办公室雇员分析人员 | 32h |
| 43 | 1.3.2.2 | 审查项目 |  | 1w | 2004-04-27 | 2004-05-04 | 42 | 11d | 0d | 项目管理办公室雇员分析人员 | 40h |
| 44 | 1.3.2.3 | 修改项目以达到一致性 |  | 3d | 2004-05-04 | 2004-05-07 | 43 | 11d | 0d | 项目管理办公室雇员分析人员 | 24h |
| 45 | 1.3.2.4 | 将项目纳入项目管理办公室的管理范围 |  | 1d | 2004-05-07 | 2004-05-10 | 44 | 11d | 0d | 项目管理办公室雇员分析人员 | 8h |
| 46 | 1.3.2.5 | 项目管理办公室对当前项目的支持完成 | milestone | 0d | 2004-05-10 | 2004-05-10 | 45 | 11d |  |  |  |
| 47 | 1.3.3 | **项目管理办公室对新项目的支持** |  | 27d | 2004-04-16 | 2004-05-25 |  | 0d |  |  | 256h |
| 48 | 1.3.3.1 | 确定项目管理办公室要支持的新项目 |  | 1w | 2004-04-16 | 2004-04-23 | 38 | 0d |  | 项目管理办公室协调人; 项目管理办公室雇员分析人员 | 80h |
| 49 | 1.3.3.2 | 使用项目管理办公室准则/模板创建项目 |  | 2w | 2004-04-23 | 2004-05-07 | 48 | 0d |  | 项目管理办公室雇员分析人员 | 80h |
| 50 | 1.3.3.3 | 建立监控准则 |  | 3d | 2004-05-07 | 2004-05-12 | 49 | 0d |  | 项目管理办公室雇员分析人员 | 24h |
| 51 | 1.3.3.4 | 建立衡量业绩标准 |  | 4d | 2004-05-12 | 2004-05-18 | 50 | 0d |  | 项目管理办公室雇员分析人员 | 32h |
| 52 | 1.3.3.5 | 建立预算原则 |  | 3d | 2004-05-18 | 2004-05-21 | 51 | 0d |  | 项目管理办公室雇员分析人员 | 24h |
| 53 | 1.3.3.6 | 将项目纳入项目管理办公室的管理范围 |  | 2d | 2004-05-21 | 2004-05-25 | 52 | 0d |  | 项目管理办公室雇员分析人员 | 16h |
| 54 | 1.3.3.7 | 项目管理办公室对新项目的支持完成 | milestone | 0d | 2004-05-25 | 2004-05-25 | 53 | 0d |  |  |  |
| 55 | 1.3.4 | 项目管理办公室启动完成 | milestone | 0d | 2004-05-25 | 2004-05-25 | 54, 46 | 0d |  |  |  |

| ID | WBS | Task | Type | Duration | Start | Finish | Predecessors | Total slack | Resources | Work |
| --- | --- | --- | --- | --- | --- | --- | --- | --- | --- | --- |
| 56 | 1.4 | **管理(持续性的)** |  | 25.5d | 2004-05-25 | 2004-06-29 |  | 0d |  | 204h |
| 57 | 1.4.1 | 复查项目的商业优先级 |  | 1w | 2004-05-25 | 2004-06-01 | 55 | 0d | 项目管理办公室雇员分析人员 | 40h |
| 58 | 1.4.2 | **风险评估** |  | 9d | 2004-06-01 | 2004-06-14 |  | 0d |  | 72h |
| 59 | 1.4.2.1 | 执行风险评估 |  | 1w | 2004-06-01 | 2004-06-08 | 57 | 0d | 项目管理办公室雇员分析人员 | 40h |
| 60 | 1.4.2.2 | 结合项目的优先级对对风险进行评估 |  | 3d | 2004-06-08 | 2004-06-11 | 59 | 0d | 项目管理办公室雇员分析人员 | 24h |
| 61 | 1.4.2.3 | 准备应付突发事件的计划 |  | 1d | 2004-06-11 | 2004-06-14 | 60 | 0d | 项目管理办公室雇员分析人员 | 8h |
| 62 | 1.4.2.4 | 风险评估完毕 | milestone | 0d | 2004-06-14 | 2004-06-14 | 61 | 0d |  |  |
| 63 | 1.4.3 | **监控** |  | 11.5d | 2004-06-14 | 2004-06-29 |  | 0d |  | 92h |
| 64 | 1.4.3.1 | 准备项目检查会议议程 |  | 1d | 2004-06-14 | 2004-06-15 | 62 | 0d | 项目管理办公室雇员分析人员 | 8h |
| 65 | 1.4.3.2 | 召开项目检查会议 |  | 4h | 2004-06-15 | 2004-06-15 | 64 | 0d | 项目管理办公室雇员分析人员 | 4h |
| 66 | 1.4.3.3 | 为关键问题制定报告、预算、资源分配、跟踪进展等 |  | 2d | 2004-06-16 | 2004-06-17 | 65 | 0d | 项目管理办公室雇员分析人员 | 16h |
| 67 | 1.4.3.4 | 缓解关键问题 |  | 2d | 2004-06-18 | 2004-06-21 | 66 | 0d | 项目管理办公室雇员分析人员 | 16h |
| 68 | 1.4.3.5 | 帮助分配资源 |  | 2d | 2004-06-22 | 2004-06-23 | 67 | 0d | 项目管理办公室雇员分析人员 | 16h |
| 69 | 1.4.3.6 | 冻结/发布项目比较基准 |  | 2d | 2004-06-24 | 2004-06-25 | 68 | 0d | 项目管理办公室雇员分析人员 | 16h |
| 70 | 1.4.3.7 | 建立变化管理控制 |  | 1d | 2004-06-28 | 2004-06-28 | 69 | 0d | 项目管理办公室雇员分析人员 | 8h |
| 71 | 1.4.3.8 | 冻结/发布项目预算 |  | 1d | 2004-06-29 | 2004-06-29 | 70 | 0d | 项目管理办公室雇员分析人员 | 8h |
| 72 | 1.4.3.9 | 监控完毕 | milestone | 0d | 2004-06-29 | 2004-06-29 | 71 | 0d |  |  |
| 73 | 1.5 | **存档** |  | 13d | 2004-06-30 | 2004-07-16 |  | 0d |  | 144h |
| 74 | 1.5.1 | 建立项目档案 |  | 1w | 2004-06-30 | 2004-07-06 | 72 | 0d | 项目管理办公室协调人; 项目管理办公室雇员分析人员 | 80h |
| 75 | 1.5.2 | 建立经验教训档案库 |  | 1w | 2004-07-07 | 2004-07-13 | 74 | 0d | 项目管理办公室雇员分析人员 | 40h |
| 76 | 1.5.3 | 管理项目档案 |  | 3d | 2004-07-14 | 2004-07-16 | 75 | 0d | 项目管理办公室雇员分析人员 | 24h |
| 77 | 1.5.4 | 存档完毕 | milestone | 0d | 2004-07-16 | 2004-07-16 | 76 | 0d |  |  |
| 78 | 1.6 | **实施工作结束后的回顾** |  | 13d | 2004-07-19 | 2004-08-04 |  | 0d |  | 208h |
| 79 | 1.6.1 | 获得用户反馈 |  | 3d | 2004-07-19 | 2004-07-21 | 77 | 0d | 项目管理办公室协调人; 项目管理办公室雇员分析人员 | 48h |
| 80 | 1.6.2 | 评估经验教训 |  | 1w | 2004-07-22 | 2004-07-28 | 79 | 0d | 项目管理办公室协调人; 项目管理办公室雇员分析人员 | 80h |
| 81 | 1.6.3 | 如果必要修改有关事项 |  | 1w | 2004-07-29 | 2004-08-04 | 80 | 0d | 项目管理办公室协调人; 项目管理办公室雇员分析人员 | 80h |
| 82 | 1.6.4 | 回顾完成 | milestone | 0d | 2004-08-04 | 2004-08-04 | 81 | 0d |  |  |
| 83 | 1.7 | 项目管理办公室模板完成 | milestone | 0d | 2004-08-04 | 2004-08-04 | 82 | 0d |  |  |
