# 软件本地化

Schedule from MS Project, 2004-01-01 to 2004-07-22.

## Calendars

- 标准: Mon-Fri 08:00-12:00, 13:00-17:00; Sat-Sun off.

## Resources

| Resource |
| --- |
| 管理人员 |
| 项目经理 |
| 分析人员 |
| 国际程序经理 |
| 翻译人员 |
| 本地化人员 |
| 技术审阅人员 |
| 本地化工程师 |

## Schedule

| ID | WBS | Task | Type | Duration | Start | Finish | Predecessors | Total slack | Resources | Work |
| --- | --- | --- | --- | --- | --- | --- | --- | --- | --- | --- |
| 1 | 1 | **产品本地化模板** |  | 146d | 2004-01-01 | 2004-07-22 |  | 0d |  | 3472h |
| 2 | 1.1 | **项目范围规划** |  | 25d | 2004-01-01 | 2004-02-04 |  | 0d |  | 240h |
| 3 | 1.1.1 | 审查业务案例 |  | 2d | 2004-01-01 | 2004-01-02 |  | 0d | 项目经理; 管理人员 | 32h |
| 4 | 1.1.2 | 估计项目任务(例如，数量、本地化详细信息和范围) |  | 1w | 2004-01-05 | 2004-01-09 | 3 | 0d | 项目经理 | 40h |
| 5 | 1.1.3 | 准备本地化规范(可行性、营销) |  | 2d | 2004-01-12 | 2004-01-13 | 4 | 0d | 项目经理 | 16h |
| 6 | 1.1.4 | 估计成本 |  | 3d | 2004-01-14 | 2004-01-16 | 5 | 0d | 项目经理 | 24h |
| 7 | 1.1.5 | 确定风险 |  | 2d | 2004-01-19 | 2004-01-20 | 6 | 0d | 项目经理 | 16h |
| 8 | 1.1.6 | 获得项目所需资金 |  | 1d | 2004-01-21 | 2004-01-21 | 7 | 0d | 管理人员 | 8h |
| 9 | 1.1.7 | 定义预备资源 |  | 1w | 2004-01-22 | 2004-01-28 | 8 | 0d | 项目经理 | 40h |
| 10 | 1.1.8 | 定义项目交流模式/方法 |  | 3d | 2004-01-22 | 2004-01-26 | 8 | 7d | 项目经理 | 24h |
| 11 | 1.1.9 | 获得核心资源 |  | 1w | 2004-01-29 | 2004-02-04 | 9 | 0d | 项目经理 | 40h |
| 12 | 1.1.10 | 项目范围规划完成 | milestone | 0d | 2004-02-04 | 2004-02-04 | 11, 10 | 0d |  |  |
| 13 | 1.2 | **分析/规划** |  | 38d | 2004-02-05 | 2004-03-29 |  | 0d |  | 1128h |
| 14 | 1.2.1 | 确定本地化资源(内部和外部) |  | 5d | 2004-02-05 | 2004-02-11 | 12 | 0d | 分析人员 | 40h |
| 15 | 1.2.2 | **确定要本地化的组件** |  | 5d | 2004-02-12 | 2004-02-18 |  | 0d | 分析人员 | 440h |
| 16 | 1.2.2.1 | **软件组件** |  | 5d | 2004-02-12 | 2004-02-18 |  | 0d |  | 80h |
| 17 | 1.2.2.1.1 | 安装程序 |  | 1w | 2004-02-12 | 2004-02-18 | 14 | 0d | 分析人员 | 40h |
| 18 | 1.2.2.1.2 | 用户界面 |  | 1w | 2004-02-12 | 2004-02-18 | 14 | 0d | 分析人员 | 40h |
| 19 | 1.2.2.2 | **用户帮助组件** |  | 5d | 2004-02-12 | 2004-02-18 |  | 0d |  | 80h |
| 20 | 1.2.2.2.1 | 联机帮助、文档 和常见问题回答(FAQ) |  | 1w | 2004-02-12 | 2004-02-18 | 14 | 0d | 分析人员 | 40h |
| 21 | 1.2.2.2.2 | 用户手册 |  | 1w | 2004-02-12 | 2004-02-18 | 14 | 0d | 分析人员 | 40h |
| 22 | 1.2.2.3 | **营销材料** |  | 5d | 2004-02-12 | 2004-02-18 |  | 0d |  | 120h |
| 23 | 1.2.2.3.1 | 封包 |  | 1w | 2004-02-12 | 2004-02-18 | 14 | 0d | 分析人员 | 40h |
| 24 | 1.2.2.3.2 | 小册子 |  | 1w | 2004-02-12 | 2004-02-18 | 14 | 0d | 分析人员 | 40h |
| 25 | 1.2.2.3.3 | Web 内容 |  | 1w | 2004-02-12 | 2004-02-18 | 14 | 0d | 分析人员 | 40h |

Notes:
- 15: 对于特定语言产品的本地化需要确定多种组件。我们提供有样例以帮助您确定这些组件。请注意每一种组件均可进一步扩展以更好地反映您的项目范围。

| ID | WBS | Task | Type | Duration | Start | Finish | Predecessors | Total slack | Free slack | Resources | Work |
| --- | --- | --- | --- | --- | --- | --- | --- | --- | --- | --- | --- |
| 26 | 1.2.2.4 | **辅助组件** |  | 5d | 2004-02-12 | 2004-02-18 |  | 0d |  |  | 120h |
| 27 | 1.2.2.4.1 | 宏 |  | 1w | 2004-02-12 | 2004-02-18 | 14 | 0d |  | 分析人员 | 40h |
| 28 | 1.2.2.4.2 | 加载项 |  | 1w | 2004-02-12 | 2004-02-18 | 14 | 0d |  | 分析人员 | 40h |
| 29 | 1.2.2.4.3 | 模板 |  | 1w | 2004-02-12 | 2004-02-18 | 14 | 0d |  | 分析人员 | 40h |
| 30 | 1.2.2.4.4 | 确定要本地化的组件完成 | milestone | 0d | 2004-02-18 | 2004-02-18 | 29, 28, 27, 25, 23, 21, 20, 17, 18, 24 | 0d |  |  |  |
| 31 | 1.2.3 | 确保文件的可本地化性 |  | 1w | 2004-02-19 | 2004-02-25 | 30 | 0d |  | 项目经理; 分析人员; 本地化工程师 | 120h |
| 32 | 1.2.4 | 定义本地化过程 |  | 2w | 2004-02-26 | 2004-03-10 | 31 | 0d |  | 项目经理; 分析人员; 本地化工程师 | 240h |
| 33 | 1.2.5 | 确定工具 |  | 5d | 2004-02-26 | 2004-03-03 | 31 | 3d | 0d | 本地化工程师; 分析人员 | 80h |
| 34 | 1.2.6 | 测试根据 |  | 2d | 2004-03-04 | 2004-03-05 | 33 | 3d |  | 本地化工程师 | 16h |
| 35 | 1.2.7 | 记录本地化过程 |  | 2d | 2004-03-11 | 2004-03-12 | 34, 32 | 0d |  | 本地化工程师; 分析人员 | 32h |
| 36 | 1.2.8 | 准备风险管理计划 |  | 3d | 2004-03-15 | 2004-03-17 | 32, 35 | 0d |  | 国际程序经理; 项目经理 | 48h |
| 37 | 1.2.9 | 定义交流程序 |  | 2d | 2004-03-18 | 2004-03-19 | 36 | 0.5d |  | 项目经理; 国际程序经理 | 32h |
| 38 | 1.2.10 | 确定时间限制 |  | 1d | 2004-03-18 | 2004-03-18 | 36 | 0d |  | 项目经理; 国际程序经理 | 16h |
| 39 | 1.2.11 | 确定关键里程碑 |  | 4h | 2004-03-19 | 2004-03-19 | 38 | 0d |  | 项目经理; 分析人员 | 8h |
| 40 | 1.2.12 | 确定交付期限 |  | 1d | 2004-03-19 | 2004-03-22 | 39 | 0d |  | 项目经理 | 8h |
| 41 | 1.2.13 | 获得相关批准以继续进行(例如，概念、时序表和预算) |  | 4h | 2004-03-22 | 2004-03-22 | 40, 37 | 0d |  | 管理人员; 项目经理 | 8h |
| 42 | 1.2.14 | 获得所需资源 |  | 1w | 2004-03-23 | 2004-03-29 | 41 | 0d |  | 项目经理 | 40h |
| 43 | 1.2.15 | 分析工作完成 | milestone | 0d | 2004-03-29 | 2004-03-29 | 42 | 0d |  |  |  |
| 44 | 1.3 | **产品** |  | 25d | 2004-03-30 | 2004-05-03 |  | 0d |  |  | 968h |
| 45 | 1.3.1 | **软件组件** |  | 11d | 2004-03-30 | 2004-04-13 |  | 3d |  |  | 128h |
| 46 | 1.3.1.1 | **本地化组件 - 安装程序** |  | 11d | 2004-03-30 | 2004-04-13 |  | 14d |  |  | 64h |
| 47 | 1.3.1.1.1 | 审阅确定的组件功能 |  | 1d | 2004-03-30 | 2004-03-30 | 43 | 14d | 0d | 本地化人员 | 8h |
| 48 | 1.3.1.1.2 | 本地化已确定的组件 |  | 1w | 2004-03-31 | 2004-04-06 | 47 | 14d | 0d | 本地化人员 | 40h |
| 49 | 1.3.1.1.3 | 基于质量保证(QA)反馈修改组件 |  | 2d | 2004-04-09 | 2004-04-12 | 102 | 14d | 0d | 本地化人员 | 16h |
| 50 | 1.3.1.1.4 | 本地化组件安装程序完成 | milestone | 0d | 2004-04-13 | 2004-04-13 | 103 | 21d | 0d |  |  |

Notes:
- 44: 根据您的流程的不同，开发和质量保证有可能是反复性的任务。在此模板中，这些任务只列出一次，但在必要时可复制并插入这些任务以更好地反映您的流程。

| ID | WBS | Task | Type | Duration | Start | Finish | Predecessors | Total slack | Free slack | Resources | Work |
| --- | --- | --- | --- | --- | --- | --- | --- | --- | --- | --- | --- |
| 51 | 1.3.1.2 | **本地化组件 - 用户界面** |  | 11d | 2004-03-30 | 2004-04-13 |  | 3d |  |  | 64h |
| 52 | 1.3.1.2.1 | 审阅确定的组件功能 |  | 1d | 2004-03-30 | 2004-03-30 | 43 | 3d | 0d | 本地化人员 | 8h |
| 53 | 1.3.1.2.2 | 本地化已确定的组件 |  | 1w | 2004-03-31 | 2004-04-06 | 52 | 3d | 0d | 本地化人员 | 40h |
| 54 | 1.3.1.2.3 | 基于 QA 反馈修改组件 |  | 2d | 2004-04-09 | 2004-04-12 | 105 | 3d | 0d | 本地化人员 | 16h |
| 55 | 1.3.1.2.4 | 本地化组件 - 用户界面完成 | milestone | 0d | 2004-04-13 | 2004-04-13 | 106 | 3d | 0d |  |  |
| 56 | 1.3.1.3 | 软件组件完成 | milestone | 0d | 2004-04-13 | 2004-04-13 | 55 | 3d | 0d |  |  |
| 57 | 1.3.2 | **用户帮助组件** |  | 11d | 2004-04-14 | 2004-04-28 |  | 3d |  |  | 128h |
| 58 | 1.3.2.1 | **本地化组件 - 联机帮助、文档和 FAQ** |  | 11d | 2004-04-14 | 2004-04-28 |  | 3d |  |  | 64h |
| 59 | 1.3.2.1.1 | 审阅确定的组件功能 |  | 1d | 2004-04-14 | 2004-04-14 | 56 | 3d | 0d | 本地化人员 | 8h |
| 60 | 1.3.2.1.2 | 本地化已确定的组件 |  | 1w | 2004-04-15 | 2004-04-21 | 59 | 3d | 0d | 本地化人员 | 40h |
| 61 | 1.3.2.1.3 | 基于 QA 反馈修改组件 |  | 2d | 2004-04-26 | 2004-04-27 | 108 | 3d | 0d | 本地化人员 | 16h |
| 62 | 1.3.2.1.4 | 本地化组件 - 联机帮助、文档和 FAQ 完成 | milestone | 0d | 2004-04-28 | 2004-04-28 | 109 | 10d | 0d |  |  |
| 63 | 1.3.2.2 | **本地化组件 - 用户手册** |  | 11d | 2004-04-14 | 2004-04-28 |  | 3d |  |  | 64h |
| 64 | 1.3.2.2.1 | 审阅确定的组件功能 |  | 1d | 2004-04-14 | 2004-04-14 | 56 | 3d | 0d | 本地化人员 | 8h |
| 65 | 1.3.2.2.2 | 本地化已确定的组件 |  | 1w | 2004-04-15 | 2004-04-21 | 64 | 3d | 0d | 本地化人员 | 40h |
| 66 | 1.3.2.2.3 | 基于 QA 反馈修改组件 |  | 2d | 2004-04-26 | 2004-04-27 | 111 | 3d | 0d | 本地化人员 | 16h |
| 67 | 1.3.2.2.4 | 本地化组件 - 用户手册 | milestone | 0d | 2004-04-28 | 2004-04-28 | 112 | 10d | 0d |  |  |
| 68 | 1.3.2.3 | 用户辅助组件完成 | milestone | 0d | 2004-04-28 | 2004-04-28 | 67 | 61d |  |  |  |
| 69 | 1.3.3 | **营销材料** |  | 22d | 2004-03-30 | 2004-04-28 |  | 3d |  |  | 256h |
| 70 | 1.3.3.1 | **本地化组件 - 营销材料** |  | 11d | 2004-03-30 | 2004-04-13 |  | 3d |  |  | 128h |
| 71 | 1.3.3.1.1 | 审阅确定的组件功能 |  | 1d | 2004-03-30 | 2004-03-30 | 43 | 3d | 0d | 本地化人员; 翻译人员 | 16h |
| 72 | 1.3.3.1.2 | 本地化已确定的组件 |  | 1w | 2004-03-31 | 2004-04-06 | 71 | 3d | 0d | 本地化人员; 翻译人员 | 80h |
| 73 | 1.3.3.1.3 | 基于 QA 反馈修改组件 |  | 2d | 2004-04-09 | 2004-04-12 | 114 | 3d | 0d | 本地化人员; 翻译人员 | 32h |
| 74 | 1.3.3.1.4 | 本地化组件营销材料完成 | milestone | 0d | 2004-04-13 | 2004-04-13 | 73, 115 | 3d | 0d |  |  |

| ID | WBS | Task | Type | Duration | Start | Finish | Predecessors | Total slack | Free slack | Resources | Work |
| --- | --- | --- | --- | --- | --- | --- | --- | --- | --- | --- | --- |
| 75 | 1.3.3.2 | **本地化组件 - Web 内容** |  | 11d | 2004-04-14 | 2004-04-28 |  | 3d |  |  | 128h |
| 76 | 1.3.3.2.1 | 审阅确定的组件功能 |  | 1d | 2004-04-14 | 2004-04-14 | 74 | 3d | 0d | 本地化人员; 翻译人员 | 16h |
| 77 | 1.3.3.2.2 | 本地化已确定的组件 |  | 1w | 2004-04-15 | 2004-04-21 | 76 | 3d | 0d | 本地化人员; 翻译人员 | 80h |
| 78 | 1.3.3.2.3 | 基于 QA 反馈修改组件 |  | 2d | 2004-04-26 | 2004-04-27 | 117 | 3d | 0d | 本地化人员; 翻译人员 | 32h |
| 79 | 1.3.3.2.4 | 本地化组件 - Web 内容 | milestone | 0d | 2004-04-28 | 2004-04-28 | 78, 118 | 10d | 0d |  |  |
| 80 | 1.3.3.3 | 市场组件完成 | milestone | 0d | 2004-04-28 | 2004-04-28 | 79 | 61d |  |  |  |
| 81 | 1.3.4 | **辅助组件** |  | 25d | 2004-03-30 | 2004-05-03 |  | 0d |  |  | 456h |
| 82 | 1.3.4.1 | **本地化组件 - 宏** |  | 11d | 2004-03-30 | 2004-04-13 |  | 0d |  |  | 128h |
| 83 | 1.3.4.1.1 | 审阅确定的组件功能 |  | 1d | 2004-03-30 | 2004-03-30 | 43 | 0d |  | 本地化人员; 翻译人员 | 16h |
| 84 | 1.3.4.1.2 | 本地化已确定的组件 |  | 1w | 2004-03-31 | 2004-04-06 | 83 | 0d |  | 本地化人员; 翻译人员 | 80h |
| 85 | 1.3.4.1.3 | 基于 QA 反馈修改组件 |  | 2d | 2004-04-09 | 2004-04-12 | 120 | 0d |  | 本地化人员; 翻译人员 | 32h |
| 86 | 1.3.4.1.4 | 本地化组件 - 宏 | milestone | 0d | 2004-04-13 | 2004-04-13 | 121 | 0d |  |  |  |
| 87 | 1.3.4.2 | **本地化组件 - 加载项** |  | 11d | 2004-04-14 | 2004-04-28 |  | 0d |  |  | 128h |
| 88 | 1.3.4.2.1 | 审阅确定的组件功能 |  | 1d | 2004-04-14 | 2004-04-14 | 86 | 0d |  | 本地化人员; 翻译人员 | 16h |
| 89 | 1.3.4.2.2 | 本地化已确定的组件 |  | 1w | 2004-04-15 | 2004-04-21 | 88 | 0d |  | 本地化人员; 翻译人员 | 80h |
| 90 | 1.3.4.2.3 | 基于 QA 反馈修改组件 |  | 2d | 2004-04-26 | 2004-04-27 | 123 | 0d |  | 本地化人员; 翻译人员 | 32h |
| 91 | 1.3.4.2.4 | 本地化组件 - 加载项 | milestone | 0d | 2004-04-28 | 2004-04-28 | 124 | 0d |  |  |  |
| 92 | 1.3.4.3 | **本地化组件 - 模板** |  | 11d | 2004-03-30 | 2004-04-13 |  | 11d |  |  | 128h |
| 93 | 1.3.4.3.1 | 审阅确定的组件功能 |  | 1d | 2004-03-30 | 2004-03-30 | 43 | 11d | 0d | 本地化人员; 翻译人员 | 16h |
| 94 | 1.3.4.3.2 | 本地化已确定的组件 |  | 1w | 2004-03-31 | 2004-04-06 | 93 | 11d | 0d | 本地化人员; 翻译人员 | 80h |
| 95 | 1.3.4.3.3 | 基于 QA 反馈修改组件 |  | 2d | 2004-04-09 | 2004-04-12 | 126 | 11d | 0d | 本地化人员; 翻译人员 | 32h |
| 96 | 1.3.4.3.4 | 本地化组件 - 模板 | milestone | 0d | 2004-04-13 | 2004-04-13 | 127 | 11d | 0d |  |  |
| 97 | 1.3.4.4 | 辅助组件完成 | milestone | 0d | 2004-04-28 | 2004-04-28 | 91 | 0d |  |  |  |
| 98 | 1.3.4.5 | 验证最终发布的软件的有效性(取决于开发周期) |  | 3d | 2004-04-29 | 2004-05-03 | 97, 96 | 0d |  | 项目经理; 国际程序经理; 管理人员 | 72h |
| 99 | 1.3.5 | 开发工作完毕 | milestone | 0d | 2004-05-03 | 2004-05-03 | 97, 96, 98 | 8d |  |  |  |

Notes:
- 98: 此模板假设在进行本地化之前代码部分已完成。如果您的项目在进行本地化之前没有完成代码部分，您必须评估在代码完成时如何合并正在进行的更改周期中的更改。

| ID | WBS | Task | Duration | Start | Finish | Predecessors | Total slack | Free slack | Resources | Work |
| --- | --- | --- | --- | --- | --- | --- | --- | --- | --- | --- |
| 100 | 1.4 | **质量保证** | 27d | 2004-04-07 | 2004-05-13 |  | 0d |  |  | 432h |
| 101 | 1.4.1 | **本地化组件 - 安装程序** | 5d | 2004-04-07 | 2004-04-13 |  | 14d |  |  | 24h |
| 102 | 1.4.1.1 | 测试组件 - 安装程序 | 2d | 2004-04-07 | 2004-04-08 | 48 | 14d | 0d | 技术审阅人员 | 16h |
| 103 | 1.4.1.2 | QA 检查周期 | 1d | 2004-04-13 | 2004-04-13 | 49 | 14d | 0d | 技术审阅人员 | 8h |
| 104 | 1.4.2 | **本地化组件 - 用户界面** | 5d | 2004-04-07 | 2004-04-13 |  | 3d |  |  | 24h |
| 105 | 1.4.2.1 | 测试组件 - 用户界面 | 2d | 2004-04-07 | 2004-04-08 | 53 | 3d | 0d | 技术审阅人员 | 16h |
| 106 | 1.4.2.2 | QA 检查周期 | 1d | 2004-04-13 | 2004-04-13 | 54 | 3d | 0d | 技术审阅人员 | 8h |
| 107 | 1.4.3 | **本地化组件 - 联机帮助、文档和 FAQ** | 5d | 2004-04-22 | 2004-04-28 |  | 3d |  |  | 24h |
| 108 | 1.4.3.1 | 测试组件 - 联机帮助、文档和 FAQ | 2d | 2004-04-22 | 2004-04-23 | 60 | 3d | 0d | 技术审阅人员 | 16h |
| 109 | 1.4.3.2 | QA 检查周期 | 1d | 2004-04-28 | 2004-04-28 | 61 | 3d | 0d | 技术审阅人员 | 8h |
| 110 | 1.4.4 | **本地化组件 - 用户手册** | 5d | 2004-04-22 | 2004-04-28 |  | 3d |  |  | 24h |
| 111 | 1.4.4.1 | 测试组件 - 用户手册 | 2d | 2004-04-22 | 2004-04-23 | 65 | 3d | 0d | 技术审阅人员 | 16h |
| 112 | 1.4.4.2 | QA 检查周期 | 1d | 2004-04-28 | 2004-04-28 | 66 | 3d | 0d | 技术审阅人员 | 8h |
| 113 | 1.4.5 | **本地化组件 - 营销材料** | 5d | 2004-04-07 | 2004-04-13 |  | 3d |  |  | 24h |
| 114 | 1.4.5.1 | 测试组件 - 营销材料 | 2d | 2004-04-07 | 2004-04-08 | 72 | 3d | 0d | 技术审阅人员 | 16h |
| 115 | 1.4.5.2 | QA 检查周期 | 1d | 2004-04-13 | 2004-04-13 | 73 | 3d | 0d | 技术审阅人员 | 8h |
| 116 | 1.4.6 | **本地化组件 - Web 内容** | 5d | 2004-04-22 | 2004-04-28 |  | 3d |  |  | 24h |
| 117 | 1.4.6.1 | 测试组件 - Web 内容 | 2d | 2004-04-22 | 2004-04-23 | 77 | 3d | 0d | 技术审阅人员 | 16h |
| 118 | 1.4.6.2 | QA 检查周期 | 1d | 2004-04-28 | 2004-04-28 | 78 | 3d | 0d | 技术审阅人员 | 8h |
| 119 | 1.4.7 | **本地化组件 - 宏** | 5d | 2004-04-07 | 2004-04-13 |  | 0d |  |  | 24h |
| 120 | 1.4.7.1 | 测试组件 - 宏 | 2d | 2004-04-07 | 2004-04-08 | 84 | 0d |  | 技术审阅人员 | 16h |
| 121 | 1.4.7.2 | QA 检查周期 | 1d | 2004-04-13 | 2004-04-13 | 85 | 0d |  | 技术审阅人员 | 8h |
| 122 | 1.4.8 | **本地化组件 - 加载项** | 5d | 2004-04-22 | 2004-04-28 |  | 0d |  |  | 24h |
| 123 | 1.4.8.1 | 测试组件 - 加载项 | 2d | 2004-04-22 | 2004-04-23 | 89 | 0d |  | 技术审阅人员 | 16h |
| 124 | 1.4.8.2 | QA 检查周期 | 1d | 2004-04-28 | 2004-04-28 | 90 | 0d |  | 技术审阅人员 | 8h |

| ID | WBS | Task | Type | Duration | Start | Finish | Predecessors | Total slack | Free slack | Resources | Work |
| --- | --- | --- | --- | --- | --- | --- | --- | --- | --- | --- | --- |
| 125 | 1.4.9 | **本地化组件 - 模板** |  | 5d | 2004-04-07 | 2004-04-13 |  | 11d |  |  | 24h |
| 126 | 1.4.9.1 | 测试组件- 模板 |  | 2d | 2004-04-07 | 2004-04-08 | 94 | 11d | 0d | 技术审阅人员 | 16h |
| 127 | 1.4.9.2 | QA 检查周期 |  | 1d | 2004-04-13 | 2004-04-13 | 95 | 11d | 0d | 技术审阅人员 | 8h |
| 128 | 1.4.10 | **整体测试** |  | 7d | 2004-05-04 | 2004-05-12 |  | 0d |  |  | 56h |
| 129 | 1.4.10.1 | 完全产品测试 |  | 1w | 2004-05-04 | 2004-05-10 | 127, 124, 121, 118, 115, 112, 109, 106, 103, 98 | 0d |  | 技术审阅人员 | 40h |
| 130 | 1.4.10.2 | QA 检查周期 |  | 2d | 2004-05-11 | 2004-05-12 | 129 | 0d |  | 技术审阅人员 | 16h |
| 131 | 1.4.11 | **出资人审阅** |  | 22d | 2004-04-14 | 2004-05-13 |  | 0d |  |  | 160h |
| 132 | 1.4.11.1 | 检查组件 - 安装程序 |  | 1d | 2004-04-14 | 2004-04-14 | 50 | 21d |  | 管理人员; 国际程序经理 | 16h |
| 133 | 1.4.11.2 | 检查组件 - 用户界面 |  | 1d | 2004-04-14 | 2004-04-14 | 55 | 21d |  | 管理人员; 国际程序经理 | 16h |
| 134 | 1.4.11.3 | 检查组件 - 联机帮助、文档和 FAQ |  | 1d | 2004-04-29 | 2004-04-29 | 62 | 10d |  | 管理人员; 国际程序经理 | 16h |
| 135 | 1.4.11.4 | 检查组件 - 用户手册 |  | 1d | 2004-04-29 | 2004-04-29 | 67 | 10d |  | 管理人员; 国际程序经理 | 16h |
| 136 | 1.4.11.5 | 检查组件 - 营销材料 |  | 1d | 2004-04-14 | 2004-04-14 | 74 | 21d |  | 管理人员; 国际程序经理 | 16h |
| 137 | 1.4.11.6 | 检查组件 - Web 内容 |  | 1d | 2004-04-29 | 2004-04-29 | 79 | 10d |  | 管理人员; 国际程序经理 | 16h |
| 138 | 1.4.11.7 | 检查组件 - 宏 |  | 1d | 2004-04-14 | 2004-04-14 | 86 | 21d |  | 管理人员; 国际程序经理 | 16h |
| 139 | 1.4.11.8 | 检查组件 - 加载项 |  | 1d | 2004-04-29 | 2004-04-29 | 91 | 10d |  | 管理人员; 国际程序经理 | 16h |
| 140 | 1.4.11.9 | 检查组件 - 模板 |  | 1d | 2004-04-14 | 2004-04-14 | 96 | 21d |  | 管理人员; 国际程序经理 | 16h |
| 141 | 1.4.11.10 | 审阅集成产品 |  | 1d | 2004-05-13 | 2004-05-13 | 130 | 0d |  | 管理人员; 国际程序经理 | 16h |
| 142 | 1.4.12 | 质量保证完成 | milestone | 0d | 2004-05-13 | 2004-05-13 | 132, 133, 134, 135, 136, 137, 138, 139, 140, 141 | 0d |  |  |  |
| 143 | 1.5 | **Beta 测试** |  | 33d | 2004-05-14 | 2004-06-29 |  | 0d |  |  | 568h |
| 144 | 1.5.1 | 分发完成的产品 |  | 3d | 2004-05-14 | 2004-05-18 | 99, 142 | 0d |  | 管理人员; 国际程序经理 | 48h |
| 145 | 1.5.2 | 获得反馈 |  | 4w | 2004-05-19 | 2004-06-15 | 144 | 0d |  | 管理人员; 国际程序经理 | 320h |
| 146 | 1.5.3 | 修改 |  | 1w | 2004-06-16 | 2004-06-22 | 145 | 0d |  | 管理人员; 国际程序经理; 本地化工程师 | 120h |
| 147 | 1.5.4 | 测试 |  | 1w | 2004-06-23 | 2004-06-29 | 146 | 0d |  | 管理人员; 国际程序经理 | 80h |
| 148 | 1.5.5 | 完成 | milestone | 0d | 2004-06-29 | 2004-06-29 | 147 | 0d |  |  |  |

| ID | WBS | Task | Type | Duration | Start | Finish | Predecessors | Total slack | Resources | Work |
| --- | --- | --- | --- | --- | --- | --- | --- | --- | --- | --- |
| 149 | 1.6 | **项目后审阅** |  | 17d | 2004-06-30 | 2004-07-22 |  | 0d |  | 136h |
| 150 | 1.6.1 | 审阅项目信息 |  | 1w | 2004-06-30 | 2004-07-06 | 148 | 0d | 项目经理 | 40h |
| 151 | 1.6.2 | 最终成本分析 |  | 3d | 2004-07-07 | 2004-07-09 | 150 | 0d | 项目经理 | 24h |
| 152 | 1.6.3 | 分析性能 |  | 3d | 2004-07-12 | 2004-07-14 | 151 | 0d | 项目经理 | 24h |
| 153 | 1.6.4 | 档案文件 |  | 2d | 2004-07-15 | 2004-07-16 | 152 | 0d | 项目经理 | 16h |
| 154 | 1.6.5 | 将经验教训记录存档 |  | 2d | 2004-07-19 | 2004-07-20 | 153 | 0d | 项目经理 | 16h |
| 155 | 1.6.6 | 分发给工作组成员 |  | 2d | 2004-07-21 | 2004-07-22 | 154 | 0d | 项目经理 | 16h |
| 156 | 1.6.7 | 项目后审阅完成 | milestone | 0d | 2004-07-22 | 2004-07-22 | 155 | 0d |  |  |
