# Microsoft Active Directory 2003 部署

Schedule from MS Project, 2003-09-15 to 2004-02-24.

## Calendars

- 标准: Mon-Fri 08:00-12:00, 13:00-17:00; Sat-Sun off.

## Resources

| Resource |
| --- |
| 项目经理 |
| 基础结构管理员 |
| 台式计算机管理员 |
| 网络管理员 |
| 测试/质保负责人 |
| 用户教育/培训负责人 |
| 后勤管理负责人 |
| 风险承担者 |

## Schedule

| ID | WBS | Task | Type | Duration | Start | Finish | Predecessors | Total slack | Free slack | Resources | Work |
| --- | --- | --- | --- | --- | --- | --- | --- | --- | --- | --- | --- |
| 1 | 1 | **Microsoft Active Directory 部署** |  | 116.25d | 2003-09-15 | 2004-02-24 |  | 0d |  |  | 4396h |
| 2 | 1.1 | **构想** |  | 12d | 2003-09-15 | 2003-09-30 |  | 0d |  |  | 120h |
| 3 | 1.1.1 | 评估公司商务目标 |  | 3d | 2003-09-15 | 2003-09-17 |  | 0d |  | 风险承担者 | 24h |
| 4 | 1.1.2 | 确定技术目标 |  | 3d | 2003-09-18 | 2003-09-22 | 3 | 110.25d |  | 风险承担者 | 24h |
| 5 | 1.1.3 | 阐明初步成本/利润分析 |  | 3d | 2003-09-18 | 2003-09-22 | 3 | 0d |  | 风险承担者 | 24h |
| 6 | 1.1.4 | 确定项目范围(实验室、试生产、国际/地区部署、共存策略等) |  | 2d | 2003-09-23 | 2003-09-24 | 5 | 0d |  | 风险承担者 | 16h |
| 7 | 1.1.5 | 确定主要里程碑 |  | 2d | 2003-09-25 | 2003-09-26 | 6 | 0d |  | 风险承担者 | 16h |
| 8 | 1.1.6 | 确保执行所需的赞助/投资 |  | 1d | 2003-09-29 | 2003-09-29 | 7 | 0d |  | 风险承担者 | 8h |
| 9 | 1.1.7 | 编写高级管理人员主要利润演示文稿 |  | 1d | 2003-09-30 | 2003-09-30 | 8 | 0d |  | 项目经理 | 8h |
| 10 | 1.1.8 | 完成构想 | milestone | 0d | 2003-09-30 | 2003-09-30 | 9 | 0d |  |  |  |
| 11 | 1.2 | **规划** |  | 100.25d | 2003-10-01 | 2004-02-18 |  | 0d |  |  | 2004h |
| 12 | 1.2.1 | **召集项目组/定义角色** |  | 2d | 2003-10-01 | 2003-10-02 |  | 0d |  |  | 40h |
| 13 | 1.2.1.1 | 指派/定义项目经理 |  | 4h | 2003-10-01 | 2003-10-01 | 10 | 103.75d |  | 风险承担者 | 4h |
| 14 | 1.2.1.2 | 指派/定义基础结构管理员 |  | 4h | 2003-10-01 | 2003-10-01 | 10 | 103.75d |  | 项目经理 | 4h |
| 15 | 1.2.1.3 | 指派/定义台式计算机管理员 |  | 4h | 2003-10-01 | 2003-10-01 | 10 | 103.75d |  | 项目经理 | 4h |
| 16 | 1.2.1.4 | 指派/定义网络管理员 |  | 4h | 2003-10-01 | 2003-10-01 | 10 | 103.75d |  | 项目经理 | 4h |
| 17 | 1.2.1.5 | 指派/定义测试质量安全组 |  | 4h | 2003-10-01 | 2003-10-01 | 10 | 103.75d |  | 项目经理 | 4h |
| 18 | 1.2.1.6 | 指派/定义用户教育/培训负责人 |  | 4h | 2003-10-01 | 2003-10-01 | 10 | 103.75d |  | 项目经理 | 4h |
| 19 | 1.2.1.7 | 指派/定义后勤管理负责人 |  | 4h | 2003-10-01 | 2003-10-01 | 10 | 0d |  | 项目经理 | 4h |
| 20 | 1.2.1.8 | 建立子组角色和责任(例如，基础结构、安全、服务器) |  | 12h | 2003-10-01 | 2003-10-02 | 19 | 0d |  | 项目经理 | 12h |
| 21 | 1.2.1.9 | 完成召集项目工作组/定义角色 | milestone | 0d | 2003-10-02 | 2003-10-02 | 20 | 99.25d | 0d |  |  |
| 22 | 1.2.2 | **培训 Active Directory 部署工作组** |  | 3d | 2003-10-03 | 2003-10-07 |  | 99.25d |  |  | 24h |
| 23 | 1.2.2.1 | 对工作组进行 Windows Server 2003、Active Directory 和 Exchange Server 培训 |  | 3d | 2003-10-03 | 2003-10-07 | 21 | 99.25d | 0d | 用户教育/培训负责人 | 24h |
| 24 | 1.2.2.2 | 完成培训 Active Directory 部署工作组 | milestone | 0d | 2003-10-07 | 2003-10-07 | 23 | 99.25d |  |  |  |

Notes:
- 1: Microsoft Active Directory 是用于 Windows Server 2003 的目录服务。Active Directory 为您的技术基础结构提供基本组块。此模板将指导您构建新目录或从现有域模型或目录进行升级。 / 有关此模板中的每一节的更多信息，请参阅模板帮助。
- 2: 计划部署的第一步是定义项目目标。在此步骤中，确定您想要获得的特定商务目标以及 Active Directory 帮助您获得这些目标的方法。这个策略还将帮助您选择最有用的 Active Directory 功能。
- 11: 在此阶段，您应该为想要部署的每个 Active Directory 功能制定一个特定的功能设计说明。当您测试不同的配置以决定如何使用 Active Directory 功能来满足项目目标时，在此阶段测试实验室将变得至关重要。

| ID | WBS | Task | Type | Duration | Start | Finish | Predecessors | Total slack | Free slack | Resources | Work |
| --- | --- | --- | --- | --- | --- | --- | --- | --- | --- | --- | --- |
| 25 | 1.2.3 | **详细描述当前数据处理环境** |  | 6d | 2003-10-03 | 2003-10-10 |  | 0d |  |  | 264h |
| 26 | 1.2.3.1 | 详细描述商务组织要求 |  | 3d | 2003-10-03 | 2003-10-07 | 20 | 0d |  | 项目经理 | 24h |
| 27 | 1.2.3.2 | 详细描述地理方面的考虑因素 |  | 3d | 2003-10-03 | 2003-10-07 | 20 | 0d |  | 项目经理 | 24h |
| 28 | 1.2.3.3 | 详细描述信息体系结构/流程 |  | 3d | 2003-10-03 | 2003-10-07 | 20 | 0d |  | 基础结构管理员 | 24h |
| 29 | 1.2.3.4 | 详细描述应用程序要求 |  | 3d | 2003-10-03 | 2003-10-07 | 20 | 0d |  | 基础结构管理员 | 24h |
| 30 | 1.2.3.5 | 详细描述技术体系结构 |  | 3d | 2003-10-03 | 2003-10-07 | 20 | 0d |  | 基础结构管理员 | 24h |
| 31 | 1.2.3.6 | 详细描述服务器硬件和软件清单 |  | 3d | 2003-10-03 | 2003-10-07 | 20 | 0d |  | 基础结构管理员 | 24h |
| 32 | 1.2.3.7 | 详细描述客户端硬件和软件清单 |  | 3d | 2003-10-03 | 2003-10-07 | 20 | 0d |  | 台式计算机管理员 | 24h |
| 33 | 1.2.3.8 | 详细描述当前和未来的信息技术标准 |  | 3d | 2003-10-03 | 2003-10-07 | 20 | 0d |  | 基础结构管理员 | 24h |
| 34 | 1.2.3.9 | 详细描述当前管理/服务传输模型 |  | 3d | 2003-10-03 | 2003-10-07 | 20 | 0d |  | 基础结构管理员 | 24h |
| 35 | 1.2.3.10 | 记录当前数据处理环境 |  | 3d | 2003-10-08 | 2003-10-10 | 26, 27, 28, 29, 30, 31, 32, 33, 34 | 0d |  | 基础结构管理员; 台式计算机管理员 | 48h |
| 36 | 1.2.3.11 | 详细描述当前数据处理环境完毕 | milestone | 0d | 2003-10-10 | 2003-10-10 | 35 | 0d |  |  |  |
| 37 | 1.2.4 | **建立初步设计目标** |  | 7d | 2003-10-13 | 2003-10-21 |  | 0d |  |  | 56h |
| 38 | 1.2.4.1 | 将构想/范围映射到当前数据处理环境 |  | 5d | 2003-10-13 | 2003-10-17 | 36 | 0d |  | 基础结构管理员 | 40h |
| 39 | 1.2.4.2 | 与执行赞助人一起审阅初步设计目标 |  | 2d | 2003-10-20 | 2003-10-21 | 38 | 0d |  | 基础结构管理员 | 16h |
| 40 | 1.2.4.3 | 完成建立初步设计目标 | milestone | 0d | 2003-10-21 | 2003-10-21 | 39 | 0d |  |  |  |
| 41 | 1.2.5 | **确定共存策略** |  | 3d | 2003-10-22 | 2003-10-24 |  | 81.25d |  |  | 24h |
| 42 | 1.2.5.1 | 确定公司内部的互操作性问题(例如，支持的操作系统、拓扑、协议) |  | 3d | 2003-10-22 | 2003-10-24 | 40 | 81.25d | 0d | 基础结构管理员 | 24h |
| 43 | 1.2.5.2 | 共存策略工作确定完毕 | milestone | 0d | 2003-10-24 | 2003-10-24 | 42 | 81.25d | 0d |  |  |
| 44 | 1.2.6 | **建立测试实验室环境** |  | 10.25d | 2003-10-22 | 2003-11-05 |  | 0d |  |  | 184h |
| 45 | 1.2.6.1 | 审阅当前配置文档并且定义实验室模型 |  | 1d | 2003-10-22 | 2003-10-22 | 40 | 0d |  | 基础结构管理员 | 8h |
| 46 | 1.2.6.2 | 选择一个或多个实验室位置 |  | 2h | 2003-10-23 | 2003-10-23 | 45 | 0d |  | 后勤管理负责人 | 2h |
| 47 | 1.2.6.3 | 确定实验室空间和环境要求 |  | 4h | 2003-10-23 | 2003-10-23 | 45 | 87.75d |  | 后勤管理负责人 | 4h |
| 48 | 1.2.6.4 | 确定电源和网络连接要求 |  | 4h | 2003-10-23 | 2003-10-23 | 45 | 87.75d |  | 后勤管理负责人 | 4h |
| 49 | 1.2.6.5 | 设计和记录实验室的理想化和实际配置 |  | 1d | 2003-10-23 | 2003-10-23 | 45 | 87.25d |  | 后勤管理负责人 | 8h |
| 50 | 1.2.6.6 | 确定硬件要求 |  | 1d | 2003-10-23 | 2003-10-23 | 45 | 87.25d |  | 后勤管理负责人 | 8h |
| 51 | 1.2.6.7 | 确定软件要求，包括商务应用软件和工具 |  | 1d | 2003-10-23 | 2003-10-23 | 45 | 87.25d |  | 网络管理员 | 8h |
| 52 | 1.2.6.8 | 确定实验室人员 |  | 4h | 2003-10-23 | 2003-10-23 | 45 | 87.75d |  | 后勤管理负责人 | 4h |
| 53 | 1.2.6.9 | 确定数据库要求 |  | 1d | 2003-10-23 | 2003-10-23 | 45 | 87.25d |  | 网络管理员 | 8h |
| 54 | 1.2.6.10 | 确定布线和网络连接计划 |  | 4h | 2003-10-23 | 2003-10-23 | 46 | 87.5d |  | 网络管理员 | 4h |
| 55 | 1.2.6.11 | 获得硬件，包括电缆和软件 |  | 2d | 2003-10-23 | 2003-10-27 | 46 | 86d |  | 网络管理员 | 16h |
| 56 | 1.2.6.12 | 获得工作区设备(例如，办公桌、椅子、白板、软木板、灯、电话和搁板) |  | 2d | 2003-10-23 | 2003-10-27 | 46 | 86d |  | 后勤管理负责人 | 16h |
| 57 | 1.2.6.13 | 建立和配置网络 |  | 2d | 2003-10-23 | 2003-10-27 | 46 | 0d |  | 网络管理员 | 16h |
| 58 | 1.2.6.14 | 测试网络连通性 |  | 4h | 2003-10-27 | 2003-10-27 | 57 | 85.5d |  | 网络管理员 | 4h |
| 59 | 1.2.6.15 | 建立和配置服务器 |  | 1d | 2003-10-27 | 2003-10-28 | 57 | 0d |  | 网络管理员 | 8h |
| 60 | 1.2.6.16 | 安装应用程序并在服务器上建立数据库 |  | 1d | 2003-10-28 | 2003-10-29 | 59 | 2d |  | 网络管理员 | 8h |
| 61 | 1.2.6.17 | 安装测试和管理工具 |  | 4h | 2003-10-28 | 2003-10-28 | 59 | 2.5d |  | 网络管理员 | 4h |
| 62 | 1.2.6.18 | 建立和配置客户机 |  | 2d | 2003-10-28 | 2003-10-30 | 59 | 0d |  | 台式计算机管理员 | 16h |
| 63 | 1.2.6.19 | 在客户机上安装应用程序 |  | 1d | 2003-10-30 | 2003-10-31 | 62 | 0d |  | 台式计算机管理员 | 8h |
| 64 | 1.2.6.20 | 测试所有实验室组件 |  | 1d | 2003-10-31 | 2003-11-03 | 60, 61, 63 | 0d |  | 测试/质保负责人 | 8h |
| 65 | 1.2.6.21 | 指派实验室管理人员 |  | 2h | 2003-11-03 | 2003-11-03 | 64 | 80.75d |  | 项目经理 | 2h |
| 66 | 1.2.6.22 | 定义实验室的改动控制过程 |  | 4h | 2003-11-03 | 2003-11-03 | 64 | 80.5d |  | 项目经理 | 4h |
| 67 | 1.2.6.23 | 创建、测试和记录实验室恢复过程 |  | 2d | 2003-11-03 | 2003-11-05 | 64 | 0d |  | 基础结构管理员 | 16h |
| 68 | 1.2.6.24 | 实验室环境建立测试完毕 | milestone | 0d | 2003-11-05 | 2003-11-05 | 67 | 0d |  |  |  |

| ID | WBS | Task | Type | Duration | Start | Finish | Predecessors | Total slack | Free slack | Resources | Work |
| --- | --- | --- | --- | --- | --- | --- | --- | --- | --- | --- | --- |
| 69 | 1.2.7 | **进行风险评估** |  | 5d | 2003-10-27 | 2003-10-31 |  | 81.25d |  |  | 48h |
| 70 | 1.2.7.1 | 确定关键的应用程序 |  | 1d | 2003-10-27 | 2003-10-27 | 43 | 81.25d | 0d | 基础结构管理员 | 8h |
| 71 | 1.2.7.2 | 确定并分析潜在风险 |  | 2d | 2003-10-28 | 2003-10-29 | 70 | 81.25d | 0d | 项目经理 | 16h |
| 72 | 1.2.7.3 | 量化风险的潜在影响 |  | 1d | 2003-10-30 | 2003-10-30 | 71 | 82.25d |  | 项目经理 | 8h |
| 73 | 1.2.7.4 | 详细描述增加过程 |  | 1d | 2003-10-30 | 2003-10-30 | 71 | 81.25d | 0d | 项目经理 | 8h |
| 74 | 1.2.7.5 | 记录风险评估 |  | 1d | 2003-10-31 | 2003-10-31 | 73 | 81.25d | 0d | 项目经理 | 8h |
| 75 | 1.2.7.6 | 完成执行风险评估 | milestone | 0d | 2003-10-31 | 2003-10-31 | 74 | 81.25d |  |  |  |
| 76 | 1.2.8 | **定义通讯策略** |  | 4d | 2003-10-22 | 2003-10-27 |  | 85.25d |  |  | 48h |
| 77 | 1.2.8.1 | 定义各个阶段的通讯策略 |  | 1d | 2003-10-22 | 2003-10-22 | 40 | 88.25d |  | 用户教育/培训负责人 | 8h |
| 78 | 1.2.8.2 | 定义听众 |  | 1d | 2003-10-22 | 2003-10-22 | 40 | 88.25d |  | 用户教育/培训负责人 | 8h |
| 79 | 1.2.8.3 | 定义通讯传输机制 |  | 1d | 2003-10-22 | 2003-10-22 | 40 | 85.25d | 0d | 用户教育/培训负责人 | 8h |
| 80 | 1.2.8.4 | 建立通讯时间表 |  | 1d | 2003-10-23 | 2003-10-23 | 79 | 85.25d | 0d | 用户教育/培训负责人 | 8h |
| 81 | 1.2.8.5 | 记录通讯策略/标准 |  | 2d | 2003-10-24 | 2003-10-27 | 80 | 85.25d | 0d | 用户教育/培训负责人 | 16h |
| 82 | 1.2.8.6 | 完成定义通信策略 | milestone | 0d | 2003-10-27 | 2003-10-27 | 81 | 85.25d |  |  |  |
| 83 | 1.2.9 | **定义教育/培训策略** |  | 5d | 2003-10-22 | 2003-10-28 |  | 5.25d |  |  | 40h |
| 84 | 1.2.9.1 | 为部署人口统计定义教育策略(管理员、技术支持、用户) |  | 1d | 2003-10-22 | 2003-10-22 | 40 | 5.25d | 0d | 用户教育/培训负责人 | 8h |
| 85 | 1.2.9.2 | 定义教育传输机制 |  | 1d | 2003-10-23 | 2003-10-23 | 84 | 5.25d | 0d | 用户教育/培训负责人 | 8h |
| 86 | 1.2.9.3 | 按阶段建立教育时间表 |  | 2d | 2003-10-24 | 2003-10-27 | 85 | 5.25d | 0d | 用户教育/培训负责人 | 16h |
| 87 | 1.2.9.4 | 记录教育策略/标准 |  | 1d | 2003-10-28 | 2003-10-28 | 86 | 5.25d | 0d | 用户教育/培训负责人 | 8h |
| 88 | 1.2.9.5 | 完成定义教育/培训策略 | milestone | 0d | 2003-10-28 | 2003-10-28 | 87 | 5.25d |  |  |  |
| 89 | 1.2.10 | **规划 Active Directory 部署** |  | 40d | 2003-11-05 | 2003-12-31 | 88, 68 | 0d |  |  | 492h |
| 90 | 1.2.10.1 | **确定 Active Directory 和域名称空间** |  | 28.5d | 2003-11-05 | 2003-12-15 |  | 0d |  |  | 312h |
| 91 | 1.2.10.1.1 | 将业务目标映射到 Active Directory 功能 |  | 3d | 2003-11-05 | 2003-11-10 |  | 0d |  | 基础结构管理员 | 24h |
| 92 | 1.2.10.1.2 | **设计 Active Directory 目录林计划** |  | 7d | 2003-11-10 | 2003-11-19 |  | 0d |  |  | 80h |
| 93 | 1.2.10.1.2.1 | 确定网络中的目录林数目 |  | 2d | 2003-11-10 | 2003-11-12 | 91 | 23.5d |  | 基础结构管理员 | 16h |
| 94 | 1.2.10.1.2.2 | 定义目录林更改控制策略 |  | 2d | 2003-11-10 | 2003-11-12 | 91 | 0d |  | 基础结构管理员 | 16h |

Notes:
- 90: Active Directory 结构和域名系统(DNS)，以及 WINS、DHCP、网络协议、文件、打印、数据流媒体以及其他带宽密集的应用程序必须被设计成适合商务的需要和信息技术(IT)的性能。 / 如果您的商务中包含大量的附属和漫游或远程访问的用户，那么需要考虑组织单位、组策略、安全以及智能镜像技术。如果要提供安全的 Intranet 或 Extranet 功能，那么 IPSec 和公钥基础结构(PKI)将作为重要组件来设计。 / 如果您正在将 Windows XP Professional 配置为台式计算机和膝上型电脑中的主要操作系统，那么您需要考虑安装选项、多语言能力、安全、Active Directory，以及其他更改和配置管理技术。 / 最后，如果您正在不同种类的环境(不是 Windows XP 的其他网络操作系统)下工作，那么还需要考虑互操作性和共存选项。

| ID | WBS | Task | Duration | Start | Finish | Predecessors | Total slack | Resources | Work |
| --- | --- | --- | --- | --- | --- | --- | --- | --- | --- |
| 95 | 1.2.10.1.2.3 | **记录部署后对目录林进行更改的影响因素** | 4d | 2003-11-12 | 2003-11-18 |  | 0d |  | 32h |
| 96 | 1.2.10.1.2.3.1 | 定义架构更改策略 | 2d | 2003-11-12 | 2003-11-14 | 94 | 0d | 基础结构管理员 | 16h |
| 97 | 1.2.10.1.2.3.2 | 定义目录林之间的信任 | 1d | 2003-11-14 | 2003-11-17 | 96 | 0d | 基础结构管理员 | 8h |
| 98 | 1.2.10.1.2.3.3 | 定义配置更改策略 | 1d | 2003-11-17 | 2003-11-18 | 97 | 19.5d | 基础结构管理员 | 8h |
| 99 | 1.2.10.1.2.4 | 记录目录林计划 | 2d | 2003-11-17 | 2003-11-19 | 97 | 0d | 基础结构管理员 | 16h |
| 100 | 1.2.10.1.3 | **设计 Active Directory 域计划** | 4.5d | 2003-11-19 | 2003-11-25 | 99 | 0d |  | 52h |
| 101 | 1.2.10.1.3.1 | **确定每个目录林中域的数目** | 2d | 2003-11-19 | 2003-11-21 |  | 0d |  | 32h |
| 102 | 1.2.10.1.3.1.1 | **评估域模型** | 2d | 2003-11-19 | 2003-11-21 |  | 0d |  | 32h |
| 103 | 1.2.10.1.3.1.1.1 | 评估保留的原有 Windows NT 4.0 域 | 2d | 2003-11-19 | 2003-11-21 |  | 16.5d | 基础结构管理员 | 16h |
| 104 | 1.2.10.1.3.1.1.2 | 评估实际的磁盘分区应考虑的因素 | 2d | 2003-11-19 | 2003-11-21 |  | 0d | 基础结构管理员 | 16h |
| 105 | 1.2.10.1.3.2 | 为每个域指定一个域名系统(DNS)名称以创建域层次结构 | 4h | 2003-11-21 | 2003-11-21 | 104 | 0d | 基础结构管理员 | 4h |
| 106 | 1.2.10.1.3.3 | 记录部署后对域进行更改的影响因素 | 2d | 2003-11-21 | 2003-11-25 | 105 | 0d | 基础结构管理员 | 16h |
| 107 | 1.2.10.1.4 | **设计 Active Directory 组织单位(OU)计划** | 5d | 2003-11-25 | 2003-12-02 |  | 0d |  | 40h |
| 108 | 1.2.10.1.4.1 | 定义组织单位以委托管理 | 2d | 2003-11-25 | 2003-11-27 | 106 | 0d | 基础结构管理员 | 16h |
| 109 | 1.2.10.1.4.2 | 定义组织单位以应用组策略 | 1d | 2003-11-27 | 2003-11-28 | 108 | 0d | 基础结构管理员 | 8h |
| 110 | 1.2.10.1.4.3 | 记录部署后对组织单位结构进行更改的影响因素 | 2d | 2003-11-28 | 2003-12-02 | 109 | 0d | 基础结构管理员 | 16h |
| 111 | 1.2.10.1.5 | **设计站点拓扑计划** | 9d | 2003-12-02 | 2003-12-15 | 110 | 0d |  | 116h |
| 112 | 1.2.10.1.5.1 | **使用物理网络拓扑定义站点和站点链接** | 3.5d | 2003-12-02 | 2003-12-08 |  | 0d |  | 64h |
| 113 | 1.2.10.1.5.1.1 | 获得物理网络拓扑映射 | 4h | 2003-12-02 | 2003-12-03 |  | 1.5d | 基础结构管理员 | 4h |
| 114 | 1.2.10.1.5.1.2 | 为每一个局域网(LAN)或高速骨干网连接的 LAN 集创建站点 | 2d | 2003-12-02 | 2003-12-04 |  | 0d | 基础结构管理员 | 16h |
| 115 | 1.2.10.1.5.1.3 | 为每个站点记录 Internet 协议(IP)子网 | 4h | 2003-12-04 | 2003-12-05 | 113, 114 | 0d | 基础结构管理员 | 4h |
| 116 | 1.2.10.1.5.1.4 | **定义网站链接** | 1d | 2003-12-05 | 2003-12-08 | 115 | 0d |  | 40h |
| 117 | 1.2.10.1.5.1.4.1 | 使用站点链接定义站点连接 | 1d | 2003-12-05 | 2003-12-08 |  | 0d | 基础结构管理员 | 8h |
| 118 | 1.2.10.1.5.1.4.2 | 定义重复日程 | 1d | 2003-12-05 | 2003-12-08 |  | 0d | 基础结构管理员 | 8h |
| 119 | 1.2.10.1.5.1.4.3 | 定义重复间隔 | 1d | 2003-12-05 | 2003-12-08 |  | 0d | 基础结构管理员 | 8h |
| 120 | 1.2.10.1.5.1.4.4 | 定义重复传输 | 1d | 2003-12-05 | 2003-12-08 |  | 0d | 基础结构管理员 | 8h |
| 121 | 1.2.10.1.5.1.4.5 | 定义链接成本 | 1d | 2003-12-05 | 2003-12-08 |  | 0d | 基础结构管理员 | 8h |

| ID | WBS | Task | Type | Duration | Start | Finish | Predecessors | Total slack | Resources | Work |
| --- | --- | --- | --- | --- | --- | --- | --- | --- | --- | --- |
| 122 | 1.2.10.1.5.2 | **定义站点内的服务器位置** |  | 4d | 2003-12-08 | 2003-12-12 | 116 | 0d |  | 40h |
| 123 | 1.2.10.1.5.2.1 | **定义其他域控制器** |  | 1d | 2003-12-08 | 2003-12-09 |  | 0d |  | 16h |
| 124 | 1.2.10.1.5.2.1.1 | 分析故障移动要求 |  | 1d | 2003-12-08 | 2003-12-09 |  | 0d | 基础结构管理员 | 8h |
| 125 | 1.2.10.1.5.2.1.2 | 分析域控制器客户端工作量 |  | 1d | 2003-12-08 | 2003-12-09 |  | 0d | 基础结构管理员 | 8h |
| 126 | 1.2.10.1.5.2.2 | 定义全局目录(GC)服务器的位置 |  | 1d | 2003-12-09 | 2003-12-10 | 123 | 0d | 基础结构管理员 | 8h |
| 127 | 1.2.10.1.5.2.3 | 定义 DNS 服务器的位置 |  | 2d | 2003-12-10 | 2003-12-12 | 126 | 0d | 基础结构管理员 | 16h |
| 128 | 1.2.10.1.5.3 | 记录部署后对站点拓扑进行更改的影响因素 |  | 12h | 2003-12-12 | 2003-12-15 | 127 | 0d | 基础结构管理员 | 12h |
| 129 | 1.2.10.2 | **评估迁移策略** |  | 2.5d | 2003-12-15 | 2003-12-18 | 90 | 0d |  | 60h |
| 130 | 1.2.10.2.1 | 确定迁移标志 |  | 4h | 2003-12-15 | 2003-12-16 |  | 0d | 基础结构管理员 | 4h |
| 131 | 1.2.10.2.2 | 确定支持的升级路径 |  | 1d | 2003-12-16 | 2003-12-17 | 130 | 1d | 基础结构管理员 | 8h |
| 132 | 1.2.10.2.3 | 检查现有域结构 |  | 1d | 2003-12-16 | 2003-12-17 | 130 | 1d | 基础结构管理员 | 8h |
| 133 | 1.2.10.2.4 | 确定重新构建域的原因 |  | 1d | 2003-12-16 | 2003-12-17 | 130 | 0d | 基础结构管理员 | 8h |
| 134 | 1.2.10.2.5 | 确定重新构建域的时间 |  | 4h | 2003-12-17 | 2003-12-17 | 133 | 0.5d | 基础结构管理员 | 4h |
| 135 | 1.2.10.2.6 | 确定升级域控制器的策略 |  | 1d | 2003-12-17 | 2003-12-18 | 133 | 0d | 基础结构管理员 | 8h |
| 136 | 1.2.10.2.7 | 确定升级域的顺序 |  | 1d | 2003-12-17 | 2003-12-18 | 133 | 0d | 基础结构管理员 | 8h |
| 137 | 1.2.10.2.8 | 制定故障恢复计划 |  | 1d | 2003-12-17 | 2003-12-18 | 133 | 0d | 基础结构管理员 | 8h |
| 138 | 1.2.10.2.9 | 确定移动到本机模式的时间 |  | 4h | 2003-12-17 | 2003-12-17 | 133 | 0.5d | 基础结构管理员 | 4h |
| 139 | 1.2.10.3 | **评估 Active Directory 与 Microsoft Exchange Server 同步** |  | 9d | 2003-12-18 | 2003-12-31 | 129 | 0d |  | 120h |
| 140 | 1.2.10.3.1 | 检查现有域结构和 Exchange 站点拓扑 |  | 1d | 2003-12-18 | 2003-12-19 | 138 | 0d | 基础结构管理员 | 8h |
| 141 | 1.2.10.3.2 | 审查网络以便用于 Active Directory 连接器(ADC)部署 |  | 1d | 2003-12-19 | 2003-12-22 | 140 | 7d | 基础结构管理员 | 8h |
| 142 | 1.2.10.3.3 | 考虑特殊的网络需求 |  | 1d | 2003-12-19 | 2003-12-22 | 140 | 0d | 基础结构管理员 | 8h |
| 143 | 1.2.10.3.4 | **确定要管理哪个目录服务(DS)中的对象** |  | 2d | 2003-12-22 | 2003-12-24 |  | 0d |  | 32h |
| 144 | 1.2.10.3.4.1 | 评估 Active Directory 中对象的管理 |  | 2d | 2003-12-22 | 2003-12-24 | 142 | 0d | 基础结构管理员 | 16h |
| 145 | 1.2.10.3.4.2 | 评估 Exchange Server 2000 目录服务中对象的管理 |  | 2d | 2003-12-22 | 2003-12-24 | 142 | 0d | 基础结构管理员 | 16h |
| 146 | 1.2.10.3.5 | 定义用于目录同步的对象 |  | 2d | 2003-12-24 | 2003-12-26 | 144, 145 | 0d | 基础结构管理员 | 16h |
| 147 | 1.2.10.3.6 | 用“活动目录”OU 映射 Exchange 容器 |  | 1d | 2003-12-26 | 2003-12-29 | 146 | 2d | 基础结构管理员 | 8h |
| 148 | 1.2.10.3.7 | 设计连接许可协议 |  | 2d | 2003-12-26 | 2003-12-30 | 146 | 1d | 基础结构管理员 | 16h |
| 149 | 1.2.10.3.8 | 记录 ADC 连接计划策略/标准 |  | 3d | 2003-12-26 | 2003-12-31 | 146 | 0d | 基础结构管理员 | 24h |
| 150 | 1.2.10.4 | 完成规划 Active Directory 部署 | milestone | 0d | 2003-12-31 | 2003-12-31 | 139 | 39d |  |  |

| ID | WBS | Task | Type | Duration | Start | Finish | Predecessors | Total slack | Free slack | Resources | Work |
| --- | --- | --- | --- | --- | --- | --- | --- | --- | --- | --- | --- |
| 151 | 1.2.11 | **补救风险评估** |  | 7d | 2003-12-31 | 2004-01-09 | 139 | 0d |  |  | 56h |
| 152 | 1.2.11.1 | 审阅风险评估文档 |  | 1d | 2003-12-31 | 2004-01-01 |  | 0d |  | 项目经理 | 8h |
| 153 | 1.2.11.2 | 确定解决方案 |  | 3d | 2004-01-01 | 2004-01-06 | 152 | 0d |  | 项目经理 | 24h |
| 154 | 1.2.11.3 | 传达到项目赞助者、高级管理以及项目成员 |  | 1d | 2004-01-06 | 2004-01-07 | 153 | 0d |  | 项目经理 | 8h |
| 155 | 1.2.11.4 | 将风险作为日常项目管理的一部分进行评估 |  | 2d | 2004-01-07 | 2004-01-09 | 154 | 0d |  | 项目经理 | 16h |
| 156 | 1.2.11.5 | 补救风险评估完成 | milestone | 0d | 2004-01-09 | 2004-01-09 | 155 | 0d |  |  |  |
| 157 | 1.2.12 | **制定通讯工作** |  | 4.5d | 2004-01-09 | 2004-01-15 |  | 0d |  |  | 36h |
| 158 | 1.2.12.1 | 审阅通讯策略/标准 |  | 1d | 2004-01-09 | 2004-01-12 | 156 | 0d |  | 用户教育/培训负责人 | 8h |
| 159 | 1.2.12.2 | 制定通讯材料 |  | 2d | 2004-01-12 | 2004-01-14 | 158 | 0d |  | 用户教育/培训负责人 | 16h |
| 160 | 1.2.12.3 | 审阅通讯材料 |  | 1d | 2004-01-14 | 2004-01-15 | 159 | 0d |  | 用户教育/培训负责人 | 8h |
| 161 | 1.2.12.4 | 批准通讯策略和材料 |  | 4h | 2004-01-15 | 2004-01-15 | 160 | 0d |  | 用户教育/培训负责人 | 4h |
| 162 | 1.2.12.5 | 完成联系材料的准备 | milestone | 0d | 2004-01-15 | 2004-01-15 | 161 | 0d |  |  |  |
| 163 | 1.2.13 | **制定教育/培训** |  | 8.5d | 2004-01-15 | 2004-01-28 |  | 0d |  |  | 68h |
| 164 | 1.2.13.1 | 审阅培训策略/标准 |  | 1d | 2004-01-15 | 2004-01-16 | 162 | 0d |  | 用户教育/培训负责人 | 8h |
| 165 | 1.2.13.2 | 制定/获得培训材料 |  | 5d | 2004-01-16 | 2004-01-23 | 164 | 0d |  | 用户教育/培训负责人 | 40h |
| 166 | 1.2.13.3 | 审阅教育材料 |  | 2d | 2004-01-23 | 2004-01-27 | 165 | 0d |  | 用户教育/培训负责人 | 16h |
| 167 | 1.2.13.4 | 批准教育策略和材料 |  | 4h | 2004-01-27 | 2004-01-28 | 166 | 0d |  | 用户教育/培训负责人 | 4h |
| 168 | 1.2.13.5 | 完成教育/培训开发工作 | milestone | 0d | 2004-01-28 | 2004-01-28 | 167 | 0d |  | 用户教育/培训负责人 |  |
| 169 | 1.2.14 | 完成规划 | milestone | 0d | 2004-01-28 | 2004-01-28 | 168 | 0d |  |  |  |
| 170 | 1.2.15 | **部署概念验证(POC)** |  | 15d | 2004-01-28 | 2004-02-18 | 169 | 0d |  |  | 624h |
| 171 | 1.2.15.1 | **为 POC 做准备** |  | 2d | 2004-01-28 | 2004-01-30 |  | 17d |  |  | 24h |
| 172 | 1.2.15.1.1 | 准备基于制定/设计解决方案的测试计划和清单 |  | 12h | 2004-01-28 | 2004-01-29 |  | 17d | 0d | 测试/质保负责人 | 12h |
| 173 | 1.2.15.1.2 | 记录功能和组件以便测试 |  | 1d | 2004-01-28 | 2004-01-29 |  | 17.5d | 0.5d | 测试/质保负责人 | 8h |
| 174 | 1.2.15.1.3 | 保护测试人员的安全 |  | 4h | 2004-01-29 | 2004-01-30 | 172, 173 | 17d |  | 项目经理 | 4h |

Notes:
- 170: 在此阶段，将创建概念的验证(POC)环境以评估在计划中早期讨论的不同组件。为了实现正确的评估目的，POC 环境应该是完整的 Active Directory 模型的微缩版本。

| ID | WBS | Task | Duration | Start | Finish | Predecessors | Total slack | Free slack | Resources | Work |
| --- | --- | --- | --- | --- | --- | --- | --- | --- | --- | --- |
| 175 | 1.2.15.2 | **确保测试实验室环境模拟建议的环境** | 4d | 2004-01-28 | 2004-02-03 |  | 0d |  |  | 216h |
| 176 | 1.2.15.2.1 | 配置服务器硬件和驱动程序 | 2d | 2004-01-28 | 2004-01-30 |  | 2d |  | 网络管理员 | 16h |
| 177 | 1.2.15.2.2 | 配置服务和配置 | 1d | 2004-01-28 | 2004-01-29 |  | 3d |  | 网络管理员 | 8h |
| 178 | 1.2.15.2.3 | 配置用户帐户 | 1d | 2004-01-28 | 2004-01-29 |  | 3d |  | 网络管理员 | 8h |
| 179 | 1.2.15.2.4 | 配置域结构(模拟的域层次结构) | 2d | 2004-01-28 | 2004-01-30 |  | 2d |  | 网络管理员 | 16h |
| 180 | 1.2.15.2.5 | 配置服务器功能/策略 | 2d | 2004-01-28 | 2004-01-30 |  | 2d |  | 网络管理员 | 16h |
| 181 | 1.2.15.2.6 | 配置混合的环境 | 1d | 2004-01-28 | 2004-01-29 |  | 3d |  | 网络管理员 | 8h |
| 182 | 1.2.15.2.7 | 配置客户机配置 | 2d | 2004-01-28 | 2004-01-30 |  | 2d |  | 台式计算机管理员 | 16h |
| 183 | 1.2.15.2.8 | 配置网络拓扑和协议 | 2d | 2004-01-28 | 2004-01-30 |  | 2d |  | 网络管理员 | 16h |
| 184 | 1.2.15.2.9 | 配置网络连通性 | 2d | 2004-01-28 | 2004-01-30 |  | 2d |  | 网络管理员 | 16h |
| 185 | 1.2.15.2.10 | 测试运行在域控制器上的服务器应用程序 | 4d | 2004-01-28 | 2004-02-03 |  | 0d |  | 测试/质保负责人 | 32h |
| 186 | 1.2.15.2.11 | 配置远程连接性 | 1d | 2004-01-28 | 2004-01-29 |  | 3d |  | 基础结构管理员 | 8h |
| 187 | 1.2.15.2.12 | 配置外围设备 | 2d | 2004-01-28 | 2004-01-30 |  | 2d |  | 网络管理员 | 16h |
| 188 | 1.2.15.2.13 | 配置与其他操作系统的互操作性(UNIX、大型机等) | 2d | 2004-01-28 | 2004-01-30 |  | 2d |  | 网络管理员 | 16h |
| 189 | 1.2.15.2.14 | 配置管理工具 | 1d | 2004-01-28 | 2004-01-29 |  | 3d |  | 网络管理员 | 8h |
| 190 | 1.2.15.2.15 | 配置容错技术 | 1d | 2004-01-28 | 2004-01-29 |  | 3d |  | 网络管理员 | 8h |
| 191 | 1.2.15.2.16 | 配置终端服务 | 1d | 2004-01-28 | 2004-01-29 |  | 3d |  | 网络管理员 | 8h |
| 192 | 1.2.15.3 | **部署 POC/实验室测试环境** | 11d | 2004-02-03 | 2004-02-18 | 175 | 0d |  |  | 256h |
| 193 | 1.2.15.3.1 | **验证结构规划** | 2d | 2004-02-03 | 2004-02-05 |  | 4d |  |  | 16h |
| 194 | 1.2.15.3.1.1 | 复制加载对比广域网(WAN)上客户端登录 | 1d | 2004-02-03 | 2004-02-04 |  | 4d | 0d | 基础结构管理员 | 8h |
| 195 | 1.2.15.3.1.2 | 执行复制拓扑(端到端复制反应时间、KCC 路由和失败处理) | 1d | 2004-02-04 | 2004-02-05 | 194 | 4d | 0d | 基础结构管理员 | 8h |
| 196 | 1.2.15.3.2 | **调整域控制器大小** | 4d | 2004-02-05 | 2004-02-11 |  | 4d |  |  | 32h |
| 197 | 1.2.15.3.2.1 | 归类地理位置并创建 | 1d | 2004-02-05 | 2004-02-06 | 195 | 4d | 0d | 网络管理员 | 8h |
| 198 | 1.2.15.3.2.2 | 使两个或三个域控制器的配置标准化(高/中/低负载域控制器) | 1d | 2004-02-06 | 2004-02-09 | 197 | 4d | 0d | 网络管理员 | 8h |

Notes:
- 192: 实验测试是培训的很好办法。

| ID | WBS | Task | Type | Duration | Start | Finish | Predecessors | Total slack | Free slack | Resources | Work |
| --- | --- | --- | --- | --- | --- | --- | --- | --- | --- | --- | --- |
| 199 | 1.2.15.3.2.3 | **在域控制器上模拟加载** |  | 2d | 2004-02-09 | 2004-02-11 |  | 4d |  |  | 16h |
| 200 | 1.2.15.3.2.3.1 | 使用工具模拟登录、更改和添加操作 |  | 1d | 2004-02-09 | 2004-02-10 | 198 | 4d | 0d | 网络管理员 | 8h |
| 201 | 1.2.15.3.2.3.2 | 从早期服务器收集数据并用作比较基准 |  | 1d | 2004-02-10 | 2004-02-11 | 200 | 4d | 0d | 基础结构管理员 | 8h |
| 202 | 1.2.15.3.3 | **测试经营、管理和委派** |  | 2d | 2004-02-11 | 2004-02-13 |  | 4d |  |  | 16h |
| 203 | 1.2.15.3.3.1 | 为公共任务开发脚本 |  | 1d | 2004-02-11 | 2004-02-12 | 201 | 4d | 0d | 网络管理员 | 8h |
| 204 | 1.2.15.3.3.2 | 在实验室中测试并改进脚本 |  | 1d | 2004-02-12 | 2004-02-13 | 203 | 4d | 0d | 网络管理员 | 8h |
| 205 | 1.2.15.3.4 | **测试迁移** |  | 3d | 2004-02-13 | 2004-02-18 | 204 | 4d |  |  | 32h |
| 206 | 1.2.15.3.4.1 | 测试帐户域重建如何影响用户登录、资源访问和应用程序访问 |  | 1d | 2004-02-13 | 2004-02-16 |  | 4d | 0d | 测试/质保负责人 | 8h |
| 207 | 1.2.15.3.4.2 | 测试迁移过程 |  | 1d | 2004-02-16 | 2004-02-17 | 206 | 4d | 0d | 测试/质保负责人 | 8h |
| 208 | 1.2.15.3.4.3 | 使用实际数据进行测试(例如，通过实际域创建的 Windows NT 4.0 BDC 或 Windows 2000 控制器) |  | 1d | 2004-02-17 | 2004-02-18 | 207 | 4d |  | 网络管理员; 测试/质保负责人 | 16h |
| 209 | 1.2.15.3.5 | **测试应用程序** |  | 3d | 2004-02-03 | 2004-02-06 |  | 12d |  |  | 32h |
| 210 | 1.2.15.3.5.1 | 创建业务中关键的应用程序清单并指定测试主管人 |  | 1d | 2004-02-03 | 2004-02-04 |  | 12d | 0d | 项目经理; 基础结构管理员 | 16h |
| 211 | 1.2.15.3.5.2 | 测试应用程序是否可在 Windows 上运行 |  | 1d | 2004-02-04 | 2004-02-05 | 210 | 12d | 0d | 测试/质保负责人 | 8h |
| 212 | 1.2.15.3.5.3 | 测试重建如何影响应用程序 |  | 1d | 2004-02-05 | 2004-02-06 | 211 | 12d |  | 测试/质保负责人 | 8h |
| 213 | 1.2.15.3.6 | 分析结果 |  | 4d | 2004-02-03 | 2004-02-09 |  | 0d |  | 项目经理; 基础结构管理员; 网络管理员; 测试/质保负责人 | 128h |
| 214 | 1.2.15.4 | **执行整套的风险评估** |  | 4d | 2004-02-09 | 2004-02-13 |  | 0d |  |  | 128h |
| 215 | 1.2.15.4.1 | 将经验教训记录存档 |  | 2d | 2004-02-09 | 2004-02-11 | 213 | 0d |  | 项目经理; 基础结构管理员; 网络管理员; 测试/质保负责人 | 64h |
| 216 | 1.2.15.4.2 | 记录修改 |  | 1d | 2004-02-11 | 2004-02-12 | 215 | 0d |  | 项目经理; 基础结构管理员; 网络管理员; 测试/质保负责人 | 32h |
| 217 | 1.2.15.4.3 | 准备好以继续进行试生产 |  | 1d | 2004-02-12 | 2004-02-13 | 216 | 0d |  | 项目经理; 基础结构管理员; 网络管理员; 测试/质保负责人 | 32h |
| 218 | 1.2.15.5 | 部署 POC 完成 | milestone | 0d | 2004-02-13 | 2004-02-13 | 214 | 0d |  |  |  |
| 219 | 1.2.16 | 规划工作完成 | milestone | 0d | 2004-02-13 | 2004-02-13 | 218 | 7d |  |  |  |
| 220 | 1.3 | **部署** |  | 116.25d | 2003-09-15 | 2004-02-24 |  | 0d |  |  | 1568h |
| 221 | 1.3.1 | **部署试生产系统** |  | 116.25d | 2003-09-15 | 2004-02-24 |  | 0d |  |  | 920h |
| 222 | 1.3.1.1 | **规划试生产部署** |  | 116.25d | 2003-09-15 | 2004-02-24 |  | 0d |  |  | 304h |
| 223 | 1.3.1.1.1 | 确定试生产范围和目标 |  | 1d | 2004-02-13 | 2004-02-16 | 218 | 1d |  | 项目经理; 基础结构管理员 | 16h |
| 224 | 1.3.1.1.2 | 确定试生产组/个体/资源/设备 |  | 1d | 2004-02-13 | 2004-02-16 | 218 | 1d |  | 项目经理; 基础结构管理员; 台式计算机管理员; 网络管理员; 后勤管理负责人 | 40h |
| 225 | 1.3.1.1.3 | 记录资源和任务 |  | 1d | 2004-02-13 | 2004-02-16 | 218 | 0d |  | 项目经理 | 8h |
| 226 | 1.3.1.1.4 | 制定用户团体的通讯材料(例如，FAQ、Web 站点、电子邮件) |  | 1d | 2004-02-16 | 2004-02-17 | 225 | 0d |  | 用户教育/培训负责人 | 8h |
| 227 | 1.3.1.1.5 | 制定用户支持计划 |  | 1d | 2004-02-16 | 2004-02-17 | 225 | 0d |  | 台式计算机管理员 | 8h |
| 228 | 1.3.1.1.6 | 制定培训计划 |  | 1d | 2004-02-16 | 2004-02-17 | 225 | 0d |  | 用户教育/培训负责人 | 8h |
| 229 | 1.3.1.1.7 | 确保 POC 实验室稳定 |  | 2d | 2004-02-17 | 2004-02-19 | 223, 224, 225, 226, 227, 228 | 0d |  | 测试/质保负责人 | 16h |

Notes:
- 221: 完成功能设计和开发并且彻底地测试功能配置后，您就可以处理试生产项目。部署小组应该设置许多临时传输的里程碑，每个都涉及到解决方案开发、测试、验证预先指定的性能标准，以及重新设计。 / 在保持计划时间财政预算的同时，跟踪部署问题和有效地解决它们对于到达部署目标是至关重要的。 / 试生产项目开始运行并稳定后，赞助商和部署工作组就可以评估新的 Windows Server 2003 基础结构的功能并验证产品首展以及支持规划是否都是正常的。主要的里程碑和部署文档可能包含以下内容: / - 技术验证完成 / - 完善而稳定的功能说明 / - POC 完成 / - 试制的测试完成 / - 试生产完成 / - 更新的风险管理计划 / 其他可能要制定的部署文档包括如下内容: / - 培训计划 / - 支持或技术支持计划 / - 操作转换计划

| ID | WBS | Task | Duration | Start | Finish | Predecessors | Total slack | Free slack | Resources | Work |
| --- | --- | --- | --- | --- | --- | --- | --- | --- | --- | --- |
| 230 | 1.3.1.1.8 | **制定首展过程** | 3d | 2004-02-19 | 2004-02-24 |  | 0d |  |  | 152h |
| 231 | 1.3.1.1.8.1 | 确定安装程序需要的工具和供给 | 2d | 2004-02-19 | 2004-02-23 | 229 | 1d |  | 基础结构管理员; 网络管理员; 后勤管理负责人 | 48h |
| 232 | 1.3.1.1.8.2 | 确定脚本列表及其位置 | 2d | 2004-02-19 | 2004-02-23 | 229 | 1d |  | 基础结构管理员 | 16h |
| 233 | 1.3.1.1.8.3 | 确定在部署之前和部署过程中进行了备份 | 1d | 2004-02-19 | 2004-02-20 | 229 | 0d |  | 网络管理员 | 8h |
| 234 | 1.3.1.1.8.4 | 记录迁移到新域结构的步骤 | 2d | 2004-02-20 | 2004-02-24 | 233 | 0d |  | 基础结构管理员 | 16h |
| 235 | 1.3.1.1.8.5 | 记录执行手动和自动进行计算机升级的步骤 | 2d | 2004-02-20 | 2004-02-24 | 233 | 0d |  | 基础结构管理员 | 16h |
| 236 | 1.3.1.1.8.6 | 记录安装程序接受测试 | 2d | 2004-02-20 | 2004-02-24 | 233 | 0d |  | 测试/质保负责人 | 16h |
| 237 | 1.3.1.1.8.7 | 记录安装程序和管理员要执行的操作过程(重设权限、更改密码等) | 2d | 2004-02-20 | 2004-02-24 | 233 | 0d |  | 网络管理员 | 16h |
| 238 | 1.3.1.1.8.8 | 记录如果试生产失败，返回的步骤 | 2d | 2004-02-20 | 2004-02-24 | 233 | 0d |  | 基础结构管理员 | 16h |
| 239 | 1.3.1.1.9 | 确定已知的风险以及这些风险的突发计划 | 2d | 2003-09-15 | 2003-09-16 |  | 112.25d | 0d | 项目经理 | 16h |
| 240 | 1.3.1.1.10 | 制定回滚计划 | 2d | 2003-09-17 | 2003-09-18 | 239 | 112.25d |  | 项目经理; 基础结构管理员 | 32h |
| 241 | 1.3.1.2 | **设置部署** | 2d | 2003-09-15 | 2003-09-16 |  | 5.25d | 0d |  | 32h |
| 242 | 1.3.1.2.1 | 与用户通讯 | 1d | 2003-09-15 | 2003-09-15 |  | 6.25d |  | 用户教育/培训负责人 | 8h |
| 243 | 1.3.1.2.2 | 处理用户培训 | 2d | 2003-09-15 | 2003-09-16 |  | 5.25d |  | 用户教育/培训负责人 | 16h |
| 244 | 1.3.1.2.3 | 确保支持组织准备就绪 | 1d | 2003-09-15 | 2003-09-15 |  | 6.25d |  | 项目经理 | 8h |
| 245 | 1.3.1.3 | **使用 Active Directory 迁移工具执行 Windows NT 域升级** | 5.5d | 2003-09-17 | 2003-09-24 | 241 | 108.75d |  |  | 84h |
| 246 | 1.3.1.3.1 | 对源域中的服务器应用适当的服务包 | 2d | 2003-09-17 | 2003-09-18 |  | 112.25d |  | 网络管理员 | 16h |
| 247 | 1.3.1.3.2 | 配置源域和目标域之间的双向信任 | 2d | 2003-09-17 | 2003-09-18 |  | 112.25d |  | 网络管理员 | 16h |
| 248 | 1.3.1.3.3 | **配置组** | 0.5d | 2003-09-17 | 2003-09-17 |  | 108.75d | 0d |  | 12h |
| 249 | 1.3.1.3.3.1 | 将域管理员全局组从源域添加到目标域中的管理员本地组 | 4h | 2003-09-17 | 2003-09-17 |  | 108.75d |  | 网络管理员 | 4h |
| 250 | 1.3.1.3.3.2 | 将管理员全局组从目标域添加到源域中的管理员本地组 | 4h | 2003-09-17 | 2003-09-17 |  | 108.75d |  | 网络管理员 | 4h |
| 251 | 1.3.1.3.3.3 | 创建 SourceDomain$$$ 组 | 4h | 2003-09-17 | 2003-09-17 |  | 108.75d |  | 网络管理员 | 4h |
| 252 | 1.3.1.3.4 | 对源域和目标域适当地启用审核 | 1d | 2003-09-17 | 2003-09-18 | 248 | 108.75d | 0d | 网络管理员 | 8h |
| 253 | 1.3.1.3.5 | 创建管理共享 | 1d | 2003-09-18 | 2003-09-19 | 252 | 108.75d | 0d | 网络管理员 | 8h |
| 254 | 1.3.1.3.6 | 批准适当的用户权限 | 1d | 2003-09-19 | 2003-09-22 | 253 | 108.75d | 0d | 网络管理员 | 8h |
| 255 | 1.3.1.3.7 | 运行 Active Directory 迁移工具 | 2d | 2003-09-22 | 2003-09-24 | 254 | 108.75d |  | 网络管理员 | 16h |

| ID | WBS | Task | Duration | Start | Finish | Predecessors | Total slack | Free slack | Resources | Work |
| --- | --- | --- | --- | --- | --- | --- | --- | --- | --- | --- |
| 256 | 1.3.1.4 | **执行域升级/新安装** | 24d | 2003-09-17 | 2003-10-20 | 241 | 5.25d |  |  | 256h |
| 257 | 1.3.1.4.1 | **建立域控制器** | 8d | 2003-09-17 | 2003-09-26 |  | 5.25d |  |  | 120h |
| 258 | 1.3.1.4.1.1 | 将服务器安装为成员服务器 | 1d | 2003-09-17 | 2003-09-17 |  | 5.25d | 0d | 网络管理员 | 8h |
| 259 | 1.3.1.4.1.2 | 将 DNS 与操作系统安装一起(总是使用固定的 IP 地址) | 1d | 2003-09-18 | 2003-09-18 | 258 | 5.25d | 0d | 网络管理员 | 8h |
| 260 | 1.3.1.4.1.3 | **配置域名系统(DNS)客户端** | 3d | 2003-09-19 | 2003-09-23 |  | 5.25d |  |  | 48h |
| 261 | 1.3.1.4.1.3.1 | 确认 DNS 客户端作为首选 DNS 服务器指向本地服务器，并作为备用 DNS 服务器指向任何其他 DNS 服务器 | 1d | 2003-09-19 | 2003-09-19 | 259 | 111.25d |  | 网络管理员 | 8h |
| 262 | 1.3.1.4.1.3.2 | 将目录林根级域作为首选 DNS 服务器指向其他目录林根级域控制器，并将目录林根级域作为备用 DNS 服务器指向本地服务器 | 1d | 2003-09-19 | 2003-09-19 | 259 | 111.25d |  | 网络管理员 | 8h |
| 263 | 1.3.1.4.1.3.3 | 在运行 dcpromo 之前配置 DNS 客户端 | 1d | 2003-09-19 | 2003-09-19 | 259 | 5.25d | 0d | 网络管理员 | 8h |
| 264 | 1.3.1.4.1.3.4 | **配置第一个域控制器** | 1d | 2003-09-22 | 2003-09-22 |  | 5.25d |  |  | 16h |
| 265 | 1.3.1.4.1.3.4.1 | 在运行 dcpromo 之前指向任何现有 DNS 服务器 | 1d | 2003-09-22 | 2003-09-22 | 263 | 110.25d |  | 网络管理员 | 8h |
| 266 | 1.3.1.4.1.3.4.2 | 在第二个域控制器提升为将第二个域控制器用作首选 DNS 控制器之后，重新配置 DNS 客户端 | 1d | 2003-09-22 | 2003-09-22 | 263 | 5.25d | 0d | 网络管理员 | 8h |
| 267 | 1.3.1.4.1.3.5 | 确认第二个根级域控制器已提升位次 | 1d | 2003-09-23 | 2003-09-23 | 266 | 5.25d | 0d | 网络管理员 | 8h |
| 268 | 1.3.1.4.1.4 | 设置好监控软件 | 1d | 2003-09-24 | 2003-09-24 | 267 | 108.25d |  | 网络管理员 | 8h |
| 269 | 1.3.1.4.1.5 | 将机器移动到最终的位置 | 1d | 2003-09-24 | 2003-09-24 | 267 | 108.25d |  | 网络管理员 | 8h |
| 270 | 1.3.1.4.1.6 | 提升域控制器 | 1d | 2003-09-24 | 2003-09-24 | 267 | 5.25d | 0d |  |  |
| 271 | 1.3.1.4.1.7 | **运行质量保证工具** | 1d | 2003-09-25 | 2003-09-25 |  | 5.25d |  |  | 32h |
| 272 | 1.3.1.4.1.7.1 | 检查时间日志 | 1d | 2003-09-25 | 2003-09-25 | 270 | 107.25d |  | 网络管理员 | 8h |
| 273 | 1.3.1.4.1.7.2 | 使用 dcdiag 验证 | 1d | 2003-09-25 | 2003-09-25 | 270 | 107.25d |  | 网络管理员 | 8h |
| 274 | 1.3.1.4.1.7.3 | 使用 netdiag 验证 | 1d | 2003-09-25 | 2003-09-25 | 270 | 107.25d |  | 网络管理员 | 8h |
| 275 | 1.3.1.4.1.7.4 | 使用 repadmin 验证 | 1d | 2003-09-25 | 2003-09-25 | 270 | 5.25d | 0d | 网络管理员 | 8h |
| 276 | 1.3.1.4.1.8 | 如果必须建立大量的域控制器，则要预先考虑域控制器 | 1d | 2003-09-26 | 2003-09-26 | 275 | 5.25d | 0d | 基础结构管理员 | 8h |
| 277 | 1.3.1.4.2 | **为目录林根级指派 DNS 域(DNS 集成)** | 4d | 2003-09-29 | 2003-10-02 |  | 5.25d |  |  | 32h |
| 278 | 1.3.1.4.2.1 | **验证 DNS 客户端(解析程序)** | 2d | 2003-09-29 | 2003-09-30 |  | 5.25d |  |  | 16h |
| 279 | 1.3.1.4.2.1.1 | 验证目录林根级域控制器: 首选的 DNS 服务器指向其他计算机(应在同一站点或相邻站点) | 1d | 2003-09-29 | 2003-09-29 | 276 | 5.25d | 0d | 网络管理员 | 8h |
| 280 | 1.3.1.4.2.1.2 | 验证非 forest 根级域控制器: 首选的 DNS 服务器应为本地计算机 | 1d | 2003-09-30 | 2003-09-30 | 279 | 5.25d | 0d | 网络管理员 | 8h |

| ID | WBS | Task | Duration | Start | Finish | Predecessors | Total slack | Free slack | Resources | Work |
| --- | --- | --- | --- | --- | --- | --- | --- | --- | --- | --- |
| 281 | 1.3.1.4.2.2 | **配置 DNS 服务器** | 2d | 2003-10-01 | 2003-10-02 |  | 5.25d |  |  | 16h |
| 282 | 1.3.1.4.2.2.1 | 为新域控制器创建委托项 | 1d | 2003-10-01 | 2003-10-01 | 280 | 5.25d | 0d | 网络管理员 | 8h |
| 283 | 1.3.1.4.2.2.2 | 区域将在 Active Directory 安装在域控制器/DNS 服务器上之后进行配置 | 1d | 2003-10-02 | 2003-10-02 | 282 | 5.25d | 0d | 网络管理员 | 8h |
| 284 | 1.3.1.4.3 | **创建目录林根级域** | 12d | 2003-10-03 | 2003-10-20 |  | 5.25d |  |  | 104h |
| 285 | 1.3.1.4.3.1 | **实施根级域最佳实施** | 12d | 2003-10-03 | 2003-10-20 |  | 5.25d |  |  | 104h |
| 286 | 1.3.1.4.3.1.1 | **配置第一个根级域控制器** | 2d | 2003-10-03 | 2003-10-06 |  | 5.25d |  |  | 24h |
| 287 | 1.3.1.4.3.1.1.1 | 手动创建 _msdcs.<forest-root> DNS 域 | 1d | 2003-10-03 | 2003-10-03 | 283 | 101.25d |  | 网络管理员 | 8h |
| 288 | 1.3.1.4.3.1.1.2 | 添加 DNS 委托项 | 1d | 2003-10-03 | 2003-10-03 | 283 | 5.25d | 0d | 网络管理员 | 8h |
| 289 | 1.3.1.4.3.1.1.3 | 进行监控和备份 | 1d | 2003-10-06 | 2003-10-06 | 288 | 5.25d | 0d | 网络管理员 | 8h |
| 290 | 1.3.1.4.3.1.2 | **配置第二个根级域控制器** | 3d | 2003-10-07 | 2003-10-09 |  | 5.25d |  |  | 24h |
| 291 | 1.3.1.4.3.1.2.1 | 提升域控制器 | 1d | 2003-10-07 | 2003-10-07 | 289 | 5.25d | 0d | 网络管理员 | 8h |
| 292 | 1.3.1.4.3.1.2.2 | 转换所有域范围操作的主角色 | 1d | 2003-10-08 | 2003-10-08 | 291 | 5.25d | 0d | 网络管理员 | 8h |
| 293 | 1.3.1.4.3.1.2.3 | 进行监控和备份 | 1d | 2003-10-09 | 2003-10-09 | 292 | 5.25d | 0d | 网络管理员 | 8h |
| 294 | 1.3.1.4.3.1.3 | **配置其他根级域控制器** | 3d | 2003-10-10 | 2003-10-14 |  | 5.25d |  |  | 24h |
| 295 | 1.3.1.4.3.1.3.1 | 提升域控制器 | 1d | 2003-10-10 | 2003-10-10 | 293 | 5.25d | 0d | 网络管理员 | 8h |
| 296 | 1.3.1.4.3.1.3.2 | 在适当位置进行监控 | 1d | 2003-10-13 | 2003-10-13 | 295 | 5.25d | 0d | 网络管理员 | 8h |
| 297 | 1.3.1.4.3.1.3.3 | 不要添加 GC 服务(将复制连接的数量减少到其他域中的域控制器的数量) | 1d | 2003-10-14 | 2003-10-14 | 296 | 5.25d | 0d | 网络管理员 | 8h |
| 298 | 1.3.1.4.3.1.4 | **将目录林级域控制器部署于所有集线器** | 4d | 2003-10-15 | 2003-10-20 | 297 | 5.25d |  |  | 32h |
| 299 | 1.3.1.4.3.1.4.1 | **创建配置数据** | 4d | 2003-10-15 | 2003-10-20 |  | 5.25d |  |  | 32h |
| 300 | 1.3.1.4.3.1.4.1.1 | 在安装第二个域控制器后，立即将目录林数据(基础结构数据)添加到 DS | 2d | 2003-10-15 | 2003-10-16 | 297 | 5.25d | 0d | 网络管理员 | 16h |
| 301 | 1.3.1.4.3.1.4.1.2 | 安装第二个域控制器之后，将域数据(属于资源所有者、委托的 OU 和用户/组帐户、资源[服务器、共享、打印机])添加到 DS | 2d | 2003-10-17 | 2003-10-20 | 300 | 5.25d | 0d | 网络管理员 | 16h |
| 302 | 1.3.1.5 | **评估试生产** | 11d | 2003-10-21 | 2003-11-04 |  | 5.25d | 0d |  | 108h |
| 303 | 1.3.1.5.1 | 处理台式计算机测试方案 | 2d | 2003-10-21 | 2003-10-22 | 301 | 5.25d | 0d | 测试/质保负责人 | 16h |
| 304 | 1.3.1.5.2 | 处理服务器测试方案 | 2d | 2003-10-23 | 2003-10-24 | 303 | 5.25d | 0d | 测试/质保负责人 | 16h |
| 305 | 1.3.1.5.3 | 处理第三方应用程序测试方案 | 2d | 2003-10-27 | 2003-10-28 | 304 | 5.25d | 0d | 测试/质保负责人 | 16h |
| 306 | 1.3.1.5.4 | 处理自定义应用程序测试方案 | 2d | 2003-10-29 | 2003-10-30 | 305 | 5.25d | 0d | 测试/质保负责人 | 16h |
| 307 | 1.3.1.5.5 | 处理共存测试方案 | 2d | 2003-10-31 | 2003-11-03 | 306 | 5.25d | 0d | 测试/质保负责人 | 16h |
| 308 | 1.3.1.5.6 | 确定范围更改 | 1d | 2003-11-04 | 2003-11-04 | 303, 304, 305, 306, 307 | 5.25d |  | 项目经理 | 8h |
| 309 | 1.3.1.5.7 | 确定成本因素 | 1d | 2003-11-04 | 2003-11-04 | 303, 304, 305, 306, 307 | 5.25d |  | 项目经理 | 8h |
| 310 | 1.3.1.5.8 | 确定互操作性问题 | 1d | 2003-11-04 | 2003-11-04 | 303, 304, 305, 306, 307 | 5.25d |  | 基础结构管理员 | 8h |
| 311 | 1.3.1.5.9 | 确定未预料到的停工期 | 4h | 2003-11-04 | 2003-11-04 | 303, 304, 305, 306, 307 | 5.75d |  | 基础结构管理员 | 4h |

| ID | WBS | Task | Type | Duration | Start | Finish | Predecessors | Total slack | Free slack | Resources | Work |
| --- | --- | --- | --- | --- | --- | --- | --- | --- | --- | --- | --- |
| 312 | 1.3.1.6 | **执行试生产后评估** |  | 12d | 2003-11-05 | 2003-11-20 | 302 | 5.25d | 0d |  | 136h |
| 313 | 1.3.1.6.1 | 获得用户反馈 |  | 5d | 2003-11-05 | 2003-11-11 |  | 5.25d | 0d | 项目经理 | 40h |
| 314 | 1.3.1.6.2 | 评估经验教训 |  | 2d | 2003-11-12 | 2003-11-13 | 313 | 5.25d | 0d | 项目经理 | 16h |
| 315 | 1.3.1.6.3 | 根据需要修改项目 |  | 2d | 2003-11-14 | 2003-11-17 | 314 | 5.25d | 0d | 项目经理; 基础结构管理员 | 32h |
| 316 | 1.3.1.6.4 | 记录下面步骤的建议 |  | 2d | 2003-11-18 | 2003-11-19 | 315 | 5.25d | 0d | 项目经理; 基础结构管理员 | 32h |
| 317 | 1.3.1.6.5 | 考虑保留试生产以用于未来测试 |  | 1d | 2003-11-20 | 2003-11-20 | 316 | 5.25d |  | 项目经理; 基础结构管理员 | 16h |
| 318 | 1.3.1.7 | 完成部署试生产系统 | milestone | 0d | 2003-11-20 | 2003-11-20 | 312 | 5.25d | 0d |  |  |
| 319 | 1.3.1.8 | 生产部署得到批准 | milestone | 0d | 2003-11-20 | 2003-11-20 | 318 | 5.25d | 0d |  |  |
| 320 | 1.3.2 | **部署生产系统** |  | 48d | 2003-11-21 | 2004-01-27 | 319 | 5.25d | 0d |  | 648h |
| 321 | 1.3.2.1 | **执行 Windows NT 域升级** |  | 43d | 2003-11-21 | 2004-01-20 |  | 5.25d | 0d |  | 464h |
| 322 | 1.3.2.1.1 | 准备数据所有者的 OU 结构(建议开发脚本，因为此过程可能得重复多达 100 次。) |  | 4d | 2003-11-21 | 2003-11-26 |  | 5.25d | 0d | 网络管理员 | 32h |
| 323 | 1.3.2.1.2 | **新建区域域** |  | 2d | 2003-11-27 | 2003-11-28 |  | 5.25d |  |  | 24h |
| 324 | 1.3.2.1.2.1 | 从根级域创建 DNS 委托 |  | 1d | 2003-11-27 | 2003-11-27 | 322 | 5.25d | 0d | 网络管理员 | 8h |
| 325 | 1.3.2.1.2.2 | 安装第一个域控制器 |  | 1d | 2003-11-28 | 2003-11-28 | 324 | 42.25d |  | 网络管理员 | 8h |
| 326 | 1.3.2.1.2.3 | 将客户端配置为指向其本身(作为主 DNS 服务器)和任何其他 DNS 服务器(作为备用 DNS 服务器) |  | 1d | 2003-11-28 | 2003-11-28 | 324 | 5.25d | 0d | 网络管理员 | 8h |
| 327 | 1.3.2.1.3 | **重建活动项** |  | 4d | 2003-12-01 | 2003-12-04 |  | 5.25d |  |  | 96h |
| 328 | 1.3.2.1.3.1 | 将用户迁移作为帐户域重建的一部分完成 |  | 2d | 2003-12-01 | 2003-12-02 | 326 | 40.25d |  | 网络管理员 | 16h |
| 329 | 1.3.2.1.3.2 | 将全局组迁移作为帐户域重建的一部分完成 |  | 2d | 2003-12-01 | 2003-12-02 | 326 | 40.25d |  | 网络管理员 | 16h |
| 330 | 1.3.2.1.3.3 | 将用户迁配置文件移作为帐户域重建的一部分完成 |  | 2d | 2003-12-01 | 2003-12-02 | 326 | 5.25d | 0d | 网络管理员 | 16h |
| 331 | 1.3.2.1.3.4 | 将 Exchange 邮箱访问迁移作为帐户域重建的一部分完成 |  | 2d | 2003-12-03 | 2003-12-04 | 330 | 38.25d |  | 网络管理员 | 16h |
| 332 | 1.3.2.1.3.5 | 将工作站迁移作为帐户域重建的一部分完成 |  | 2d | 2003-12-03 | 2003-12-04 | 330 | 38.25d |  | 网络管理员 | 16h |
| 333 | 1.3.2.1.3.6 | 将资源迁移作为帐户域重建的一部分完成 |  | 2d | 2003-12-03 | 2003-12-04 | 330 | 5.25d | 0d | 网络管理员 | 16h |
| 334 | 1.3.2.1.4 | **重建帐户域** |  | 20d | 2003-12-05 | 2004-01-01 |  | 5.25d |  |  | 200h |
| 335 | 1.3.2.1.4.1 | **为重建做准备** |  | 8d | 2003-12-05 | 2003-12-16 |  | 5.25d |  |  | 64h |
| 336 | 1.3.2.1.4.1.1 | 安装迁移工具 |  | 1d | 2003-12-05 | 2003-12-05 | 333 | 5.25d | 0d | 网络管理员 | 8h |

Notes:
- 312: 在试生产工作结束时，评估其是否成功并作出后续步骤的建议给管理部门。然后管理 部门决定是否超越试生产继续进行项目。为了帮助您评估和作出建议，可以分析大量源中的信息。

| ID | WBS | Task | Duration | Start | Finish | Predecessors | Total slack | Free slack | Resources | Work |
| --- | --- | --- | --- | --- | --- | --- | --- | --- | --- | --- |
| 337 | 1.3.2.1.4.1.2 | **准备源和目标域** | 2d | 2003-12-08 | 2003-12-09 |  | 5.25d |  |  | 16h |
| 338 | 1.3.2.1.4.1.2.1 | 创建信任关系 | 1d | 2003-12-08 | 2003-12-08 | 336 | 5.25d | 0d | 网络管理员 | 8h |
| 339 | 1.3.2.1.4.1.2.2 | 创建组成员 | 1d | 2003-12-09 | 2003-12-09 | 338 | 5.25d | 0d | 网络管理员 | 8h |
| 340 | 1.3.2.1.4.1.3 | 确定服务帐户 | 1d | 2003-12-10 | 2003-12-10 | 339 | 5.25d | 0d | 网络管理员 | 8h |
| 341 | 1.3.2.1.4.1.4 | 将所有全局组迁移到目标域 | 2d | 2003-12-11 | 2003-12-12 | 340 | 5.25d | 0d | 网络管理员 | 16h |
| 342 | 1.3.2.1.4.1.5 | 继续管理资源域中的用户和组 | 2d | 2003-12-15 | 2003-12-16 | 341 | 5.25d | 0d | 网络管理员 | 16h |
| 343 | 1.3.2.1.4.2 | **执行迁移** | 9d | 2003-12-17 | 2003-12-29 |  | 5.25d |  |  | 80h |
| 344 | 1.3.2.1.4.2.1 | 运行服务帐户向导 | 1d | 2003-12-17 | 2003-12-17 | 342 | 29.25d |  | 网络管理员 | 8h |
| 345 | 1.3.2.1.4.2.2 | 创建可管理的一定批量的用户(例如，100 个用户) | 2d | 2003-12-17 | 2003-12-18 | 342 | 5.25d | 0d | 网络管理员 | 16h |
| 346 | 1.3.2.1.4.2.3 | **迁移成批用户(使用 SIDHistory 中的 SID)** | 3d | 2003-12-19 | 2003-12-23 |  | 5.25d |  |  | 24h |
| 347 | 1.3.2.1.4.2.3.1 | 启用目标帐户 | 1d | 2003-12-19 | 2003-12-19 | 345 | 5.25d | 0d | 网络管理员 | 8h |
| 348 | 1.3.2.1.4.2.3.2 | 终止源帐户(例如，在 7 天后) | 1d | 2003-12-22 | 2003-12-22 | 347 | 5.25d | 0d | 网络管理员 | 8h |
| 349 | 1.3.2.1.4.2.3.3 | 将新密码通知给用户 | 1d | 2003-12-23 | 2003-12-23 | 348 | 5.25d | 0d | 网络管理员 | 8h |
| 350 | 1.3.2.1.4.2.4 | 迁移本地用户配置文件(如果可用) | 1d | 2003-12-24 | 2003-12-24 | 349 | 5.25d | 0d | 网络管理员 | 8h |
| 351 | 1.3.2.1.4.2.5 | 重新迁移所有全局组 | 1d | 2003-12-25 | 2003-12-25 | 350 | 5.25d | 0d | 网络管理员 | 8h |
| 352 | 1.3.2.1.4.2.6 | 继续对资源域中的全局组成员进行所有更改 | 1d | 2003-12-26 | 2003-12-26 | 351 | 5.25d | 0d | 网络管理员 | 8h |
| 353 | 1.3.2.1.4.2.7 | 对帐户在其中为活动状态的域内的用户帐户进行更改(如“远程访问服务”[RAS] 权限) | 1d | 2003-12-29 | 2003-12-29 | 352 | 5.25d | 0d | 网络管理员 | 8h |
| 354 | 1.3.2.1.4.3 | **清除帐户域** | 3d | 2003-12-30 | 2004-01-01 |  | 5.25d |  |  | 56h |
| 355 | 1.3.2.1.4.3.1 | 在源域中冻结新帐户的创建 | 1d | 2003-12-30 | 2003-12-30 | 353 | 20.25d |  | 网络管理员 | 8h |
| 356 | 1.3.2.1.4.3.2 | 重新迁移所有全局组 | 1d | 2003-12-30 | 2003-12-30 | 353 | 20.25d |  | 网络管理员 | 8h |
| 357 | 1.3.2.1.4.3.3 | 仅开始在目标域中的管理 | 1d | 2003-12-30 | 2003-12-30 | 353 | 5.25d | 0d | 网络管理员 | 8h |
| 358 | 1.3.2.1.4.3.4 | 将源域切换到维护模式 | 1d | 2003-12-31 | 2003-12-31 | 357 | 19.25d |  | 网络管理员 | 8h |
| 359 | 1.3.2.1.4.3.5 | 在整个迁移操作完成之前，保留至少两个域控制器为联机状态 | 1d | 2003-12-31 | 2003-12-31 | 357 | 5.25d | 0d | 网络管理员 | 8h |
| 360 | 1.3.2.1.4.3.6 | 完成后停用域 | 1d | 2004-01-01 | 2004-01-01 | 359 | 18.25d |  | 网络管理员 | 8h |
| 361 | 1.3.2.1.4.3.7 | 制作“被动目录连接器”的备份磁带 | 1d | 2004-01-01 | 2004-01-01 | 359 | 5.25d | 0d | 网络管理员 | 8h |

| ID | WBS | Task | Duration | Start | Finish | Predecessors | Total slack | Free slack | Resources | Work |
| --- | --- | --- | --- | --- | --- | --- | --- | --- | --- | --- |
| 362 | 1.3.2.1.5 | **迁移资源域** | 13d | 2004-01-02 | 2004-01-20 |  | 5.25d |  |  | 112h |
| 363 | 1.3.2.1.5.1 | **准备重建资源域** | 1d | 2004-01-02 | 2004-01-02 |  | 5.25d |  |  | 16h |
| 364 | 1.3.2.1.5.1.1 | 在资源域中创建迁移帐户 | 1d | 2004-01-02 | 2004-01-02 | 361 | 5.25d | 0d | 网络管理员 | 8h |
| 365 | 1.3.2.1.5.1.2 | 确认帐户是域管理员成员 | 1d | 2004-01-02 | 2004-01-02 | 361 | 17.25d |  | 网络管理员 | 8h |
| 366 | 1.3.2.1.5.2 | 创建目标 OU | 2d | 2004-01-05 | 2004-01-06 | 364 | 5.25d | 0d | 网络管理员 | 16h |
| 367 | 1.3.2.1.5.3 | 在资源和目标域之间建立信任关系 | 2d | 2004-01-07 | 2004-01-08 | 366 | 5.25d | 0d | 网络管理员 | 16h |
| 368 | 1.3.2.1.5.4 | 确定并迁移服务帐户 | 2d | 2004-01-09 | 2004-01-12 | 367 | 5.25d | 0d | 网络管理员 | 16h |
| 369 | 1.3.2.1.5.5 | **重建资源域** | 4d | 2004-01-13 | 2004-01-16 |  | 5.25d |  |  | 32h |
| 370 | 1.3.2.1.5.5.1 | 迁移工作站 | 1d | 2004-01-13 | 2004-01-13 | 368 | 5.25d | 0d | 台式计算机管理员 | 8h |
| 371 | 1.3.2.1.5.5.2 | 迁移成员服务器 | 1d | 2004-01-14 | 2004-01-14 | 370 | 5.25d | 0d | 网络管理员 | 8h |
| 372 | 1.3.2.1.5.5.3 | 克隆共享的本地组 | 1d | 2004-01-15 | 2004-01-15 | 371 | 5.25d | 0d | 网络管理员 | 8h |
| 373 | 1.3.2.1.5.5.4 | 迁移域控制器 | 1d | 2004-01-16 | 2004-01-16 | 372 | 5.25d | 0d | 网络管理员 | 8h |
| 374 | 1.3.2.1.5.6 | 停用 Windows NT 4.0 域 | 2d | 2004-01-19 | 2004-01-20 | 373 | 5.25d | 0d | 网络管理员 | 16h |
| 375 | 1.3.2.2 | **从 Windows 2000 域升级** | 15d | 2003-11-21 | 2003-12-11 |  | 33.25d | 28d |  | 120h |
| 376 | 1.3.2.2.1 | 应用适当的 Windows 2000 服务包 | 2d | 2003-11-21 | 2003-11-24 |  | 33.25d | 0d | 网络管理员 | 16h |
| 377 | 1.3.2.2.2 | 检查域的升级兼容性 | 1d | 2003-11-25 | 2003-11-25 | 376 | 33.25d | 0d | 网络管理员 | 8h |
| 378 | 1.3.2.2.3 | 获取所需权限 | 2d | 2003-11-26 | 2003-11-27 | 377 | 33.25d | 0d | 网络管理员 | 16h |
| 379 | 1.3.2.2.4 | **准备架构主机** | 5d | 2003-11-28 | 2003-12-04 |  | 33.25d |  |  | 40h |
| 380 | 1.3.2.2.4.1 | 备份架构主机 | 1d | 2003-11-28 | 2003-11-28 | 378 | 33.25d | 0d | 网络管理员 | 8h |
| 381 | 1.3.2.2.4.2 | 断开架构主机连接 | 1d | 2003-12-01 | 2003-12-01 | 380 | 33.25d | 0d | 网络管理员 | 8h |
| 382 | 1.3.2.2.4.3 | 在架构主机上运行 adprep /forestprep | 1d | 2003-12-02 | 2003-12-02 | 381 | 33.25d | 0d | 网络管理员 | 8h |
| 383 | 1.3.2.2.4.4 | 使用 dcdiag 和其他工具确认成功 | 2d | 2003-12-03 | 2003-12-04 | 382 | 33.25d | 0d | 网络管理员 | 16h |
| 384 | 1.3.2.2.5 | **准备基础结构操作主机** | 3d | 2003-12-05 | 2003-12-09 |  | 33.25d |  |  | 24h |
| 385 | 1.3.2.2.5.1 | 备份基础结构操作主机 | 1d | 2003-12-05 | 2003-12-05 | 383 | 33.25d | 0d | 网络管理员 | 8h |
| 386 | 1.3.2.2.5.2 | 在基础结构操作主机上运行 adprep/domainprep | 1d | 2003-12-08 | 2003-12-08 | 385 | 33.25d | 0d | 网络管理员 | 8h |
| 387 | 1.3.2.2.5.3 | 等待复制完成 | 1d | 2003-12-09 | 2003-12-09 | 386 | 33.25d | 0d | 网络管理员 | 8h |
| 388 | 1.3.2.2.6 | 升级域控制器 | 1d | 2003-12-10 | 2003-12-10 | 387 | 33.25d | 0d | 网络管理员 | 8h |
| 389 | 1.3.2.2.7 | 升级 Active Directory 客户端(Windows 98、Windows 95、Windows NT) | 1d | 2003-12-11 | 2003-12-11 | 388 | 33.25d |  | 网络管理员 | 8h |

| ID | WBS | Task | Type | Duration | Start | Finish | Predecessors | Total slack | Free slack | Resources | Work |
| --- | --- | --- | --- | --- | --- | --- | --- | --- | --- | --- | --- |
| 390 | 1.3.2.3 | **转换到 Windows Server 2003 本机模式** |  | 5d | 2004-01-21 | 2004-01-27 | 321, 375 | 5.25d |  |  | 64h |
| 391 | 1.3.2.3.1 | 确保所有域控制器都在 Windows Server 2003 上 |  | 1d | 2004-01-21 | 2004-01-21 |  | 5.25d | 0d |  |  |
| 392 | 1.3.2.3.2 | 将目录林功能级别升级到 Windows Server 2003 |  | 2d | 2004-01-22 | 2004-01-23 | 391 | 5.25d | 0d | 网络管理员 | 16h |
| 393 | 1.3.2.3.3 | 将域功能级别升级到 Windows Server 2003 |  | 2d | 2004-01-26 | 2004-01-27 | 392 | 5.25d |  | 网络管理员 | 16h |
| 394 | 1.3.2.3.4 | 创建目录林之间的信任 |  | 1d | 2004-01-26 | 2004-01-26 | 392 | 6.25d |  | 网络管理员 | 8h |
| 395 | 1.3.2.3.5 | 配置通用组成员缓存 |  | 1d | 2004-01-26 | 2004-01-26 | 392 | 6.25d |  | 网络管理员 | 8h |
| 396 | 1.3.2.3.6 | 为经常运行的搜索创建已存查询 |  | 2d | 2004-01-26 | 2004-01-27 | 392 | 5.25d |  | 网络管理员 | 16h |
| 397 | 1.3.2.4 | 完成部署生产系统 | milestone | 0d | 2004-01-20 | 2004-01-20 | 374 | 10.25d | 0d |  |  |
| 398 | 1.3.3 | 部署工作完成 | milestone | 0d | 2004-01-20 | 2004-01-20 | 397 | 24.25d |  |  |  |
| 399 | 1.4 | **执行后审查** |  | 14d | 2004-01-28 | 2004-02-16 | 320 | 5.25d |  |  | 704h |
| 400 | 1.4.1 | 执行后监控，邮箱迁移 |  | 2d | 2004-01-28 | 2004-01-29 | 374 | 17.25d |  | 基础结构管理员; 台式计算机管理员; 网络管理员 | 48h |
| 401 | 1.4.2 | 获得用户反馈 |  | 4d | 2004-01-28 | 2004-02-02 | 374 | 5.25d | 0d | 项目经理; 用户教育/培训负责人 | 64h |
| 402 | 1.4.3 | 评估经验教训 |  | 4d | 2004-02-03 | 2004-02-06 | 401 | 5.25d | 0d | 项目经理; 基础结构管理员; 台式计算机管理员; 网络管理员; 测试/质保负责人; 用户教育/培训负责人; 后勤管理负责人; 风险承担者 | 256h |
| 403 | 1.4.4 | 根据需要修改项目 |  | 2d | 2004-02-09 | 2004-02-10 | 402 | 5.25d | 0d | 项目经理; 基础结构管理员; 台式计算机管理员; 网络管理员; 测试/质保负责人; 用户教育/培训负责人; 后勤管理负责人; 风险承担者 | 128h |
| 404 | 1.4.5 | 建立正在进行的基础机构规划小组 |  | 1d | 2004-02-11 | 2004-02-11 | 403 | 5.25d | 0d | 项目经理; 风险承担者 | 16h |
| 405 | 1.4.6 | 共享执行后反馈 |  | 3d | 2004-02-12 | 2004-02-16 | 404 | 5.25d | 0d | 项目经理; 基础结构管理员; 台式计算机管理员; 网络管理员; 测试/质保负责人; 用户教育/培训负责人; 后勤管理负责人; 风险承担者 | 192h |
| 406 | 1.4.7 | 执行后审查工作完毕 | milestone | 0d | 2004-02-16 | 2004-02-16 | 405 | 5.25d | 0d |  |  |
| 407 | 1.5 | 完成 Microsoft Active Directory 部署 | milestone | 0d | 2004-02-16 | 2004-02-16 | 406 | 5.25d |  |  |  |

Notes:
- 399: 这是项目的最后阶段。在此阶段，您可以回顾项目、文档以及学到的经验教训，以便为将来部署项目或执行后指令奠定基础。
- 400: 邮箱、自定义收件人和收件人分发列表将被移动到 Exchange 服务器。 / 公共文件夹内容将被复制到 Exchange 服务器，然后从旧服务器中删除。 / 迁移将按部门进行。新的 Exchange 服务器将使用多个信息存储区，因此建议为每个部门实施信息存储区。
- 404: 应该建立由不同部署资源组成的 Active Directory 规划小组，以便推荐将来的应用程序开发、维护、服务版本和将来的版本。
- 405: 第一个站点执行情况的所有备注都将与其他业务单位的 IT 员工成员共享。 / 必要的话，此时间还允许一定程度的提前。
