# Microsoft Exchange 2000 部署

Schedule from MS Project, 2004-01-01 to 2005-03-25.

## Calendars

- 标准: Mon-Fri 08:00-12:00, 13:00-17:00; Sat-Sun off.

## Resources

| Resource |
| --- |
| 赞助商 |
| 项目经理 |
| 基础结构管理员 |
| 部署管理员 |
| 台式计算机管理员 |
| Intranet/Internet 管理员 |
| 浏览器管理员 |
| 信息管理员 |
| 网络管理员 |
| 测试/质量保证 |
| 用户教育/培训/通讯 |
| 后勤管理人员 |

## Schedule

| ID | WBS | Task | Type | Duration | Start | Finish | Predecessors | Total slack | Resources | Work |
| --- | --- | --- | --- | --- | --- | --- | --- | --- | --- | --- |
| 1 | 1 | **Microsoft Exchange 2000 部署模板** |  | 321.75d | 2004-01-01 | 2005-03-25 |  | 0d |  | 6610h |
| 2 | 1.1 | **构想/范围** |  | 23d | 2004-01-01 | 2004-02-02 |  | 0d |  | 448h |
| 3 | 1.1.1 | 评估 Exchange 2000 功能 |  | 5d | 2004-01-01 | 2004-01-07 |  | 0d | 赞助商; 项目经理 | 80h |
| 4 | 1.1.2 | 评估公司商务目标 |  | 5d | 2004-01-01 | 2004-01-07 |  | 0d | 赞助商; 项目经理 | 80h |
| 5 | 1.1.3 | 确定技术目标 |  | 5d | 2004-01-08 | 2004-01-14 | 3, 4 | 0d | 赞助商; 项目经理 | 80h |
| 6 | 1.1.4 | 阐明初步成本/利润分析 |  | 5d | 2004-01-15 | 2004-01-21 | 5 | 0d | 赞助商; 项目经理 | 80h |
| 7 | 1.1.5 | 确定项目范围(例如，实验室、试生产、国际/地区部署、共存策略) |  | 5d | 2004-01-22 | 2004-01-28 | 6 | 0d | 赞助商; 项目经理 | 80h |
| 8 | 1.1.6 | 确定主要里程碑 |  | 2d | 2004-01-29 | 2004-01-30 | 7 | 0d | 赞助商; 项目经理 | 32h |
| 9 | 1.1.7 | 确保执行所需的赞助/投资 |  | 1d | 2004-02-02 | 2004-02-02 | 8 | 0d | 赞助商; 项目经理 | 16h |
| 10 | 1.1.8 | 构想/项目范围规划完成 | milestone | 0d | 2004-02-02 | 2004-02-02 | 9 | 0d |  |  |
| 11 | 1.2 | **规划** |  | 72.25d | 2004-02-03 | 2004-05-13 |  | 0d |  | 1990h |
| 12 | 1.2.1 | **召集项目组/定义角色** |  | 5.5d | 2004-02-03 | 2004-02-10 |  | 0d |  | 484h |
| 13 | 1.2.1.1 | **主要角色** |  | 0.5d | 2004-02-03 | 2004-02-03 |  | 0d |  | 44h |
| 14 | 1.2.1.1.1 | 确定项目经理 |  | 4h | 2004-02-03 | 2004-02-03 | 10 | 0d | 赞助商 | 4h |
| 15 | 1.2.1.1.2 | 确定基础结构管理员 |  | 4h | 2004-02-03 | 2004-02-03 | 10 | 0d | 项目经理 | 4h |
| 16 | 1.2.1.1.3 | 确定部署管理员 |  | 4h | 2004-02-03 | 2004-02-03 | 10 | 0d | 项目经理 | 4h |
| 17 | 1.2.1.1.4 | 确定台式计算机管理员 |  | 4h | 2004-02-03 | 2004-02-03 | 10 | 0d | 项目经理 | 4h |
| 18 | 1.2.1.1.5 | 确定 Intranet/Internet 管理员 |  | 4h | 2004-02-03 | 2004-02-03 | 10 | 0d | 项目经理 | 4h |
| 19 | 1.2.1.1.6 | 确定浏览器管理员 |  | 4h | 2004-02-03 | 2004-02-03 | 10 | 0d | 项目经理 | 4h |
| 20 | 1.2.1.1.7 | 确定信息管理员 |  | 4h | 2004-02-03 | 2004-02-03 | 10 | 0d | 项目经理 | 4h |
| 21 | 1.2.1.1.8 | 确定网络管理员 |  | 4h | 2004-02-03 | 2004-02-03 | 10 | 0d | 项目经理 | 4h |
| 22 | 1.2.1.1.9 | 确定测试质量安全组 |  | 4h | 2004-02-03 | 2004-02-03 | 10 | 0d | 项目经理 | 4h |
| 23 | 1.2.1.1.10 | 确定用户教育/培训/通讯 |  | 4h | 2004-02-03 | 2004-02-03 | 10 | 0d | 项目经理 | 4h |
| 24 | 1.2.1.1.11 | 确定后勤管理人员 |  | 4h | 2004-02-03 | 2004-02-03 | 10 | 0d | 项目经理 | 4h |
| 25 | 1.2.1.1.12 | 主要角色定义完毕 | milestone | 0d | 2004-02-03 | 2004-02-03 | 14, 15, 16, 17, 18, 19, 20, 21, 22, 23, 24 | 0d |  |  |
| 26 | 1.2.1.2 | 建立子组角色和责任(例如，基础结构、安全、服务器) |  | 5d | 2004-02-03 | 2004-02-10 | 25 | 0d | 项目经理; 基础结构管理员; 部署管理员; 台式计算机管理员; Intranet/Internet 管理员; 浏览器管理员; 信息管理员; 网络管理员; 测试/质量保证; 用户教育/培训/通讯; 后勤管理人员 | 440h |
| 27 | 1.2.1.3 | 召集项目组/角色定义完毕 | milestone | 0d | 2004-02-10 | 2004-02-10 | 26 | 0d |  |  |

Notes:
- 1: 此模板是为了方便企业环境中 Microsoft Exchange 2000 的部署而设计的。 / 该模板的设计是为了将执行组织集中在关键步骤上，这些步骤确保了成功的、经过周密计划的执行。.
- 2: 计划部署的第一步是定义项目目标。在此步骤中，确定您想要获得的特定商务目标以及 Exchange 2000 帮助您获得这些目标的方法。这个策略还将帮助您选择最有用的 Exchange 2000 功能。 / 在您的项目目标中，指定所关注的重要业务事项。包括特殊、短期的目标，例如，在公司季度末将 Exchange 2000 部署于 2,500 台计算机上，以及更为一般的、长期性的目标，例如降低日益增长的电子邮件支持的成本。 / 在进行您的部署规划之前作出这些决定，因为这些决定将影响您的工作内容和工作方式。明确的目标可帮助您按计划工作。 / 在用文档说明您的项目范围时，请指出您的 Exchange 2000 执行将涉及到的区域、功能和环境。

| ID | WBS | Task | Type | Duration | Start | Finish | Predecessors | Total slack | Resources | Work |
| --- | --- | --- | --- | --- | --- | --- | --- | --- | --- | --- |
| 28 | 1.2.2 | **详细描述当前数据处理环境** |  | 10d | 2004-02-10 | 2004-02-24 |  | 0d |  | 720h |
| 29 | 1.2.2.1 | 详细描述商务组织要求 |  | 5d | 2004-02-10 | 2004-02-17 | 27 | 0d | 项目经理 | 40h |
| 30 | 1.2.2.2 | 详细描述地理方面的考虑因素 |  | 5d | 2004-02-10 | 2004-02-17 | 27 | 0d | 基础结构管理员 | 40h |
| 31 | 1.2.2.3 | 详细描述主要商务过程 |  | 5d | 2004-02-10 | 2004-02-17 | 27 | 0d | 项目经理 | 40h |
| 32 | 1.2.2.4 | 详细描述信息体系结构/流程 |  | 5d | 2004-02-10 | 2004-02-17 | 27 | 0d | 基础结构管理员 | 40h |
| 33 | 1.2.2.5 | 详细描述当前信息体系结构 |  | 5d | 2004-02-10 | 2004-02-17 | 27 | 0d | 信息管理员 | 40h |
| 34 | 1.2.2.6 | 详细描述当前协作体系结构 |  | 5d | 2004-02-10 | 2004-02-17 | 27 | 0d | 基础结构管理员 | 40h |
| 35 | 1.2.2.7 | 详细描述应用程序要求 |  | 5d | 2004-02-10 | 2004-02-17 | 27 | 0d | 基础结构管理员; 台式计算机管理员 | 80h |
| 36 | 1.2.2.8 | 详细描述技术体系结构 |  | 5d | 2004-02-10 | 2004-02-17 | 27 | 0d | 基础结构管理员 | 40h |
| 37 | 1.2.2.9 | 详细描述服务器硬件和软件清单 |  | 5d | 2004-02-10 | 2004-02-17 | 27 | 0d | 部署管理员 | 40h |
| 38 | 1.2.2.10 | 详细描述客户端硬件和软件清单 |  | 5d | 2004-02-10 | 2004-02-17 | 27 | 0d | 台式计算机管理员; 网络管理员 | 80h |
| 39 | 1.2.2.11 | 详细描述当前和未来的信息技术标准 |  | 5d | 2004-02-10 | 2004-02-17 | 27 | 0d | 项目经理; 基础结构管理员 | 80h |
| 40 | 1.2.2.12 | 详细描述当前管理/服务传输模型 |  | 5d | 2004-02-10 | 2004-02-17 | 27 | 0d | 网络管理员; 用户教育/培训/通讯 | 80h |
| 41 | 1.2.2.13 | 记录当前数据处理环境 |  | 5d | 2004-02-17 | 2004-02-24 | 29, 30, 31, 32, 33, 34, 35, 36, 37, 38, 39, 40 | 0d | 网络管理员; 用户教育/培训/通讯 | 80h |
| 42 | 1.2.2.14 | 详细描述当前数据处理环境完毕 | milestone | 0d | 2004-02-24 | 2004-02-24 | 41 | 0d |  |  |
| 43 | 1.2.3 | **初步设计目标** |  | 12d | 2004-02-24 | 2004-03-11 |  | 0d |  | 192h |
| 44 | 1.2.3.1 | 将构想/范围映射到当前数据处理环境 |  | 10d | 2004-02-24 | 2004-03-09 | 42 | 0d | 赞助商; 项目经理 | 160h |
| 45 | 1.2.3.2 | 与执行赞助人一起审阅初步设计目标 |  | 2d | 2004-03-09 | 2004-03-11 | 44 | 0d | 赞助商; 项目经理 | 32h |
| 46 | 1.2.3.3 | 初步设计目标确定完毕 | milestone | 0d | 2004-03-11 | 2004-03-11 | 45 | 0d |  |  |
| 47 | 1.2.4 | **建立测试实验室环境** |  | 32.75d | 2004-03-11 | 2004-04-27 |  | 0d |  | 306h |
| 48 | 1.2.4.1 | 审阅当前配置文档并且定义实验室模型 |  | 2d | 2004-03-11 | 2004-03-15 | 46 | 0d | 部署管理员 | 16h |
| 49 | 1.2.4.2 | 选择一个或多个实验室位置 |  | 1d | 2004-03-15 | 2004-03-16 | 48 | 0d | 部署管理员 | 8h |
| 50 | 1.2.4.3 | 确定实验室空间和环境要求 |  | 1d | 2004-03-16 | 2004-03-17 | 49 | 0d | 部署管理员 | 8h |
| 51 | 1.2.4.4 | 确定电源和网络连接要求 |  | 2d | 2004-03-17 | 2004-03-19 | 50 | 0d | 部署管理员 | 16h |
| 52 | 1.2.4.5 | 设计和记录实验室的理想化和实际配置 |  | 2d | 2004-03-19 | 2004-03-23 | 51 | 0d | 部署管理员 | 16h |
| 53 | 1.2.4.6 | 确定硬件要求 |  | 2d | 2004-03-23 | 2004-03-25 | 52 | 0d | 部署管理员 | 16h |
| 54 | 1.2.4.7 | 确定软件要求，包括商务应用软件和工具 |  | 3d | 2004-03-25 | 2004-03-30 | 53 | 0d | 部署管理员 | 24h |
| 55 | 1.2.4.8 | 确定实验室人员 |  | 1d | 2004-03-30 | 2004-03-31 | 54 | 0d | 部署管理员 | 8h |
| 56 | 1.2.4.9 | 确定数据库要求 |  | 1d | 2004-03-31 | 2004-04-01 | 55 | 0d | 部署管理员 | 8h |
| 57 | 1.2.4.10 | 确定布线和网络连接计划 |  | 1d | 2004-04-01 | 2004-04-02 | 56 | 0d | 部署管理员 | 8h |
| 58 | 1.2.4.11 | 获得硬件，包括电缆和软件 |  | 3d | 2004-04-02 | 2004-04-07 | 57 | 0d | 部署管理员 | 24h |
| 59 | 1.2.4.12 | 获得工作区设备(例如，办公桌、椅子、白板、软木板、灯、电话和搁板) |  | 3d | 2004-04-02 | 2004-04-07 | 57 | 0d | 部署管理员 | 24h |
| 60 | 1.2.4.13 | 建立和配置网络 |  | 3d | 2004-04-07 | 2004-04-12 | 58, 59 | 0d | 部署管理员 | 24h |
| 61 | 1.2.4.14 | 测试网络连通性 |  | 1d | 2004-04-12 | 2004-04-13 | 60 | 0d | 部署管理员 | 8h |
| 62 | 1.2.4.15 | 建立和配置服务器 |  | 2d | 2004-04-13 | 2004-04-15 | 61 | 0d | 部署管理员 | 16h |
| 63 | 1.2.4.16 | 安装应用程序 |  | 2d | 2004-04-15 | 2004-04-19 | 62 | 1d | 部署管理员 | 16h |
| 64 | 1.2.4.17 | 安装测试和管理工具 |  | 4h | 2004-04-15 | 2004-04-15 | 62 | 2.5d | 部署管理员 | 4h |
| 65 | 1.2.4.18 | 建立和配置客户机 |  | 2d | 2004-04-15 | 2004-04-19 | 62 | 0d | 部署管理员 | 16h |
| 66 | 1.2.4.19 | 在客户机上安装应用程序 |  | 1d | 2004-04-19 | 2004-04-20 | 65 | 0d | 部署管理员 | 8h |
| 67 | 1.2.4.20 | 测试所有实验室组件 |  | 2d | 2004-04-20 | 2004-04-22 | 63, 64, 66 | 0d | 部署管理员 | 16h |
| 68 | 1.2.4.21 | 指派实验室管理人员 |  | 2h | 2004-04-22 | 2004-04-22 | 67 | 0d | 部署管理员 | 2h |
| 69 | 1.2.4.22 | 定义实验室的改动控制过程 |  | 4h | 2004-04-22 | 2004-04-23 | 68 | 0d | 部署管理员 | 4h |
| 70 | 1.2.4.23 | 创建、测试和记录实验室恢复过程 |  | 2d | 2004-04-23 | 2004-04-27 | 69 | 0d | 部署管理员 | 16h |
| 71 | 1.2.4.24 | 实验室环境建立测试完毕 | milestone | 0d | 2004-04-27 | 2004-04-27 | 70 | 0d |  |  |

| ID | WBS | Task | Type | Duration | Start | Finish | Predecessors | Total slack | Free slack | Resources | Work |
| --- | --- | --- | --- | --- | --- | --- | --- | --- | --- | --- | --- |
| 72 | 1.2.5 | **进行风险评估** |  | 12d | 2004-04-27 | 2004-05-13 |  | 0d |  |  | 112h |
| 73 | 1.2.5.1 | 确定关键的应用程序 |  | 2d | 2004-04-27 | 2004-04-29 | 71 | 0d |  | 项目经理 | 16h |
| 74 | 1.2.5.2 | 确定并分析潜在风险 |  | 4d | 2004-04-29 | 2004-05-05 | 73 | 0d |  | 项目经理 | 32h |
| 75 | 1.2.5.3 | 量化风险的潜在影响 |  | 2d | 2004-05-05 | 2004-05-07 | 74 | 0d |  | 项目经理 | 16h |
| 76 | 1.2.5.4 | 详细描述增加过程 |  | 2d | 2004-05-07 | 2004-05-11 | 75 | 0d |  | 项目经理 | 16h |
| 77 | 1.2.5.5 | 记录风险评估 |  | 2d | 2004-05-11 | 2004-05-13 | 76 | 0d |  | 项目经理; 赞助商 | 32h |
| 78 | 1.2.5.6 | 风险评估完毕 | milestone | 0d | 2004-05-13 | 2004-05-13 | 77 | 0d |  |  |  |
| 79 | 1.2.6 | **定义通讯策略** |  | 13d | 2004-03-11 | 2004-03-30 |  | 31.75d |  |  | 104h |
| 80 | 1.2.6.1 | 定义各个阶段的通讯策略 |  | 3d | 2004-03-11 | 2004-03-16 | 46 | 31.75d | 0d | 用户教育/培训/通讯 | 24h |
| 81 | 1.2.6.2 | 定义通讯目标 |  | 1d | 2004-03-16 | 2004-03-17 | 80 | 31.75d | 0d | 用户教育/培训/通讯 | 8h |
| 82 | 1.2.6.3 | 定义通讯传输机制 |  | 3d | 2004-03-17 | 2004-03-22 | 81 | 31.75d | 0d | 用户教育/培训/通讯 | 24h |
| 83 | 1.2.6.4 | 建立通讯时间表 |  | 4d | 2004-03-22 | 2004-03-26 | 82 | 31.75d | 0d | 用户教育/培训/通讯 | 32h |
| 84 | 1.2.6.5 | 记录通讯策略/标准 |  | 2d | 2004-03-26 | 2004-03-30 | 83 | 31.75d | 0d | 用户教育/培训/通讯 | 16h |
| 85 | 1.2.6.6 | 通讯完毕 | milestone | 0d | 2004-03-30 | 2004-03-30 | 84 | 31.75d |  |  |  |
| 86 | 1.2.7 | **定义教育/培训策略** |  | 9d | 2004-03-11 | 2004-03-24 |  | 35.75d |  |  | 72h |
| 87 | 1.2.7.1 | 为部署人口统计定义教育策略(管理员、技术支持、用户) |  | 2d | 2004-03-11 | 2004-03-15 | 46 | 35.75d | 0d | 用户教育/培训/通讯 | 16h |
| 88 | 1.2.7.2 | 定义教育传输机制 |  | 2d | 2004-03-15 | 2004-03-17 | 87 | 35.75d | 0d | 用户教育/培训/通讯 | 16h |
| 89 | 1.2.7.3 | 按阶段建立教育时间表 |  | 3d | 2004-03-17 | 2004-03-22 | 88 | 35.75d | 0d | 用户教育/培训/通讯 | 24h |
| 90 | 1.2.7.4 | 记录教育策略/标准 |  | 2d | 2004-03-22 | 2004-03-24 | 89 | 35.75d | 0d | 用户教育/培训/通讯 | 16h |
| 91 | 1.2.7.5 | 教育工作完毕 | milestone | 0d | 2004-03-24 | 2004-03-24 | 90 | 35.75d |  |  |  |
| 92 | 1.2.8 | 规划工作完成 | milestone | 0d | 2004-05-13 | 2004-05-13 | 78, 85, 91 | 0d |  |  |  |
| 93 | 1.3 | **开发** |  | 105.5d | 2004-05-13 | 2004-10-07 |  | 0d |  |  | 2352h |
| 94 | 1.3.1 | **确定详细的 Exchange 2000 架构** |  | 3d | 2004-05-13 | 2004-05-18 |  | 0d |  |  | 168h |
| 95 | 1.3.1.1 | **确定 Exchange Server 类型和编号** |  | 3d | 2004-05-13 | 2004-05-18 |  | 0d |  |  | 168h |
| 96 | 1.3.1.1.1 | 确定邮箱服务器 |  | 3d | 2004-05-13 | 2004-05-18 | 92 | 0d |  | 信息管理员 | 24h |
| 97 | 1.3.1.1.2 | 确定公用文件夹服务器 |  | 3d | 2004-05-13 | 2004-05-18 | 92 | 0d |  | 信息管理员 | 24h |
| 98 | 1.3.1.1.3 | 确定连接服务器 |  | 3d | 2004-05-13 | 2004-05-18 | 92 | 0d |  | 信息管理员 | 24h |

Notes:
- 93: 在开发阶段中创建用于希望实现的 Exchange 2000 功能的实际设计方案(有时称为功能说明)。开发阶段就是决定所选功能在产品环境中实际运行方式的时间阶段。 / 当每个部署小组创建了自己的计划，并且与部署小组同步来创建综合的设计说明时，在此阶段中将开始重复的设计和测试过程。 / 对 Exchange 2000 和 Windows 2000 功能的依赖在此阶段中首次显现出来，因此不同的部署专业工作组要进行协作并共享对性能、功能性和各功能的相关性的理解，这一点至关重要。 / 项目计划包含功能说明(各个工作组的混合计划)和时间表。项目计划批准的里程碑是管理层是否许可继续部署的时间点。此阶段的任务可使工作组关注于开发过程中需要注意的地方。

| ID | WBS | Task | Type | Duration | Start | Finish | Predecessors | Total slack | Free slack | Resources | Work |
| --- | --- | --- | --- | --- | --- | --- | --- | --- | --- | --- | --- |
| 99 | 1.3.1.1.4 | **实时协作服务器** |  | 3d | 2004-05-13 | 2004-05-18 |  | 0d |  |  | 96h |
| 100 | 1.3.1.1.4.1 | 确定数据会议服务器 |  | 3d | 2004-05-13 | 2004-05-18 | 92 | 0d |  | 信息管理员 | 24h |
| 101 | 1.3.1.1.4.2 | 确定视频会议服务器 |  | 3d | 2004-05-13 | 2004-05-18 | 92 | 0d |  | 信息管理员 | 24h |
| 102 | 1.3.1.1.4.3 | 确定即时消息服务器 |  | 3d | 2004-05-13 | 2004-05-18 | 92 | 0d |  | 信息管理员 | 24h |
| 103 | 1.3.1.1.4.4 | 确定聊天服务器 |  | 3d | 2004-05-13 | 2004-05-18 | 92 | 0d |  | 信息管理员 | 24h |
| 104 | 1.3.1.2 | 确定 Exchange 服务器类型和编号完成 | milestone | 0d | 2004-05-18 | 2004-05-18 | 96, 97, 98, 100, 101, 102, 103 | 0d |  |  |  |
| 105 | 1.3.2 | 确定不同服务器类型的硬件配置 |  | 5d | 2004-05-18 | 2004-05-25 | 104 | 0d |  | 基础结构管理员 | 40h |
| 106 | 1.3.3 | 确定最优的网络配置/位置 |  | 5d | 2004-05-25 | 2004-06-01 | 105 | 0d |  | 基础结构管理员 | 40h |
| 107 | 1.3.4 | 确定详细的 Exchange 2000 架构完成 | milestone | 0d | 2004-06-01 | 2004-06-01 | 106 | 0d |  |  |  |
| 108 | 1.3.5 | **评估 Exchange 迁移策略** |  | 34d | 2004-06-01 | 2004-07-19 |  | 60.5d |  |  | 592h |
| 109 | 1.3.5.1 | 确定迁移标志 |  | 1d | 2004-06-01 | 2004-06-02 | 107 | 60.5d | 0d | 部署管理员; 信息管理员 | 16h |
| 110 | 1.3.5.2 | 确定支持的升级路径 |  | 2d | 2004-06-02 | 2004-06-04 | 109 | 60.5d | 0d | 部署管理员; 信息管理员 | 32h |
| 111 | 1.3.5.3 | 检查现有域结构 |  | 2d | 2004-06-04 | 2004-06-08 | 110 | 60.5d | 0d | 部署管理员; 信息管理员 | 32h |
| 112 | 1.3.5.4 | 检查 Exchange 站点结构 |  | 1d | 2004-06-08 | 2004-06-09 | 111 | 60.5d | 0d | 部署管理员; 信息管理员 | 16h |
| 113 | 1.3.5.5 | 确定 Windows 2000/Exchange 2000 的架构修改方案 |  | 1d | 2004-06-09 | 2004-06-10 | 112 | 60.5d | 0d | 部署管理员; 信息管理员 | 16h |
| 114 | 1.3.5.6 | **混合环境考虑事项** |  | 13d | 2004-06-10 | 2004-06-29 |  | 60.5d |  |  | 168h |
| 115 | 1.3.5.6.1 | 评估活动目录连接器 |  | 1d | 2004-06-10 | 2004-06-11 | 113 | 61.5d | 0d | 基础结构管理员; 部署管理员; 信息管理员 | 24h |
| 116 | 1.3.5.6.2 | 评估在混合环境中的路由 |  | 1d | 2004-06-11 | 2004-06-14 | 115 | 61.5d | 0d | 部署管理员; 信息管理员; 基础结构管理员 | 24h |
| 117 | 1.3.5.6.3 | 混合环境考虑事项完成 | milestone | 0d | 2004-06-14 | 2004-06-14 | 116 | 61.5d | 1d |  |  |
| 118 | 1.3.5.6.4 | **评估 Active Directory 与 Exchange 5.5 同步** |  | 13d | 2004-06-10 | 2004-06-29 |  | 60.5d |  |  | 120h |
| 119 | 1.3.5.6.4.1 | 检查现有域结构和 Exchange 站点拓扑 |  | 1d | 2004-06-10 | 2004-06-11 | 113 | 60.5d | 0d | 信息管理员 | 8h |
| 120 | 1.3.5.6.4.2 | 为 Active Directory 部署检查网络 |  | 1d | 2004-06-11 | 2004-06-14 | 119 | 60.5d | 0d | 基础结构管理员 | 8h |
| 121 | 1.3.5.6.4.3 | 考虑特殊的网络需求 |  | 1d | 2004-06-14 | 2004-06-15 | 120 | 60.5d | 0d | 基础结构管理员 | 8h |
| 122 | 1.3.5.6.4.4 | **确定要管理哪个目录服务中的对象** |  | 2d | 2004-06-15 | 2004-06-17 |  | 60.5d |  |  | 32h |
| 123 | 1.3.5.6.4.4.1 | 评估 Active Directory 中对象的管理 |  | 2d | 2004-06-15 | 2004-06-17 | 117, 121 | 60.5d | 0d | 基础结构管理员 | 16h |
| 124 | 1.3.5.6.4.4.2 | 评估 Exchange Server 5.5 目录服务中对象的管理 |  | 2d | 2004-06-15 | 2004-06-17 | 121 | 60.5d | 0d | 基础结构管理员 | 16h |
| 125 | 1.3.5.6.4.5 | 定义用于目录同步的对象 |  | 2d | 2004-06-17 | 2004-06-21 | 123, 124 | 60.5d | 0d | 基础结构管理员 | 16h |
| 126 | 1.3.5.6.4.6 | 用 Windows 2000 组织单位(OU)映射 Exchange 容器 |  | 1d | 2004-06-21 | 2004-06-22 | 125 | 60.5d | 0d | 基础结构管理员 | 8h |
| 127 | 1.3.5.6.4.7 | 设计连接许可协议 |  | 2d | 2004-06-22 | 2004-06-24 | 126 | 60.5d | 0d | 基础结构管理员 | 16h |
| 128 | 1.3.5.6.4.8 | 记录 ADC 连接计划策略/标准 |  | 3d | 2004-06-24 | 2004-06-29 | 127 | 60.5d | 0d | 基础结构管理员 | 24h |
| 129 | 1.3.5.6.4.9 | Active Directory 与 Exchange 5.5 一起同步完毕 | milestone | 0d | 2004-06-29 | 2004-06-29 | 128 | 60.5d | 0d |  |  |

| ID | WBS | Task | Type | Duration | Start | Finish | Predecessors | Total slack | Free slack | Resources | Work |
| --- | --- | --- | --- | --- | --- | --- | --- | --- | --- | --- | --- |
| 130 | 1.3.5.7 | **确定共存策略** |  | 14d | 2004-06-29 | 2004-07-19 |  | 60.5d |  |  | 240h |
| 131 | 1.3.5.7.1 | 确定公司内部的互操作性问题(例如，支持的操作系统、拓扑、协议) |  | 3d | 2004-06-29 | 2004-07-02 | 129 | 60.5d | 0d | 基础结构管理员; 网络管理员 | 48h |
| 132 | 1.3.5.7.2 | 确定与合作伙伴的互操作性问题(例如，拓扑、协议) |  | 3d | 2004-07-02 | 2004-07-07 | 131 | 60.5d | 0d | 基础结构管理员; 网络管理员 | 48h |
| 133 | 1.3.5.7.3 | 确定在 Exchange 2000/Exchange 5.5 混合环境和低级别 NT 4.0 域中的互操作性 |  | 5d | 2004-07-07 | 2004-07-14 | 132 | 60.5d | 0d | 基础结构管理员; 网络管理员 | 80h |
| 134 | 1.3.5.7.4 | **确定升级 Exchange 5.5 升级方案** |  | 3d | 2004-07-14 | 2004-07-19 | 133 | 60.5d |  |  | 24h |
| 135 | 1.3.5.7.4.1 | 确定适当位置的服务器升级 |  | 1d | 2004-07-14 | 2004-07-15 | 129 | 60.5d | 0d | 部署管理员 | 8h |
| 136 | 1.3.5.7.4.2 | 移动邮箱升级 |  | 1d | 2004-07-15 | 2004-07-16 | 135 | 179.5d | 0d | 部署管理员 | 8h |
| 137 | 1.3.5.7.4.3 | 合并服务器 |  | 1d | 2004-07-16 | 2004-07-19 | 136 | 179.5d | 0d | 部署管理员 | 8h |
| 138 | 1.3.5.7.4.4 | 确定升级 Exchange 5.5 升级方案完成 | milestone | 0d | 2004-07-19 | 2004-07-19 | 137 | 179.5d |  |  |  |
| 139 | 1.3.5.7.5 | **确定互操作性方案** |  | 5d | 2004-06-29 | 2004-07-06 |  | 67.5d |  |  | 40h |
| 140 | 1.3.5.7.5.1 | Exchange 2000 位于 Exchange 5.5 不同的组织中 |  | 1d | 2004-06-29 | 2004-06-30 | 129 | 67.5d | 0d | 部署管理员 | 8h |
| 141 | 1.3.5.7.5.2 | Exchange 2000 与 Exchange 5.5 位于相同的组织中 |  | 1d | 2004-06-30 | 2004-07-01 | 140 | 67.5d | 0d | 部署管理员 | 8h |
| 142 | 1.3.5.7.5.3 | **Exchange 2000 位于相同的 Exchange 5.5 站点中** |  | 2d | 2004-07-01 | 2004-07-05 |  | 67.5d |  |  | 16h |
| 143 | 1.3.5.7.5.3.1 | Exchange 2000 消息位于 Exchange 5.5 站点中 |  | 1d | 2004-07-01 | 2004-07-02 | 141 | 67.5d | 0d | 部署管理员 | 8h |
| 144 | 1.3.5.7.5.3.2 | Exchange 2000 目录位于 Exchange 5.5 站点中 |  | 1d | 2004-07-02 | 2004-07-05 | 143 | 67.5d | 0d | 部署管理员 | 8h |
| 145 | 1.3.5.7.5.4 | Exchange 2000 位于多个 Exchange 5.5 站点中 |  | 1d | 2004-07-05 | 2004-07-06 | 144 | 67.5d | 7d | 部署管理员 | 8h |
| 146 | 1.3.5.7.6 | 共存策略工作确定完毕 | milestone | 0d | 2004-07-15 | 2004-07-15 | 131, 135, 145 | 60.5d | 0d |  |  |
| 147 | 1.3.5.8 | **确定 Exchange 2000 连接器策略** |  | 3d | 2004-06-01 | 2004-06-04 |  | 88.5d |  |  | 56h |
| 148 | 1.3.5.8.1 | 连接器迁移考虑事项 |  | 1d | 2004-06-01 | 2004-06-02 | 107 | 88.5d | 0d | 部署管理员 | 8h |
| 149 | 1.3.5.8.2 | **邮件系统连接器** |  | 1d | 2004-06-02 | 2004-06-03 |  | 88.5d |  |  | 32h |
| 150 | 1.3.5.8.2.1 | 确定 Exchange Lotus Notes 连接器 |  | 1d | 2004-06-02 | 2004-06-03 | 148 | 88.5d | 0d | 部署管理员 | 8h |
| 151 | 1.3.5.8.2.2 | 确定 Exchange MSMail 连接器 |  | 1d | 2004-06-02 | 2004-06-03 | 148 | 88.5d | 0d | 部署管理员 | 8h |
| 152 | 1.3.5.8.2.3 | 确定 Exchange Lotus cc:Mail 连接器 |  | 1d | 2004-06-02 | 2004-06-03 | 148 | 88.5d | 0d | 部署管理员 | 8h |
| 153 | 1.3.5.8.2.4 | 确定 Exchange Novell GroupWise 连接器 |  | 1d | 2004-06-02 | 2004-06-03 | 148 | 88.5d | 0d | 部署管理员 | 8h |
| 154 | 1.3.5.8.2.5 | 邮件系统连接器完成 | milestone | 0d | 2004-06-03 | 2004-06-03 | 150, 151, 152, 153 | 88.5d | 0d |  |  |

| ID | WBS | Task | Type | Duration | Start | Finish | Predecessors | Total slack | Free slack | Resources | Work |
| --- | --- | --- | --- | --- | --- | --- | --- | --- | --- | --- | --- |
| 155 | 1.3.5.8.3 | **遗留连接器策略** |  | 1d | 2004-06-03 | 2004-06-04 |  | 88.5d |  |  | 16h |
| 156 | 1.3.5.8.3.1 | Exchange-profs |  | 1d | 2004-06-03 | 2004-06-04 | 154 | 88.5d | 0d | 部署管理员 | 8h |
| 157 | 1.3.5.8.3.2 | Exchange-SNADS |  | 1d | 2004-06-03 | 2004-06-04 | 154 | 88.5d | 0d | 部署管理员 | 8h |
| 158 | 1.3.5.8.3.3 | 遗留连接器策略完成 | milestone | 0d | 2004-06-04 | 2004-06-04 | 156, 157 | 88.5d | 0d |  |  |
| 159 | 1.3.5.9 | 确定组织间复制和目录同步考虑事项 |  | 1d | 2004-06-04 | 2004-06-07 | 158 | 88.5d | 28d | 部署管理员; 基础结构管理员 | 16h |
| 160 | 1.3.5.10 | 评估 Exchange 迁移策略完成 | milestone | 0d | 2004-07-15 | 2004-07-15 | 146, 159 | 60.5d |  |  |  |
| 161 | 1.3.6 | **客户端策略、标准和管理** |  | 29d | 2004-06-01 | 2004-07-12 |  | 0d |  |  | 288h |
| 162 | 1.3.6.1 | 定义客户端策略(例如 Outlook、OWA 等) |  | 2d | 2004-06-01 | 2004-06-03 | 107 | 0d |  | 台式计算机管理员 | 16h |
| 163 | 1.3.6.2 | 定义基于作业功能的客户端应用程序需求 |  | 3d | 2004-06-03 | 2004-06-08 | 162 | 0d |  | 台式计算机管理员 | 24h |
| 164 | 1.3.6.3 | 定义基于作业功能的客户端配置限制 |  | 3d | 2004-06-08 | 2004-06-11 | 163 | 0d |  | 台式计算机管理员 | 24h |
| 165 | 1.3.6.4 | 配置批准的客户端硬件(便携式和台式计算机) |  | 2d | 2004-06-11 | 2004-06-15 | 164 | 0d |  | 台式计算机管理员 | 16h |
| 166 | 1.3.6.5 | 配置基本的 Outlook 2000/Outlook Web Access 用户界面选项 |  | 2d | 2004-06-15 | 2004-06-17 | 165 | 0d |  | 台式计算机管理员 | 16h |
| 167 | 1.3.6.6 | 确定多语言选项 |  | 4h | 2004-06-17 | 2004-06-17 | 166 | 0d |  | 台式计算机管理员 | 4h |
| 168 | 1.3.6.7 | 确定辅助功能选项 |  | 4h | 2004-06-17 | 2004-06-18 | 167 | 0d |  | 台式计算机管理员 | 4h |
| 169 | 1.3.6.8 | 配置基于客户端需求和管理原则的应用程序 |  | 1d | 2004-06-18 | 2004-06-21 | 168 | 0d |  | 台式计算机管理员 | 8h |
| 170 | 1.3.6.9 | 记录客户端策略/标准 |  | 3d | 2004-06-21 | 2004-06-24 | 169 | 0d |  | 台式计算机管理员 | 24h |
| 171 | 1.3.6.10 | **客户端更改配置策略** |  | 12d | 2004-06-24 | 2004-07-12 |  | 0d |  |  | 152h |
| 172 | 1.3.6.10.1 | 定义用户和组织更改以及配置管理需求 |  | 2d | 2004-06-24 | 2004-06-28 | 170 | 0d |  | 台式计算机管理员 | 16h |
| 173 | 1.3.6.10.2 | 评估并选择所需的 Exchange 2000 更改和配置管理功能 |  | 3d | 2004-06-28 | 2004-07-01 | 172 | 0d |  | 台式计算机管理员 | 24h |
| 174 | 1.3.6.10.3 | 评估用于软件分发的其他应用程序(例如， SMS、Tivoli) |  | 3d | 2004-07-01 | 2004-07-06 | 173 | 0d |  | 台式计算机管理员; 网络管理员 | 48h |
| 175 | 1.3.6.10.4 | 为用户数据管理配置服务器共享和组策略 |  | 2d | 2004-07-06 | 2004-07-08 | 174 | 0d |  | 台式计算机管理员; 网络管理员 | 32h |
| 176 | 1.3.6.10.5 | 为用户设置管理配置服务器共享和组策略 |  | 2d | 2004-07-08 | 2004-07-12 | 175 | 0d |  | 台式计算机管理员; 网络管理员 | 32h |
| 177 | 1.3.6.10.6 | 客户端更改配置策略完成 | milestone | 0d | 2004-07-12 | 2004-07-12 | 176 | 0d |  |  |  |
| 178 | 1.3.6.11 | 客户端策略、标准和管理确定完毕 | milestone | 0d | 2004-07-12 | 2004-07-12 | 177 | 0d |  |  |  |

| ID | WBS | Task | Type | Duration | Start | Finish | Predecessors | Total slack | Free slack | Resources | Work |
| --- | --- | --- | --- | --- | --- | --- | --- | --- | --- | --- | --- |
| 179 | 1.3.7 | **安全方面应考虑的因素** |  | 36d | 2004-07-12 | 2004-08-31 |  | 27.5d |  |  | 312h |
| 180 | 1.3.7.1 | **操作安全性** |  | 31d | 2004-07-12 | 2004-08-24 |  | 27.5d |  |  | 248h |
| 181 | 1.3.7.1.1 | 确定您的架构中的安全漏洞 |  | 5d | 2004-07-12 | 2004-07-19 | 178 | 27.5d | 0d | 基础结构管理员 | 40h |
| 182 | 1.3.7.1.2 | 估计可以确认的安全风险的解决方案 |  | 3d | 2004-07-19 | 2004-07-22 | 181 | 27.5d | 0d | 基础结构管理员 | 24h |
| 183 | 1.3.7.1.3 | 决定用户团体需要将强身份验证用于交互式或远程访问登录的部分 |  | 1d | 2004-07-22 | 2004-07-23 | 182 | 27.5d | 0d | 基础结构管理员 | 8h |
| 184 | 1.3.7.1.4 | 定义启用远程访问服务的策略 |  | 2d | 2004-07-23 | 2004-07-27 | 183 | 27.5d | 0d | 基础结构管理员 | 16h |
| 185 | 1.3.7.1.5 | 制定关于远程访问过程，包括连接方法的过程/通讯 |  | 2d | 2004-07-27 | 2004-07-29 | 184 | 27.5d | 0d | 基础结构管理员 | 16h |
| 186 | 1.3.7.1.6 | 为网络上不同类别的系统确定本地安全性策略要求 |  | 3d | 2004-07-29 | 2004-08-03 | 185 | 27.5d | 0d | 基础结构管理员 | 24h |
| 187 | 1.3.7.1.7 | 制定测试计划以便验证常规的商务应用程序在正确配置的安全系统中是否正常运行 |  | 5d | 2004-08-03 | 2004-08-10 | 186 | 27.5d | 0d | 基础结构管理员 | 40h |
| 188 | 1.3.7.1.8 | 定义所需要的其他应用程序，这些程序将提供增强的安全功能以满足组织的安全目标 |  | 1d | 2004-08-10 | 2004-08-11 | 187 | 27.5d | 0d | 基础结构管理员 | 8h |
| 189 | 1.3.7.1.9 | 说明确保管理员帐户和管理控制台安全的策略 |  | 1d | 2004-08-11 | 2004-08-12 | 188 | 27.5d | 0d | 基础结构管理员 | 8h |
| 190 | 1.3.7.1.10 | 确定计划授权管理员控制特定任务的条件 |  | 1d | 2004-08-12 | 2004-08-13 | 189 | 27.5d | 0d | 基础结构管理员 | 8h |
| 191 | 1.3.7.1.11 | 确定关于审核的策略，包括工作人员 |  | 2d | 2004-08-13 | 2004-08-17 | 190 | 27.5d | 0d | 基础结构管理员 | 16h |
| 192 | 1.3.7.1.12 | 记录安全策略/标准 |  | 5d | 2004-08-17 | 2004-08-24 | 191 | 27.5d | 0d | 基础结构管理员 | 40h |
| 193 | 1.3.7.1.13 | 操作安全性完成 | milestone | 0d | 2004-08-24 | 2004-08-24 | 192 | 27.5d | 0d |  |  |
| 194 | 1.3.7.2 | **电子邮件安全** |  | 5d | 2004-08-24 | 2004-08-31 |  | 27.5d |  |  | 64h |
| 195 | 1.3.7.2.1 | **基本安全类型** |  | 5d | 2004-08-24 | 2004-08-31 |  | 27.5d |  |  | 40h |
| 196 | 1.3.7.2.1.1 | 考虑 S/MIME 和 PGP |  | 1d | 2004-08-24 | 2004-08-25 | 178, 193 | 27.5d | 0d | 基础结构管理员 | 8h |
| 197 | 1.3.7.2.1.2 | 考虑消息正文加密 |  | 1d | 2004-08-25 | 2004-08-26 | 196 | 27.5d | 0d | 基础结构管理员 | 8h |
| 198 | 1.3.7.2.1.3 | 考虑数字签名 |  | 1d | 2004-08-26 | 2004-08-27 | 197 | 27.5d | 0d | 基础结构管理员 | 8h |
| 199 | 1.3.7.2.1.4 | 考虑主要的管理服务 |  | 1d | 2004-08-27 | 2004-08-30 | 198 | 27.5d | 0d | 基础结构管理员 | 8h |
| 200 | 1.3.7.2.1.5 | 考虑验证服务器 |  | 1d | 2004-08-30 | 2004-08-31 | 199 | 27.5d | 0d | 基础结构管理员 | 8h |
| 201 | 1.3.7.2.1.6 | 基本安全类型完成 | milestone | 0d | 2004-08-31 | 2004-08-31 | 200 | 27.5d | 0d |  |  |
| 202 | 1.3.7.2.2 | **安全规划** |  | 3d | 2004-08-24 | 2004-08-27 |  | 29.5d |  |  | 24h |
| 203 | 1.3.7.2.2.1 | 考虑公司内事项 |  | 1d | 2004-08-24 | 2004-08-25 | 193 | 29.5d | 0d | 基础结构管理员 | 8h |
| 204 | 1.3.7.2.2.2 | 考虑公司间事项 |  | 1d | 2004-08-25 | 2004-08-26 | 203 | 29.5d | 0d | 基础结构管理员 | 8h |
| 205 | 1.3.7.2.2.3 | 确定可信的第三方 |  | 1d | 2004-08-26 | 2004-08-27 | 204 | 29.5d | 0d | 基础结构管理员 | 8h |
| 206 | 1.3.7.2.2.4 | 安全规划完成 | milestone | 0d | 2004-08-27 | 2004-08-27 | 205 | 29.5d | 2d |  |  |
| 207 | 1.3.7.2.3 | 安全方面的考虑因素确定完毕 | milestone | 0d | 2004-08-31 | 2004-08-31 | 201, 206 | 27.5d |  |  |  |

Notes:
- 186: 系统类别的示例有桌面系统、文件和打印服务器以及电子邮件服务器。 / 定义适于每个类别的组策略安全性设置。

| ID | WBS | Task | Type | Duration | Start | Finish | Predecessors | Total slack | Free slack | Resources | Work |
| --- | --- | --- | --- | --- | --- | --- | --- | --- | --- | --- | --- |
| 208 | 1.3.8 | **防病毒考虑事项** |  | 1d | 2004-07-12 | 2004-07-13 |  | 62.5d |  |  | 48h |
| 209 | 1.3.8.1 | 确定中枢基础结构的防病毒策略 |  | 1d | 2004-07-12 | 2004-07-13 | 178 | 62.5d | 0d | 基础结构管理员; 信息管理员 | 16h |
| 210 | 1.3.8.2 | 确定本地服务器的防病毒策略 |  | 1d | 2004-07-12 | 2004-07-13 | 178 | 62.5d | 0d | 基础结构管理员; 信息管理员 | 16h |
| 211 | 1.3.8.3 | 确定台式计算机的防病毒策略 |  | 1d | 2004-07-12 | 2004-07-13 | 178 | 62.5d | 0d | 基础结构管理员; 信息管理员 | 16h |
| 212 | 1.3.8.4 | 防病毒考虑事项完成 | milestone | 0d | 2004-07-13 | 2004-07-13 | 209, 210, 211 | 62.5d |  |  |  |
| 213 | 1.3.9 | **与 Exchange 2000 的邮件功能应用程序兼容性** |  | 37.5d | 2004-07-12 | 2004-09-01 |  | 0d |  |  | 360h |
| 214 | 1.3.9.1 | 审阅详细的应用程序清单文档 |  | 2d | 2004-07-12 | 2004-07-14 | 178 | 0d |  | 台式计算机管理员 | 16h |
| 215 | 1.3.9.2 | 请考虑减少使用的应用程序数量并制定桌面标准 |  | 5d | 2004-07-14 | 2004-07-21 | 214 | 0d |  | 台式计算机管理员 | 40h |
| 216 | 1.3.9.3 | 开发用于区分应用程序优先次序的系统 |  | 2d | 2004-07-21 | 2004-07-23 | 215 | 0d |  | 台式计算机管理员 | 16h |
| 217 | 1.3.9.4 | 按照应用程序执行商务的关键程度区分其优先次序 |  | 1d | 2004-07-23 | 2004-07-26 | 216 | 0d |  | 台式计算机管理员 | 8h |
| 218 | 1.3.9.5 | 编写测试计划，包含测试方法、实验室和测试资源需求，以及计划安排 |  | 4d | 2004-07-26 | 2004-07-30 | 217 | 0d |  | 台式计算机管理员 | 32h |
| 219 | 1.3.9.6 | 开发用于捕获和报告测试结果的测试跟踪系统 |  | 1d | 2004-07-30 | 2004-08-02 | 218 | 0d |  | 台式计算机管理员 | 8h |
| 220 | 1.3.9.7 | 计划测试事件 |  | 5d | 2004-08-02 | 2004-08-09 | 219 | 0d |  | 台式计算机管理员 | 40h |
| 221 | 1.3.9.8 | 测试应用程序并记录结果 |  | 10d | 2004-08-09 | 2004-08-23 | 220 | 0d |  | 测试/质量保证 | 80h |
| 222 | 1.3.9.9 | 报告测试进度 |  | 10d | 2004-08-11 | 2004-08-25 | 221FS-7.5% | 0d |  | 测试/质量保证 | 80h |
| 223 | 1.3.9.10 | 解决应用程序的不兼容性 |  | 5d | 2004-08-25 | 2004-09-01 | 222 | 0d |  | 台式计算机管理员 | 40h |
| 224 | 1.3.9.11 | 与 Exchange 2000 的应用程序兼容性完成 | milestone | 0d | 2004-09-01 | 2004-09-01 | 223 | 0d |  |  |  |
| 225 | 1.3.10 | **终端服务** |  | 13d | 2004-07-12 | 2004-07-29 |  | 24.5d |  |  | 208h |
| 226 | 1.3.10.1 | 确定终端服务如何利于商务环境 |  | 2d | 2004-07-12 | 2004-07-14 | 178 | 24.5d | 0d | 基础结构管理员; 部署管理员 | 32h |
| 227 | 1.3.10.2 | 确定许可证申请 |  | 1d | 2004-07-14 | 2004-07-15 | 226 | 24.5d | 0d | 基础结构管理员; 部署管理员 | 16h |
| 228 | 1.3.10.3 | 记录现有数据处理环境 |  | 1d | 2004-07-15 | 2004-07-16 | 227 | 24.5d | 0d | 基础结构管理员; 部署管理员 | 16h |
| 229 | 1.3.10.4 | 制定实现终端服务(包括联网、安全以及域结构)的计划 |  | 3d | 2004-07-16 | 2004-07-21 | 228 | 24.5d | 0d | 基础结构管理员; 部署管理员 | 48h |
| 230 | 1.3.10.5 | 建立服务器部署(包括 CPU、存储等)的原则和标准 |  | 1d | 2004-07-21 | 2004-07-22 | 229 | 24.5d | 0d | 基础结构管理员; 部署管理员 | 16h |
| 231 | 1.3.10.6 | 记录详细的终端服务策略/标准 |  | 5d | 2004-07-22 | 2004-07-29 | 230 | 24.5d | 0d | 基础结构管理员; 部署管理员 | 80h |
| 232 | 1.3.10.7 | 终端服务完成 | milestone | 0d | 2004-07-29 | 2004-07-29 | 231 | 24.5d |  |  |  |

| ID | WBS | Task | Type | Duration | Start | Finish | Predecessors | Total slack | Free slack | Resources | Work |
| --- | --- | --- | --- | --- | --- | --- | --- | --- | --- | --- | --- |
| 233 | 1.3.11 | **基础结构更改配置策略** |  | 8d | 2004-09-01 | 2004-09-13 |  | 0d |  |  | 64h |
| 234 | 1.3.11.1 | 定义用户和组织更改以及配置管理需求 |  | 2d | 2004-09-01 | 2004-09-03 | 224, 232 | 0d |  | 基础结构管理员 | 16h |
| 235 | 1.3.11.2 | 评估并选择所需的 Exchange 2000 更改和配置管理功能 |  | 3d | 2004-09-03 | 2004-09-08 | 234 | 0d |  | 基础结构管理员 | 24h |
| 236 | 1.3.11.3 | 评估用于软件分发的其他应用程序(例如， SMS、Tivoli) |  | 3d | 2004-09-08 | 2004-09-13 | 235 | 0d |  | 基础结构管理员 | 24h |
| 237 | 1.3.11.4 | 基础结构更改配置策略完成 | milestone | 0d | 2004-09-13 | 2004-09-13 | 236 | 0d |  |  |  |
| 238 | 1.3.12 | **补救风险评估** |  | 7d | 2004-09-13 | 2004-09-22 |  | 0d |  |  | 56h |
| 239 | 1.3.12.1 | 审阅风险评估文档 |  | 1d | 2004-09-13 | 2004-09-14 | 237 | 0d |  | 项目经理 | 8h |
| 240 | 1.3.12.2 | 确定解决方案 |  | 3d | 2004-09-14 | 2004-09-17 | 239 | 0d |  | 项目经理 | 24h |
| 241 | 1.3.12.3 | 传达到项目赞助者、高级管理以及项目成员 |  | 1d | 2004-09-17 | 2004-09-20 | 240 | 0d |  | 项目经理 | 8h |
| 242 | 1.3.12.4 | 将风险作为日常项目管理的一部分进行评估 |  | 2d | 2004-09-20 | 2004-09-22 | 241 | 0d |  | 项目经理 | 16h |
| 243 | 1.3.12.5 | 补救风险评估完成 | milestone | 0d | 2004-09-22 | 2004-09-22 | 242 | 0d |  |  |  |
| 244 | 1.3.13 | **制定通讯工作** |  | 11d | 2004-09-22 | 2004-10-07 |  | 0d |  |  | 96h |
| 245 | 1.3.13.1 | 审阅通讯策略/标准 |  | 3d | 2004-09-22 | 2004-09-27 | 243 | 0d |  | 用户教育/培训/通讯 | 24h |
| 246 | 1.3.13.2 | 制定通讯材料 |  | 5d | 2004-09-27 | 2004-10-04 | 245 | 0d |  | 用户教育/培训/通讯 | 40h |
| 247 | 1.3.13.3 | 审阅通讯材料 |  | 2d | 2004-10-04 | 2004-10-06 | 246 | 0d |  | 用户教育/培训/通讯 | 16h |
| 248 | 1.3.13.4 | 批准通讯策略和材料 |  | 1d | 2004-10-06 | 2004-10-07 | 247 | 0d |  | 用户教育/培训/通讯; 项目经理 | 16h |
| 249 | 1.3.13.5 | 通讯完毕 | milestone | 0d | 2004-10-07 | 2004-10-07 | 248 | 0d |  |  |  |
| 250 | 1.3.14 | **制定教育/培训** |  | 9d | 2004-09-22 | 2004-10-05 |  | 2d |  |  | 80h |
| 251 | 1.3.14.1 | 审阅培训策略/标准 |  | 1d | 2004-09-22 | 2004-09-23 | 243 | 2d | 0d | 用户教育/培训/通讯 | 8h |
| 252 | 1.3.14.2 | 制定/获得培训材料 |  | 5d | 2004-09-23 | 2004-09-30 | 251 | 2d | 0d | 用户教育/培训/通讯 | 40h |
| 253 | 1.3.14.3 | 审阅教育材料 |  | 2d | 2004-09-30 | 2004-10-04 | 252 | 2d | 0d | 用户教育/培训/通讯 | 16h |
| 254 | 1.3.14.4 | 批准教育策略和材料 |  | 1d | 2004-10-04 | 2004-10-05 | 253 | 2d | 0d | 用户教育/培训/通讯; 项目经理 | 16h |
| 255 | 1.3.14.5 | 制定培训工作完成 | milestone | 0d | 2004-10-05 | 2004-10-05 | 254 | 2d |  |  |  |
| 256 | 1.3.15 | 开发工作完毕 | milestone | 0d | 2004-10-07 | 2004-10-07 | 160, 178, 207, 212, 232, 249, 255 | 0d |  |  |  |

| ID | WBS | Task | Type | Duration | Start | Finish | Predecessors | Total slack | Resources | Work |
| --- | --- | --- | --- | --- | --- | --- | --- | --- | --- | --- |
| 257 | 1.4 | **概念的验证(POC)** |  | 35.5d | 2004-10-07 | 2004-11-26 |  | 0d |  | 556h |
| 258 | 1.4.1 | **POC 准备** |  | 8.5d | 2004-10-07 | 2004-10-20 |  | 0d |  | 260h |
| 259 | 1.4.1.1 | 准备基于开发/设计解决方案的测试计划和清单 |  | 3d | 2004-10-07 | 2004-10-12 | 256 | 0d | 测试/质量保证 | 24h |
| 260 | 1.4.1.2 | 记录功能和组件以便测试 |  | 2d | 2004-10-12 | 2004-10-14 | 259 | 0d | 测试/质量保证 | 16h |
| 261 | 1.4.1.3 | 保护测试人员的安全 |  | 4h | 2004-10-14 | 2004-10-15 | 260 | 0d | 测试/质量保证 | 4h |
| 262 | 1.4.1.4 | **确保测试实验室环境模拟建议的环境** |  | 3d | 2004-10-15 | 2004-10-20 |  | 0d |  | 216h |
| 263 | 1.4.1.4.1 | 准备服务器硬件和驱动程序 |  | 2d | 2004-10-15 | 2004-10-19 | 71, 256, 261 | 1d | 测试/质量保证 | 16h |
| 264 | 1.4.1.4.2 | 准备服务和配置 |  | 1d | 2004-10-15 | 2004-10-18 | 261 | 2d | 测试/质量保证 | 8h |
| 265 | 1.4.1.4.3 | 准备用户帐户 |  | 1d | 2004-10-15 | 2004-10-18 | 261 | 2d | 测试/质量保证 | 8h |
| 266 | 1.4.1.4.4 | 准备域结构(模拟的域层次结构) |  | 2d | 2004-10-15 | 2004-10-19 | 261 | 1d | 测试/质量保证 | 16h |
| 267 | 1.4.1.4.5 | 准备服务器功能/策略 |  | 2d | 2004-10-15 | 2004-10-19 | 261 | 1d | 测试/质量保证 | 16h |
| 268 | 1.4.1.4.6 | 准备混合的环境 |  | 1d | 2004-10-15 | 2004-10-18 | 261 | 2d | 测试/质量保证 | 8h |
| 269 | 1.4.1.4.7 | 准备客户机配置 |  | 2d | 2004-10-15 | 2004-10-19 | 261 | 1d | 测试/质量保证 | 16h |
| 270 | 1.4.1.4.8 | 准备网络拓扑和协议 |  | 2d | 2004-10-15 | 2004-10-19 | 261 | 1d | 测试/质量保证 | 16h |
| 271 | 1.4.1.4.9 | 准备 WAN 连接性 |  | 2d | 2004-10-15 | 2004-10-19 | 261 | 1d | 测试/质量保证 | 16h |
| 272 | 1.4.1.4.10 | 准备远程连接性 |  | 1d | 2004-10-15 | 2004-10-18 | 261 | 2d | 测试/质量保证 | 8h |
| 273 | 1.4.1.4.11 | 准备外围设备 |  | 3d | 2004-10-15 | 2004-10-20 | 261 | 0d | 测试/质量保证 | 24h |
| 274 | 1.4.1.4.12 | 准备与其他操作系统的互操作性(例如，UNIX、大型机) |  | 3d | 2004-10-15 | 2004-10-20 | 261 | 0d | 测试/质量保证 | 24h |
| 275 | 1.4.1.4.13 | 准备管理工具 |  | 1d | 2004-10-15 | 2004-10-18 | 261 | 2d | 测试/质量保证 | 8h |
| 276 | 1.4.1.4.14 | 准备容错技术 |  | 2d | 2004-10-15 | 2004-10-19 | 261 | 1d | 测试/质量保证 | 16h |
| 277 | 1.4.1.4.15 | 终端服务 |  | 2d | 2004-10-15 | 2004-10-19 | 261 | 1d | 测试/质量保证 | 16h |
| 278 | 1.4.1.4.16 | 确保测试实验室环境模拟建议的环境完成 | milestone | 0d | 2004-10-20 | 2004-10-20 | 263, 264, 265, 266, 267, 268, 269, 270, 271, 272, 273, 274, 275, 276, 277 | 0d | 测试/质量保证 |  |
| 279 | 1.4.1.5 | POC 准备完毕 | milestone | 0d | 2004-10-20 | 2004-10-20 | 278 | 0d | 测试/质量保证 |  |
| 280 | 1.4.2 | **部署到概念验证实验室机器的开发解决方案** |  | 20d | 2004-10-20 | 2004-11-17 |  | 0d |  | 240h |
| 281 | 1.4.2.1 | 执行测试来测试计划说明 |  | 2d | 2004-10-20 | 2004-10-22 | 279 | 0d | 测试/质量保证 | 16h |
| 282 | 1.4.2.2 | 分析结果 |  | 4d | 2004-10-22 | 2004-10-28 | 281 | 0d | 测试/质量保证 | 32h |

Notes:
- 257: 在此阶段，将创建概念的验证(POC)环境以评估在计划中早期讨论的不同组件。为了实现正确的评估目的，POC 环境应该是完整的 Exchange 2000 模型的微缩版本。

| ID | WBS | Task | Type | Duration | Start | Finish | Predecessors | Total slack | Free slack | Resources | Work |
| --- | --- | --- | --- | --- | --- | --- | --- | --- | --- | --- | --- |
| 283 | 1.4.2.3 | **缓和结果** |  | 14d | 2004-10-28 | 2004-11-17 |  | 0d |  |  | 192h |
| 284 | 1.4.2.3.1 | **测试事例问题** |  | 14d | 2004-10-28 | 2004-11-17 |  | 0d |  |  | 112h |
| 285 | 1.4.2.3.1.1 | 在概念验证跟踪系统中记录 |  | 3d | 2004-10-28 | 2004-11-02 | 282 | 0d |  | 测试/质量保证 | 24h |
| 286 | 1.4.2.3.1.2 | 修订测试事例 |  | 3d | 2004-11-02 | 2004-11-05 | 285 | 0d |  | 测试/质量保证 | 24h |
| 287 | 1.4.2.3.1.3 | 重新运行测试 |  | 3d | 2004-11-05 | 2004-11-10 | 286 | 0d |  | 测试/质量保证 | 24h |
| 288 | 1.4.2.3.1.4 | 记录结果/更改 |  | 5d | 2004-11-10 | 2004-11-17 | 287 | 0d |  | 测试/质量保证 | 40h |
| 289 | 1.4.2.3.1.5 | 测试事例问题完成 | milestone | 0d | 2004-11-17 | 2004-11-17 | 288 | 0d |  | 测试/质量保证 |  |
| 290 | 1.4.2.3.2 | **实验室设置问题** |  | 6d | 2004-10-28 | 2004-11-05 |  | 8d |  |  | 48h |
| 291 | 1.4.2.3.2.1 | 在概念验证跟踪系统中记录 |  | 1d | 2004-10-28 | 2004-10-29 | 282 | 8d | 0d | 测试/质量保证 | 8h |
| 292 | 1.4.2.3.2.2 | 跟随实验室更改控制过程 |  | 1d | 2004-10-29 | 2004-11-01 | 291 | 8d | 0d | 测试/质量保证 | 8h |
| 293 | 1.4.2.3.2.3 | 重新配置实验室 |  | 1d | 2004-11-01 | 2004-11-02 | 292 | 8d | 0d | 测试/质量保证 | 8h |
| 294 | 1.4.2.3.2.4 | 重新运行测试 |  | 1d | 2004-11-02 | 2004-11-03 | 293 | 8d | 0d | 测试/质量保证 | 8h |
| 295 | 1.4.2.3.2.5 | 记录结果/更改 |  | 2d | 2004-11-03 | 2004-11-05 | 294 | 8d | 0d | 测试/质量保证 | 16h |
| 296 | 1.4.2.3.2.6 | 实验室设置问题完成 | milestone | 0d | 2004-11-05 | 2004-11-05 | 295 | 8d |  | 测试/质量保证 |  |
| 297 | 1.4.2.3.3 | **开发/设计问题** |  | 4d | 2004-10-28 | 2004-11-03 |  | 10d |  |  | 32h |
| 298 | 1.4.2.3.3.1 | 在概念验证跟踪系统中记录 |  | 1d | 2004-10-28 | 2004-10-29 | 282 | 10d | 0d | 测试/质量保证 | 8h |
| 299 | 1.4.2.3.3.2 | 增加开发/设计问题 |  | 1d | 2004-10-29 | 2004-11-01 | 298 | 10d | 0d | 测试/质量保证 | 8h |
| 300 | 1.4.2.3.3.3 | 区分优先次序/风险分析 |  | 1d | 2004-11-01 | 2004-11-02 | 299 | 10d | 0d | 测试/质量保证 | 8h |
| 301 | 1.4.2.3.3.4 | 跟踪解决方案 |  | 1d | 2004-11-02 | 2004-11-03 | 300 | 10d | 0d | 测试/质量保证 | 8h |
| 302 | 1.4.2.3.3.5 | 开发/设计问题完毕 | milestone | 0d | 2004-11-03 | 2004-11-03 | 301 | 10d |  |  |  |
| 303 | 1.4.2.3.4 | 部署到概念验证实验室机器的开发解决方案完成 | milestone | 0d | 2004-11-17 | 2004-11-17 | 289, 296, 302 | 0d |  |  |  |
| 304 | 1.4.3 | **执行整套的风险评估** |  | 7d | 2004-11-17 | 2004-11-26 |  | 0d |  |  | 56h |
| 305 | 1.4.3.1 | 将经验教训记录存档 |  | 3d | 2004-11-17 | 2004-11-22 | 303 | 0d |  | 项目经理 | 24h |
| 306 | 1.4.3.2 | 记录修改 |  | 2d | 2004-11-22 | 2004-11-24 | 305 | 0d |  | 项目经理 | 16h |
| 307 | 1.4.3.3 | 准备好以继续进行试生产 |  | 2d | 2004-11-24 | 2004-11-26 | 306 | 0d |  | 项目经理 | 16h |
| 308 | 1.4.3.4 | 执行整套的风险评估完成 | milestone | 0d | 2004-11-26 | 2004-11-26 | 307 | 0d |  |  |  |
| 309 | 1.4.4 | 执行整套的风险评估 | milestone | 0d | 2004-11-26 | 2004-11-26 | 308 | 0d |  |  |  |

| ID | WBS | Task | Type | Duration | Start | Finish | Predecessors | Total slack | Free slack | Resources | Work |
| --- | --- | --- | --- | --- | --- | --- | --- | --- | --- | --- | --- |
| 310 | 1.5 | **试生产** |  | 55d | 2004-11-26 | 2005-02-11 |  | 0d |  |  | 868h |
| 311 | 1.5.1 | **规划** |  | 24d | 2004-11-26 | 2004-12-30 |  | 0d |  |  | 368h |
| 312 | 1.5.1.1 | 确定试生产范围和目标 |  | 4d | 2004-11-26 | 2004-12-02 | 309 | 0d |  | 项目经理 | 32h |
| 313 | 1.5.1.2 | 确定试生产组/个体/资源/设备 |  | 2d | 2004-12-02 | 2004-12-06 | 312 | 11d | 0d | 项目经理 | 16h |
| 314 | 1.5.1.3 | 记录资源和任务 |  | 2d | 2004-12-06 | 2004-12-08 | 312, 313 | 11d | 0d | 项目经理 | 16h |
| 315 | 1.5.1.4 | 制定用户团体的通讯材料(例如，FAQ、Web 站点、电子邮件) |  | 5d | 2004-12-08 | 2004-12-15 | 312, 314 | 11d |  | 用户教育/培训/通讯 | 40h |
| 316 | 1.5.1.5 | 制定用户支持计划 |  | 3d | 2004-12-02 | 2004-12-07 | 312 | 17d |  |  |  |
| 317 | 1.5.1.6 | 制定培训计划 |  | 4d | 2004-12-02 | 2004-12-08 | 312 | 16d |  | 用户教育/培训/通讯 | 32h |
| 318 | 1.5.1.7 | 概念验证完成 |  | 2d | 2004-12-02 | 2004-12-06 | 312 | 0d |  | 测试/质量保证 | 16h |
| 319 | 1.5.1.8 | **制定首展过程** |  | 14d | 2004-12-06 | 2004-12-24 |  | 0d |  |  | 152h |
| 320 | 1.5.1.8.1 | 确定安装程序需要的工具和供给 |  | 2d | 2004-12-06 | 2004-12-08 | 318 | 16d |  | 部署管理员 | 16h |
| 321 | 1.5.1.8.2 | 确定脚本列表及其位置 |  | 3d | 2004-12-06 | 2004-12-09 | 318 | 15d |  | 部署管理员 | 24h |
| 322 | 1.5.1.8.3 | 确定备份应先于或在配置过程中进行 |  | 1d | 2004-12-06 | 2004-12-07 | 318 | 0d |  | 部署管理员 | 8h |
| 323 | 1.5.1.8.4 | 记录迁移到新域结构的步骤 |  | 3d | 2004-12-07 | 2004-12-10 | 322 | 0d |  | 部署管理员 | 24h |
| 324 | 1.5.1.8.5 | 记录执行手动和自动进行计算机升级的步骤 |  | 2d | 2004-12-10 | 2004-12-14 | 323 | 0d |  | 部署管理员 | 16h |
| 325 | 1.5.1.8.6 | 记录安装程序接受测试 |  | 2d | 2004-12-14 | 2004-12-16 | 324 | 0d |  | 部署管理员 | 16h |
| 326 | 1.5.1.8.7 | 记录安装程序和管理员要执行的操作过程(例如，重新设置权限、更改密码) |  | 3d | 2004-12-16 | 2004-12-21 | 325 | 0d |  | 部署管理员 | 24h |
| 327 | 1.5.1.8.8 | 记录如果试生产失败，返回的步骤 |  | 3d | 2004-12-21 | 2004-12-24 | 326 | 0d |  | 部署管理员 | 24h |
| 328 | 1.5.1.8.9 | 制定首展过程完成 | milestone | 0d | 2004-12-24 | 2004-12-24 | 327 | 0d |  |  |  |
| 329 | 1.5.1.9 | 确定已知的风险以及这些风险的突发计划 |  | 2d | 2004-12-24 | 2004-12-28 | 328 | 0d |  | 部署管理员; 项目经理 | 32h |
| 330 | 1.5.1.10 | 制定回滚计划 |  | 2d | 2004-12-28 | 2004-12-30 | 329 | 0d |  | 部署管理员; 项目经理 | 32h |
| 331 | 1.5.1.11 | 试生产规划完毕 | milestone | 0d | 2004-12-30 | 2004-12-30 | 315, 316, 317, 318, 320, 321, 330 | 0d |  |  |  |
| 332 | 1.5.2 | **部署** |  | 12d | 2004-12-30 | 2005-01-17 |  | 0d |  |  | 132h |
| 333 | 1.5.2.1 | 与试生产用户通讯 |  | 4h | 2004-12-30 | 2004-12-30 | 331 | 4.5d |  | 用户教育/培训/通讯 | 4h |
| 334 | 1.5.2.2 | 处理用户培训 |  | 5d | 2004-12-30 | 2005-01-06 | 331 | 0d |  | 用户教育/培训/通讯 | 40h |
| 335 | 1.5.2.3 | 确保支持组织准备就绪 |  | 4d | 2004-12-30 | 2005-01-05 | 331 | 1d |  | 项目经理 | 32h |
| 336 | 1.5.2.4 | 准备试生产场地 |  | 2d | 2005-01-06 | 2005-01-10 | 333, 334, 335 | 0d |  | 基础结构管理员 | 16h |
| 337 | 1.5.2.5 | 部署首展过程 |  | 5d | 2005-01-10 | 2005-01-17 | 336 | 0d |  | 部署管理员 | 40h |
| 338 | 1.5.2.6 | 试生产部署工作完成 | milestone | 0d | 2005-01-17 | 2005-01-17 | 337 | 0d |  |  |  |

Notes:
- 310: 完成功能设计和开发并且彻底地测试功能配置后，您就可以处理试生产项目。部署小组应该设置许多临时传输的里程碑，每个都涉及到解决方案开发、测试、验证预先指定的性能标准，以及重新设计。 / 在保持计划时间财政预算的同时，跟踪部署问题和有效地解决它们对于到达部署目标是至关重要的。 / 试生产项目开始运行并稳定后，赞助商和部署工作组就可以评估新的 Exchange 2000 基础结构的功能并验证产品首展和支持计划是否都是正常的。主要的里程碑和部署文档可能包括以下内容: / - 技术验证完成 / - 完善而稳定的功能说明 / - 概念的验证完成 / - 试制的测试完成 / - 试生产完成 / - 更新的风险管理计划 / 其他可能要制定的部署文档包括如下内容: / - 培训计划 / - 支持或技术支持计划 / - 操作转换计划

| ID | WBS | Task | Type | Duration | Start | Finish | Predecessors | Total slack | Resources | Work |
| --- | --- | --- | --- | --- | --- | --- | --- | --- | --- | --- |
| 339 | 1.5.3 | **评估试生产** |  | 8d | 2005-01-17 | 2005-01-27 |  | 0d |  | 280h |
| 340 | 1.5.3.1 | 处理台式计算机测试方案 |  | 5d | 2005-01-17 | 2005-01-24 | 338 | 0d | 测试/质量保证 | 40h |
| 341 | 1.5.3.2 | 处理服务器测试方案 |  | 5d | 2005-01-17 | 2005-01-24 | 338 | 0d | 测试/质量保证 | 40h |
| 342 | 1.5.3.3 | 处理第三方应用程序测试方案 |  | 5d | 2005-01-17 | 2005-01-24 | 338 | 0d | 测试/质量保证 | 40h |
| 343 | 1.5.3.4 | 处理自定义应用程序测试方案 |  | 5d | 2005-01-17 | 2005-01-24 | 338 | 0d | 测试/质量保证 | 40h |
| 344 | 1.5.3.5 | 处理共存测试方案 |  | 5d | 2005-01-17 | 2005-01-24 | 338 | 0d | 测试/质量保证 | 40h |
| 345 | 1.5.3.6 | 确定范围更改 |  | 3d | 2005-01-24 | 2005-01-27 | 340, 341, 342, 343, 344 | 0d | 项目经理 | 24h |
| 346 | 1.5.3.7 | 确定成本因素 |  | 2d | 2005-01-24 | 2005-01-26 | 340, 341, 342, 343, 344 | 1d | 项目经理 | 16h |
| 347 | 1.5.3.8 | 确定互操作性问题 |  | 3d | 2005-01-24 | 2005-01-27 | 340, 341, 342, 343, 344 | 0d | 项目经理 | 24h |
| 348 | 1.5.3.9 | 确定未预料到的停工期 |  | 2d | 2005-01-24 | 2005-01-26 | 340, 341, 342, 343, 344 | 1d | 项目经理 | 16h |
| 349 | 1.5.3.10 | 试生产测试工作完成 | milestone | 0d | 2005-01-27 | 2005-01-27 | 345, 346, 347, 348 | 0d |  |  |
| 350 | 1.5.4 | **试生产后评估** |  | 11d | 2005-01-27 | 2005-02-11 |  | 0d |  | 88h |
| 351 | 1.5.4.1 | 获得用户反馈 |  | 5d | 2005-01-27 | 2005-02-03 | 349 | 0d | 项目经理 | 40h |
| 352 | 1.5.4.2 | 评估经验教训 |  | 2d | 2005-02-03 | 2005-02-07 | 351 | 0d | 项目经理 | 16h |
| 353 | 1.5.4.3 | 根据需要修改项目 |  | 2d | 2005-02-07 | 2005-02-09 | 352 | 0d | 项目经理 | 16h |
| 354 | 1.5.4.4 | 记录下面步骤的建议 |  | 2d | 2005-02-09 | 2005-02-11 | 353 | 0d | 项目经理 | 16h |
| 355 | 1.5.4.5 | 试生产后评估完毕 | milestone | 0d | 2005-02-11 | 2005-02-11 | 354 | 0d |  |  |
| 356 | 1.5.5 | 试生产工作完成 | milestone | 0d | 2005-02-11 | 2005-02-11 | 355 | 0d |  |  |
| 357 | 1.6 | **部署** |  | 18.5d | 2005-02-11 | 2005-03-09 |  | 0d |  | 300h |
| 358 | 1.6.1 | **通讯** |  | 2.5d | 2005-02-11 | 2005-02-15 |  | 0d |  | 36h |
| 359 | 1.6.1.1 | 审阅通讯策略文档 |  | 2d | 2005-02-11 | 2005-02-15 | 356 | 0d | 项目经理; 用户教育/培训/通讯 | 32h |
| 360 | 1.6.1.2 | 启动通讯 |  | 4h | 2005-02-15 | 2005-02-15 | 359 | 0d | 项目经理 | 4h |
| 361 | 1.6.1.3 | 通讯完成 | milestone | 0d | 2005-02-15 | 2005-02-15 | 360 | 0d |  |  |
| 362 | 1.6.2 | **教育/培训** |  | 11d | 2005-02-15 | 2005-03-02 |  | 0d |  | 96h |
| 363 | 1.6.2.1 | 审阅教育/培训计划文档 |  | 1d | 2005-02-15 | 2005-02-16 | 361 | 0d | 用户教育/培训/通讯; 项目经理 | 16h |
| 364 | 1.6.2.2 | 处理管理培训 |  | 5d | 2005-02-16 | 2005-02-23 | 363 | 0d | 用户教育/培训/通讯 | 40h |
| 365 | 1.6.2.3 | 处理用户培训 |  | 5d | 2005-02-23 | 2005-03-02 | 364 | 0d | 用户教育/培训/通讯 | 40h |
| 366 | 1.6.2.4 | 教育/培训完成 | milestone | 0d | 2005-03-02 | 2005-03-02 | 365 | 0d |  |  |

Notes:
- 350: 在试生产工作结束时，评估其是否成功并作出后续步骤的建议给管理部门。然后管理部门决定是否超越试生产继续进行项目。为了帮助您评估和作出建议，可以分析大量源中的信息。
- 357: 在此处，您已在实验室中测试了所有设计，并制定试生产计划来改进计划并进一步测试您的设计。现在您可以逐渐地为您的整个企业部署 Exchange 2000 。 / 在产品首展阶段，当部署、测试、验证和支持的反复循环成为主要焦点时，测试和支持活动仍然是重要的。 / 在部署工作完成这个里程碑中，新的 Exchange2000 Server 基础结构被正式地使用到操作和支持组中。应该进行项目回顾。

| ID | WBS | Task | Type | Duration | Start | Finish | Predecessors | Total slack | Free slack | Resources | Work |
| --- | --- | --- | --- | --- | --- | --- | --- | --- | --- | --- | --- |
| 367 | 1.6.3 | **分阶段执行 Exchange 2000 架构** |  | 11d | 2005-02-15 | 2005-03-02 |  | 11d |  |  | 128h |
| 368 | 1.6.3.1 | 审阅迁移策略/标准文档 |  | 3d | 2005-02-15 | 2005-02-18 | 361 | 20d | 0d | 基础结构管理员; 部署管理员 | 48h |
| 369 | 1.6.3.2 | 重建/建立新结构 |  | 5d | 2005-02-18 | 2005-02-25 | 368 | 20d |  | 基础结构管理员; 部署管理员 | 80h |
| 370 | 1.6.3.3 | 域迁移完成 | milestone | 0d | 2005-03-02 | 2005-03-02 | 366 | 0d |  |  |  |
| 371 | 1.6.4 | **Active Directory** |  | 5d | 2005-03-02 | 2005-03-09 |  | 0d |  |  | 40h |
| 372 | 1.6.4.1 | **Active Directory 与 Exchange 5.5 一起同步完毕** |  | 3d | 2005-03-02 | 2005-03-07 |  | 0d |  |  | 24h |
| 373 | 1.6.4.1.1 | 审阅 ADC 连接计划策略/标准 |  | 1d | 2005-03-02 | 2005-03-03 | 370 | 0d |  | 基础结构管理员 | 8h |
| 374 | 1.6.4.1.2 | 设置连接许可协议 |  | 4h | 2005-03-03 | 2005-03-04 | 373 | 0d |  | 基础结构管理员 | 4h |
| 375 | 1.6.4.1.3 | 测试连接许可协议配置 |  | 1d | 2005-03-04 | 2005-03-07 | 374 | 0d |  | 基础结构管理员 | 8h |
| 376 | 1.6.4.1.4 | 决定目录同步的计划安排 |  | 4h | 2005-03-07 | 2005-03-07 | 375 | 0d |  | 基础结构管理员 | 4h |
| 377 | 1.6.4.1.5 | Active Directory 与 Exchange 5.5 一起同步完毕 | milestone | 0d | 2005-03-07 | 2005-03-07 | 376 | 0d |  |  |  |
| 378 | 1.6.4.2 | 安装/配置客户端 |  | 1d | 2005-03-07 | 2005-03-08 | 377 | 0d |  | 部署管理员 | 8h |
| 379 | 1.6.4.3 | 测试 |  | 1d | 2005-03-08 | 2005-03-09 | 378 | 0d |  | 测试/质量保证 | 8h |
| 380 | 1.6.5 | 部署工作完成 | milestone | 0d | 2005-03-09 | 2005-03-09 | 377, 379 | 0d |  |  |  |
| 381 | 1.7 | **执行后审查** |  | 12d | 2005-03-09 | 2005-03-25 |  | 0d |  |  | 96h |
| 382 | 1.7.1 | 获得用户反馈 |  | 5d | 2005-03-09 | 2005-03-16 | 380 | 0d |  | 项目经理 | 40h |
| 383 | 1.7.2 | 评估经验教训 |  | 4d | 2005-03-16 | 2005-03-22 | 382 | 0d |  | 项目经理 | 32h |
| 384 | 1.7.3 | 根据需要修改项目 |  | 2d | 2005-03-22 | 2005-03-24 | 383 | 0d |  | 项目经理 | 16h |
| 385 | 1.7.4 | 建立计划正在进行事项的工作组 |  | 1d | 2005-03-24 | 2005-03-25 | 384 | 0d |  | 项目经理 | 8h |
| 386 | 1.7.5 | 执行后审查工作完毕 | milestone | 0d | 2005-03-25 | 2005-03-25 | 385 | 0d |  |  |  |
| 387 | 1.8 | Microsoft Exchange 2000 部署模板完成 | milestone | 0d | 2005-03-25 | 2005-03-25 | 386 | 0d |  |  |  |

Notes:
- 381: 这是项目的最后阶段。在此阶段，您可以回顾项目、文档以及学到的经验教训，以便为将来部署项目或执行后指令奠定基础。
- 385: 应该建立由不同部署资源组成的 Exchange 2000 规划小组，以便推荐将来的应用程序开发、维护、服务版本和将来的版本。
