# 部署基础设施

Schedule from MS Project, 2004-01-01 to 2004-07-16.

## Calendars

- 标准: Mon-Fri 08:00-12:00, 13:00-17:00; Sat-Sun off.

## Resources

| Resource |
| --- |
| 体系结构分析 |
| 项目管理 |
| 配置资源 |
| 采购 |
| 管理人员 |

## Schedule

| ID | WBS | Task | Type | Duration | Start | Finish | Predecessors | Total slack | Resources | Work |
| --- | --- | --- | --- | --- | --- | --- | --- | --- | --- | --- |
| 1 | 1 | **基础设施部署模板** |  | 141.25d | 2004-01-01 | 2004-07-16 |  | 0d |  | 2406h |
| 2 | 1.1 | **项目范围规划** |  | 4d | 2004-01-01 | 2004-01-06 |  | 0d |  | 32h |
| 3 | 1.1.1 | 确定项目范围 |  | 1d | 2004-01-01 | 2004-01-01 |  | 0d | 项目管理 | 8h |
| 4 | 1.1.2 | 获得项目所需资金 |  | 1d | 2004-01-02 | 2004-01-02 | 3 | 0d | 项目管理 | 8h |
| 5 | 1.1.3 | 定义预备资源 |  | 1d | 2004-01-05 | 2004-01-05 | 4 | 0d | 项目管理 | 8h |
| 6 | 1.1.4 | 获得核心资源 |  | 1d | 2004-01-06 | 2004-01-06 | 5 | 0d | 项目管理 | 8h |
| 7 | 1.1.5 | 项目范围规划完成 | milestone | 0d | 2004-01-06 | 2004-01-06 | 6 | 0d |  |  |
| 8 | 1.2 | **分析** |  | 30d | 2004-01-07 | 2004-02-17 |  | 0d |  | 840h |
| 9 | 1.2.1 | **审查当前的基础设施** |  | 5d | 2004-01-07 | 2004-01-13 |  | 0d |  | 240h |
| 10 | 1.2.1.1 | 审查硬件环境 |  | 5d | 2004-01-07 | 2004-01-13 | 7 | 0d | 体系结构分析 | 40h |
| 11 | 1.2.1.2 | 审查软件环境 |  | 5d | 2004-01-07 | 2004-01-13 | 7 | 0d | 体系结构分析 | 40h |
| 12 | 1.2.1.3 | 审查通讯环境 |  | 5d | 2004-01-07 | 2004-01-13 | 7 | 0d | 体系结构分析 | 40h |
| 13 | 1.2.1.4 | 审查 LAN/WAN 的连通情况 |  | 5d | 2004-01-07 | 2004-01-13 | 7 | 0d | 体系结构分析 | 40h |
| 14 | 1.2.1.5 | 审查支持环境 |  | 5d | 2004-01-07 | 2004-01-13 | 7 | 0d | 体系结构分析 | 40h |
| 15 | 1.2.1.6 | 审查地理因素 |  | 5d | 2004-01-07 | 2004-01-13 | 7 | 0d | 体系结构分析 | 40h |
| 16 | 1.2.1.7 | 当前基础设施审查完毕 | milestone | 0d | 2004-01-13 | 2004-01-13 | 10, 11, 12, 13, 14, 15 | 0d |  |  |
| 17 | 1.2.2 | 审查商业目标/方向/构想 |  | 10d | 2004-01-14 | 2004-01-27 | 16 | 0d | 项目管理 | 80h |
| 18 | 1.2.3 | **确定要提高的目标领域** |  | 5d | 2004-01-28 | 2004-02-03 |  | 0d |  | 240h |
| 19 | 1.2.3.1 | 确定硬件方面的提高 |  | 5d | 2004-01-28 | 2004-02-03 | 17 | 0d | 体系结构分析 | 40h |
| 20 | 1.2.3.2 | 确定软件方面的提高 |  | 5d | 2004-01-28 | 2004-02-03 | 17 | 0d | 体系结构分析 | 40h |
| 21 | 1.2.3.3 | 确定通讯方面应考虑的因素 |  | 5d | 2004-01-28 | 2004-02-03 | 17 | 0d | 体系结构分析 | 40h |
| 22 | 1.2.3.4 | 确定 LAN/WAN 在连通能力方面的提高/问题 |  | 5d | 2004-01-28 | 2004-02-03 | 17 | 0d | 体系结构分析 | 40h |
| 23 | 1.2.3.5 | 确定支持环境的提高/扩展 |  | 5d | 2004-01-28 | 2004-02-03 | 17 | 0d | 体系结构分析 | 40h |
| 24 | 1.2.3.6 | 确定地理因素的缓解程度 |  | 5d | 2004-01-28 | 2004-02-03 | 17 | 0d | 体系结构分析 | 40h |
| 25 | 1.2.3.7 | 确定提高的目标领域 | milestone | 0d | 2004-02-03 | 2004-02-03 | 19, 20, 21, 22, 23, 24 | 0d |  |  |
| 26 | 1.2.4 | 定义系统要求 |  | 5d | 2004-02-04 | 2004-02-10 | 25 | 0d | 体系结构分析 | 40h |
| 27 | 1.2.5 | 定义测量目标性能尺度 |  | 5d | 2004-02-11 | 2004-02-17 | 26 | 0d | 体系结构分析 | 40h |

| ID | WBS | Task | Type | Duration | Start | Finish | Predecessors | Total slack | Free slack | Resources | Work |
| --- | --- | --- | --- | --- | --- | --- | --- | --- | --- | --- | --- |
| 28 | 1.2.6 | **审查当前市场上的解决方案供应商** |  | 5d | 2004-02-04 | 2004-02-10 |  | 5d |  |  | 200h |
| 29 | 1.2.6.1 | 硬件供应商 |  | 5d | 2004-02-04 | 2004-02-10 | 25 | 5d | 0d | 采购 | 40h |
| 30 | 1.2.6.2 | 软件供应商 |  | 5d | 2004-02-04 | 2004-02-10 | 25 | 5d | 0d | 采购 | 40h |
| 31 | 1.2.6.3 | 通讯供应商 |  | 5d | 2004-02-04 | 2004-02-10 | 25 | 5d | 0d | 采购 | 40h |
| 32 | 1.2.6.4 | 设计合作伙伴 |  | 5d | 2004-02-04 | 2004-02-10 | 25 | 5d | 0d | 采购 | 40h |
| 33 | 1.2.6.5 | 实施合作伙伴 |  | 5d | 2004-02-04 | 2004-02-10 | 25 | 5d | 0d | 采购 | 40h |
| 34 | 1.2.6.6 | 当前市场上的解决方案供应商审查完毕 | milestone | 0d | 2004-02-10 | 2004-02-10 | 29, 30, 31, 32, 33 | 5d |  |  |  |
| 35 | 1.2.7 | 分析工作完成 | milestone | 0d | 2004-02-17 | 2004-02-17 | 34, 27 | 0d |  |  |  |
| 36 | 1.3 | **设计** |  | 27d | 2004-02-18 | 2004-03-25 |  | 0d |  |  | 648h |
| 37 | 1.3.1 | 确保必需的体系结构资源 |  | 3d | 2004-02-18 | 2004-02-20 | 35 | 0d |  | 项目管理 | 24h |
| 38 | 1.3.2 | **起草初步的基础设施设计方案** |  | 5d | 2004-02-23 | 2004-02-27 |  | 0d |  |  | 200h |
| 39 | 1.3.2.1 | 初步的硬件设计 |  | 5d | 2004-02-23 | 2004-02-27 | 37 | 0d |  | 体系结构分析 | 40h |
| 40 | 1.3.2.2 | 初步的软件设计 |  | 5d | 2004-02-23 | 2004-02-27 | 37 | 0d |  | 体系结构分析 | 40h |
| 41 | 1.3.2.3 | 初步的通讯设计 |  | 5d | 2004-02-23 | 2004-02-27 | 37 | 0d |  | 体系结构分析 | 40h |
| 42 | 1.3.2.4 | 初步的 LAN/WAN 连接设计 |  | 5d | 2004-02-23 | 2004-02-27 | 37 | 0d |  | 体系结构分析 | 40h |
| 43 | 1.3.2.5 | 初步的支持环境设计 |  | 5d | 2004-02-23 | 2004-02-27 | 37 | 0d |  | 体系结构分析 | 40h |
| 44 | 1.3.2.6 | 初步的基础设施设计方案起草完毕 | milestone | 0d | 2004-02-27 | 2004-02-27 | 39, 40, 41, 42, 43 | 0d |  |  |  |
| 45 | 1.3.3 | 审查初步的设计文档 |  | 2d | 2004-03-01 | 2004-03-02 | 44 | 0d |  | 项目管理; 管理人员 | 32h |
| 46 | 1.3.4 | 获得对设计的反馈/输入 |  | 2d | 2004-03-03 | 2004-03-04 | 45 | 0d |  | 项目管理; 管理人员 | 32h |
| 47 | 1.3.5 | **制定详细的基础设施设计方案** |  | 5d | 2004-03-05 | 2004-03-11 |  | 0d |  |  | 200h |
| 48 | 1.3.5.1 | 制定详细的硬件设计方案 |  | 5d | 2004-03-05 | 2004-03-11 | 46 | 0d |  | 体系结构分析 | 40h |
| 49 | 1.3.5.2 | 制定详细的软件设计方案 |  | 5d | 2004-03-05 | 2004-03-11 | 46 | 0d |  | 体系结构分析 | 40h |
| 50 | 1.3.5.3 | 制定详细的通讯设计方案 |  | 5d | 2004-03-05 | 2004-03-11 | 46 | 0d |  | 体系结构分析 | 40h |
| 51 | 1.3.5.4 | 制定详细的 LAN/WAN 设计方案 |  | 5d | 2004-03-05 | 2004-03-11 | 46 | 0d |  | 体系结构分析 | 40h |
| 52 | 1.3.5.5 | 制定详细的支持环境设计方案 |  | 5d | 2004-03-05 | 2004-03-11 | 46 | 0d |  | 体系结构分析 | 40h |
| 53 | 1.3.5.6 | 详细的基础设施设计方案制定完毕 | milestone | 0d | 2004-03-11 | 2004-03-11 | 48, 49, 50, 51, 52 | 0d |  |  |  |
| 54 | 1.3.6 | 调整长期/短期基础设施设计方案以符合商业目标 |  | 10d | 2004-03-12 | 2004-03-25 | 53 | 0d |  | 体系结构分析; 项目管理 | 160h |
| 55 | 1.3.7 | 设计工作完成 | milestone | 0d | 2004-03-25 | 2004-03-25 | 54 | 0d |  |  |  |

| ID | WBS | Task | Type | Duration | Start | Finish | Predecessors | Total slack | Resources | Work |
| --- | --- | --- | --- | --- | --- | --- | --- | --- | --- | --- |
| 56 | 1.4 | **预算** |  | 16d | 2004-03-26 | 2004-04-16 |  | 0d |  | 168h |
| 57 | 1.4.1 | 根据详细的基础设施设计方案制定预算 |  | 5d | 2004-03-26 | 2004-04-01 | 55 | 0d | 项目管理 | 40h |
| 58 | 1.4.2 | 调整预算要求以符合商业目标 |  | 5d | 2004-03-30 | 2004-04-06 | 57FS-5% | 0d | 项目管理 | 40h |
| 59 | 1.4.3 | 调整预算要求以符合基础设施要求的时间表 |  | 5d | 2004-04-02 | 2004-04-08 | 58FS-5% | 0d | 项目管理 | 40h |
| 60 | 1.4.4 | 列出长期/短期的预算要求 |  | 3d | 2004-04-09 | 2004-04-13 | 59 | 0d | 项目管理 | 24h |
| 61 | 1.4.5 | 确保关键步骤的各阶段/年的资金供应 |  | 3d | 2004-04-14 | 2004-04-16 | 60 | 0d | 项目管理 | 24h |
| 62 | 1.4.6 | 预算完成 | milestone | 0d | 2004-04-16 | 2004-04-16 | 61 | 0d |  |  |
| 63 | 1.5 | **定案/检验** |  | 17.5d | 2004-04-19 | 2004-05-12 |  | 0d |  | 140h |
| 64 | 1.5.1 | 确保已批准步骤的资源 |  | 5d | 2004-04-19 | 2004-04-23 | 62 | 0d | 项目管理 | 40h |
| 65 | 1.5.2 | 根据预算要求制定最终的详细设计方案 |  | 2d | 2004-04-26 | 2004-04-27 | 64 | 0d | 项目管理 | 16h |
| 66 | 1.5.3 | 制定详细的实施方案 |  | 5d | 2004-04-28 | 2004-05-04 | 65 | 0d | 配置资源 | 40h |
| 67 | 1.5.4 | 在试验环境中检验实施方案 |  | 3d | 2004-05-05 | 2004-05-07 | 66 | 0d | 配置资源 | 24h |
| 68 | 1.5.5 | 审查针对其他步骤的实施方案 |  | 2d | 2004-05-10 | 2004-05-11 | 67 | 0d | 配置资源 | 16h |
| 69 | 1.5.6 | 得到批准以进行后续工作 |  | 4h | 2004-05-12 | 2004-05-12 | 68 | 0d | 项目管理 | 4h |
| 70 | 1.5.7 | 定案/检验完成 | milestone | 0d | 2004-05-12 | 2004-05-12 | 69 | 0d |  |  |
| 71 | 1.6 | **部署** |  | 43.75d | 2004-05-12 | 2004-07-13 |  | 0d |  | 506h |
| 72 | 1.6.1 | **后勤工作** |  | 8d | 2004-05-12 | 2004-05-24 |  | 0d |  | 128h |
| 73 | 1.6.1.1 | 获得部署所需资源 |  | 5d | 2004-05-12 | 2004-05-19 | 70 | 0d | 项目管理; 配置资源 | 80h |
| 74 | 1.6.1.2 | 就部署方法对承担部署任务的资源进行培训 |  | 3d | 2004-05-19 | 2004-05-24 | 73 | 0d | 项目管理; 配置资源 | 48h |
| 75 | 1.6.1.3 | 细节管理工作结束 | milestone | 0d | 2004-05-24 | 2004-05-24 | 74 | 0d |  |  |
| 76 | 1.6.2 | **试生产** |  | 10.5d | 2004-05-24 | 2004-06-07 |  | 0d |  | 168h |
| 77 | 1.6.2.1 | 选择要部署的基础设施组件 |  | 1d | 2004-05-24 | 2004-05-25 | 75 | 0d | 项目管理; 配置资源 | 16h |
| 78 | 1.6.2.2 | 审查部署工作组的任务和时间表 |  | 2d | 2004-05-25 | 2004-05-27 | 77 | 0d | 项目管理; 配置资源 | 32h |
| 79 | 1.6.2.3 | 将部署工作带来的影响通知给有关人员 |  | 2h | 2004-05-27 | 2004-05-27 | 78 | 0d | 项目管理; 配置资源 | 4h |
| 80 | 1.6.2.4 | 部署基础设施组件 |  | 3d | 2004-05-27 | 2004-06-01 | 79 | 0d | 项目管理; 配置资源 | 48h |
| 81 | 1.6.2.5 | 测试基础设施组件 |  | 1d | 2004-06-01 | 2004-06-02 | 80 | 0d | 项目管理; 配置资源 | 16h |
| 82 | 1.6.2.6 | 发布到生产/经营环境中 |  | 2h | 2004-06-02 | 2004-06-02 | 81 | 0d | 项目管理; 配置资源 | 4h |
| 83 | 1.6.2.7 | 获得反馈 |  | 2d | 2004-06-03 | 2004-06-04 | 82 | 0d | 项目管理; 配置资源 | 32h |
| 84 | 1.6.2.8 | 评估通过试生产得到的反馈 |  | 1d | 2004-06-07 | 2004-06-07 | 83 | 0d | 项目管理; 配置资源 | 16h |
| 85 | 1.6.2.9 | 试生产工作完成 | milestone | 0d | 2004-06-07 | 2004-06-07 | 84 | 0d |  |  |
| 86 | 1.6.3 | 确定是否以做好进行后续工作的准备 |  | 1d | 2004-06-08 | 2004-06-08 | 85 | 0d | 项目管理; 管理人员 | 16h |

| ID | WBS | Task | Type | Duration | Start | Finish | Predecessors | Total slack | Resources | Work |
| --- | --- | --- | --- | --- | --- | --- | --- | --- | --- | --- |
| 87 | 1.6.4 | **最终部署** |  | 24.25d | 2004-06-09 | 2004-07-13 |  | 0d |  | 194h |
| 88 | 1.6.4.1 | 审查部署工作组的任务和时间表 |  | 5d | 2004-06-09 | 2004-06-15 | 86 | 0d | 配置资源 | 40h |
| 89 | 1.6.4.2 | 将部署工作带来的影响通知给有关人员 |  | 2h | 2004-06-16 | 2004-06-16 | 88 | 0d | 配置资源 | 2h |
| 90 | 1.6.4.3 | 部署基础设施组件 |  | 10d | 2004-06-16 | 2004-06-30 | 89 | 0d | 配置资源 | 80h |
| 91 | 1.6.4.4 | 测试基础设施组件 |  | 5d | 2004-06-30 | 2004-07-07 | 90 | 0d | 配置资源 | 40h |
| 92 | 1.6.4.5 | 发布到生产/经营环境中 |  | 1d | 2004-07-07 | 2004-07-08 | 91 | 0d | 配置资源 | 8h |
| 93 | 1.6.4.6 | 获得反馈 |  | 3d | 2004-07-08 | 2004-07-13 | 92 | 0d | 配置资源 | 24h |
| 94 | 1.6.4.7 | 最终部署工作完成 | milestone | 0d | 2004-07-13 | 2004-07-13 | 93 | 0d |  |  |
| 95 | 1.7 | **实施工作结束后的回顾** |  | 3d | 2004-07-13 | 2004-07-16 |  | 0d |  | 72h |
| 96 | 1.7.1 | 将经验教训记录存档 |  | 1d | 2004-07-13 | 2004-07-14 | 94 | 0d | 体系结构分析; 项目管理; 配置资源 | 24h |
| 97 | 1.7.2 | 分发给工作组成员 |  | 1d | 2004-07-14 | 2004-07-15 | 96 | 0d | 体系结构分析; 项目管理; 配置资源 | 24h |
| 98 | 1.7.3 | 建立软件维护小组 |  | 1d | 2004-07-15 | 2004-07-16 | 97 | 0d | 体系结构分析; 项目管理; 配置资源 | 24h |
| 99 | 1.7.4 | 回顾完成 | milestone | 0d | 2004-07-16 | 2004-07-16 | 98 | 0d |  |  |
| 100 | 1.8 | 基础设施部署模板完成 | milestone | 0d | 2004-07-16 | 2004-07-16 | 99 | 0d |  |  |
