# Microsoft Office Project 2003 部署

Schedule from MS Project, 2003-09-15 to 2004-03-05.

## Calendars

- 标准: Mon-Fri 08:00-12:00, 13:00-17:00; Sat-Sun off.

## Resources

| Resource |
| --- |
| 数据库管理员 |
| 网络管理员 |
| 业务分析人员 |
| 项目经理 |
| IT 人员 |
| 服务器管理员 |
| 系统设计师 |
| 台式计算机支持 |
| 应用程序部署 |
| 工作组成员 |
| 业务赞助人 |
| 应用程序开发人员 |

## Schedule

| ID | WBS | Task | Type | Duration | Start | Finish | Predecessors | Total slack | Resources | Work |
| --- | --- | --- | --- | --- | --- | --- | --- | --- | --- | --- |
| 1 | 1 | **Microsoft Office Project 2003 部署** |  | 124.75d | 2003-09-15 | 2004-03-05 |  | 0d |  | 3058.4h |
| 2 | 1.1 | **构想** |  | 7.5d | 2003-09-15 | 2003-09-24 |  | 0d |  | 120h |
| 3 | 1.1.1 | 评估公司商务目标(使用 EPM Enterprise Implementation Framework) |  | 20h | 2003-09-15 | 2003-09-17 |  | 0d | 业务分析人员; 业务赞助人 | 40h |
| 4 | 1.1.2 | 确定技术目标 |  | 1d | 2003-09-17 | 2003-09-18 | 3 | 0d | 业务分析人员; 业务赞助人 | 16h |
| 5 | 1.1.3 | 阐明初步成本/利润分析 |  | 1d | 2003-09-18 | 2003-09-19 | 4 | 0d | 业务分析人员; 业务赞助人 | 16h |
| 6 | 1.1.4 | 确定项目构想与范围(例如，实验室、试生产、国际/地区部署、共存策略) |  | 1d | 2003-09-19 | 2003-09-22 | 5 | 0d | 业务分析人员; 业务赞助人 | 16h |
| 7 | 1.1.5 | 确定主要里程碑 |  | 1d | 2003-09-22 | 2003-09-23 | 6 | 0d | 业务分析人员; 业务赞助人 | 16h |
| 8 | 1.1.6 | 确保执行所需的赞助/投资 |  | 1d | 2003-09-23 | 2003-09-24 | 7 | 0d | 业务分析人员; 业务赞助人 | 16h |
| 9 | 1.1.7 | 完成构想 | milestone | 0d | 2003-09-24 | 2003-09-24 | 8 | 0d |  |  |
| 10 | 1.2 | **规划** |  | 7.5d | 2003-09-24 | 2003-10-03 | 2 | 0d |  | 1004h |
| 11 | 1.2.1 | **规划软件配置** |  | 3d | 2003-09-24 | 2003-09-29 |  | 0d |  | 100h |
| 12 | 1.2.1.1 | **设计实施配置** |  | 1d | 2003-09-24 | 2003-09-25 |  | 0d |  | 24h |
| 13 | 1.2.1.1.1 | 使用 EPM Enterprise Implementation Framework 完成的业务分析 | milestone | 0d | 2003-09-24 | 2003-09-24 |  | 1d | 业务分析人员 |  |
| 14 | 1.2.1.1.2 | 使用 EPM Enterprise Implementation Framework 确定和记录的配置设置 | milestone | 0d | 2003-09-24 | 2003-09-24 |  | 1d | 业务分析人员 |  |
| 15 | 1.2.1.1.3 | 使用 EPM Enterprise Implementation Framework 完成的功能说明 | milestone | 0d | 2003-09-24 | 2003-09-24 |  | 1d | 业务分析人员 |  |
| 16 | 1.2.1.1.4 | 建立实施工作组 |  | 1d | 2003-09-24 | 2003-09-25 |  | 0d | 业务分析人员; 项目经理; 业务赞助人 | 24h |
| 17 | 1.2.1.1.5 | 项目成功标准已定义 | milestone | 0d | 2003-09-24 | 2003-09-24 |  | 1d | 业务分析人员 |  |
| 18 | 1.2.1.2 | **确定要安装的功能组件** |  | 1d | 2003-09-25 | 2003-09-26 | 12 | 0d |  | 40h |
| 19 | 1.2.1.2.1 | 在 Microsoft SQL Server 或 MSDE 之间做出决定 |  | 1d | 2003-09-25 | 2003-09-26 |  | 0d | 数据库管理员 | 8h |
| 20 | 1.2.1.2.2 | 考虑 Microsoft SQL Server Analysis Services |  | 1d | 2003-09-25 | 2003-09-26 |  | 0d | 业务分析人员 | 8h |
| 21 | 1.2.1.2.3 | 考虑 Microsoft SharePoint Portal Server v2.0 |  | 1d | 2003-09-25 | 2003-09-26 |  | 0d | 业务分析人员 | 8h |
| 22 | 1.2.1.2.4 | 考虑 Microsoft Windows SharePoint Services |  | 1d | 2003-09-25 | 2003-09-26 |  | 0d | 业务分析人员 | 8h |
| 23 | 1.2.1.2.5 | 考虑 Microsoft Windows 终端服务 |  | 1d | 2003-09-25 | 2003-09-26 |  | 0d | 网络管理员 | 8h |
| 24 | 1.2.1.3 | **确定配置限制** |  | 1d | 2003-09-26 | 2003-09-29 | 18 | 0d |  | 36h |
| 25 | 1.2.1.3.1 | 检查功能需求 |  | 1d | 2003-09-26 | 2003-09-29 |  | 0d | 业务分析人员 | 8h |
| 26 | 1.2.1.3.2 | 检查组织软件标准 |  | 1d | 2003-09-26 | 2003-09-29 |  | 0d | 业务分析人员; 系统设计师 | 16h |
| 27 | 1.2.1.3.3 | 确定实施限制(包括体系结构和部署) |  | 4h | 2003-09-26 | 2003-09-26 |  | 0.5d | 数据库管理员; 网络管理员; 系统设计师 | 12h |
| 28 | 1.2.1.4 | 完成规划软件配置 | milestone | 0d | 2003-09-29 | 2003-09-29 | 12, 18, 24 | 0d |  |  |

Notes:
- 1: 此 Microsoft Project 模板是为了方便企业环境中 Microsoft Office Project 2003 的部署而设计的。该模板的设计是为了将执行组织集中在关键步骤上，这些步骤确保了成功的、经过周密计划的执行。 / 请参阅帮助获取有关此模板的各部分的更多信息以及在何处查找其他信息。 / 有关 EPM Enterprise Implementation Framework 的信息，请访问 http://www.microsoft.com/project/。

| ID | WBS | Task | Duration | Start | Finish | Predecessors | Total slack | Free slack | Resources | Work |
| --- | --- | --- | --- | --- | --- | --- | --- | --- | --- | --- |
| 29 | 1.2.2 | **执行容量计划** | 3d | 2003-09-29 | 2003-10-02 | 11 | 1.5d |  |  | 224h |
| 30 | 1.2.2.1 | 确定用户的角色 | 1d | 2003-09-29 | 2003-09-30 |  | 1.5d | 0d | 业务分析人员 | 8h |
| 31 | 1.2.2.2 | **确定不同角色的用户数** | 1d | 2003-09-30 | 2003-10-01 | 30 | 1.5d | 0d |  | 32h |
| 32 | 1.2.2.2.1 | 记录“项目经理”数 | 1d | 2003-09-30 | 2003-10-01 |  | 1.5d |  | 业务分析人员 | 8h |
| 33 | 1.2.2.2.2 | 记录“工作组成员”数 | 1d | 2003-09-30 | 2003-10-01 |  | 1.5d |  | 业务分析人员 | 8h |
| 34 | 1.2.2.2.3 | 记录“主管人员”数 | 1d | 2003-09-30 | 2003-10-01 |  | 1.5d |  | 业务分析人员 | 8h |
| 35 | 1.2.2.2.4 | 记录“外部项目经理”数 | 1d | 2003-09-30 | 2003-10-01 |  | 1.5d |  | 业务分析人员 | 8h |
| 36 | 1.2.2.3 | **按角色确定使用模式** | 1d | 2003-09-30 | 2003-10-01 | 30 | 1.5d | 0d |  | 32h |
| 37 | 1.2.2.3.1 | 记录“项目经理”的使用模式 | 1d | 2003-09-30 | 2003-10-01 |  | 1.5d |  | 业务分析人员 | 8h |
| 38 | 1.2.2.3.2 | 记录“工作组成员”的使用模式 | 1d | 2003-09-30 | 2003-10-01 |  | 1.5d |  | 业务分析人员 | 8h |
| 39 | 1.2.2.3.3 | 记录“主管人员”的使用模式 | 1d | 2003-09-30 | 2003-10-01 |  | 1.5d |  | 业务分析人员 | 8h |
| 40 | 1.2.2.3.4 | 记录“外部项目经理”的使用模式 | 1d | 2003-09-30 | 2003-10-01 |  | 1.5d |  | 业务分析人员 | 8h |
| 41 | 1.2.2.4 | **记录服务器容量** | 1d | 2003-10-01 | 2003-10-02 | 36, 31 | 1.5d | 0d |  | 104h |
| 42 | 1.2.2.4.1 | **确定带宽需求** | 1d | 2003-10-01 | 2003-10-02 |  | 1.5d |  |  | 16h |
| 43 | 1.2.2.4.1.1 | 用户带宽需求 | 1d | 2003-10-01 | 2003-10-02 |  | 1.5d |  | 网络管理员 | 8h |
| 44 | 1.2.2.4.1.2 | 服务器带宽需求 | 1d | 2003-10-01 | 2003-10-02 |  | 1.5d |  | 网络管理员 | 8h |
| 45 | 1.2.2.4.2 | **确定磁盘空间需求** | 1d | 2003-10-01 | 2003-10-02 |  | 1.5d |  |  | 32h |
| 46 | 1.2.2.4.2.1 | 数据库磁盘空间需求 | 1d | 2003-10-01 | 2003-10-02 |  | 1.5d |  | 数据库管理员 | 8h |
| 47 | 1.2.2.4.2.2 | 文档存储的磁盘空间需求 | 1d | 2003-10-01 | 2003-10-02 |  | 1.5d |  | 数据库管理员 | 8h |
| 48 | 1.2.2.4.2.3 | 索引的磁盘空间需求 | 1d | 2003-10-01 | 2003-10-02 |  | 1.5d |  | 数据库管理员 | 8h |
| 49 | 1.2.2.4.2.4 | 冗余的磁盘空间需求 | 1d | 2003-10-01 | 2003-10-02 |  | 1.5d |  | 数据库管理员 | 8h |
| 50 | 1.2.2.4.3 | **确定服务器需求** | 0.5d | 2003-10-01 | 2003-10-01 |  | 2d |  |  | 56h |
| 51 | 1.2.2.4.3.1 | 应用程序需求的服务器数 | 4h | 2003-10-01 | 2003-10-01 |  | 2d |  | 网络管理员; 系统设计师 | 8h |
| 52 | 1.2.2.4.3.2 | 确定测试环境所需的服务器 | 4h | 2003-10-01 | 2003-10-01 |  | 2d |  | 网络管理员; 系统设计师 | 8h |
| 53 | 1.2.2.4.3.3 | 确定培训环境所需的服务器 | 4h | 2003-10-01 | 2003-10-01 |  | 2d |  | 网络管理员; 系统设计师 | 8h |
| 54 | 1.2.2.4.3.4 | 确定冗余的服务器数 | 4h | 2003-10-01 | 2003-10-01 |  | 2d |  | 网络管理员; 系统设计师 | 8h |
| 55 | 1.2.2.4.3.5 | 确定服务器角色 | 4h | 2003-10-01 | 2003-10-01 |  | 2d |  | 网络管理员; 系统设计师 | 8h |
| 56 | 1.2.2.4.3.6 | 确定每个服务器的内存 | 4h | 2003-10-01 | 2003-10-01 |  | 2d |  | 网络管理员; 系统设计师 | 8h |
| 57 | 1.2.2.4.3.7 | 确定每个服务器的处理能力 | 4h | 2003-10-01 | 2003-10-01 |  | 2d |  | 网络管理员; 系统设计师 | 8h |

| ID | WBS | Task | Type | Duration | Start | Finish | Predecessors | Total slack | Free slack | Resources | Work |
| --- | --- | --- | --- | --- | --- | --- | --- | --- | --- | --- | --- |
| 58 | 1.2.2.5 | **盘点和计划台式计算机配置** |  | 1d | 2003-10-01 | 2003-10-02 | 36, 31 | 1.5d | 0d |  | 48h |
| 59 | 1.2.2.5.1 | 盘点台式计算机硬件 |  | 1d | 2003-10-01 | 2003-10-02 |  | 1.5d |  | 台式计算机支持 | 8h |
| 60 | 1.2.2.5.2 | 盘点台式计算机软件 |  | 1d | 2003-10-01 | 2003-10-02 |  | 1.5d |  | 台式计算机支持 | 8h |
| 61 | 1.2.2.5.3 | 确定用户配置文件和自定义 |  | 1d | 2003-10-01 | 2003-10-02 |  | 1.5d |  | 网络管理员; 台式计算机支持 | 16h |
| 62 | 1.2.2.5.4 | 确定用于分发的文件 |  | 1d | 2003-10-01 | 2003-10-02 |  | 1.5d |  | 台式计算机支持 | 8h |
| 63 | 1.2.2.5.5 | 确定多语言需求 |  | 1d | 2003-10-01 | 2003-10-02 |  | 1.5d |  | 台式计算机支持 | 8h |
| 64 | 1.2.2.6 | 完成执行容量计划 | milestone | 0d | 2003-10-02 | 2003-10-02 | 31, 36, 41, 58 | 1.5d |  |  |  |
| 65 | 1.2.3 | **评估迁移需求** |  | 3.5d | 2003-09-29 | 2003-10-02 | 11 | 1d |  |  | 104h |
| 66 | 1.2.3.1 | **确定共存问题** |  | 1d | 2003-09-29 | 2003-09-30 |  | 3.5d | 2.5d |  | 24h |
| 67 | 1.2.3.1.1 | 确定与其他企业应用程序的共存问题 |  | 1d | 2003-09-29 | 2003-09-30 |  | 3.5d |  | 台式计算机支持 | 8h |
| 68 | 1.2.3.1.2 | 确定是否与 Microsoft Project 的早期版本共存 |  | 1d | 2003-09-29 | 2003-09-30 |  | 3.5d |  | 业务分析人员 | 8h |
| 69 | 1.2.3.1.3 | 确定管理共存问题的策略 |  | 4h | 2003-09-29 | 2003-09-29 |  | 4d |  | 业务分析人员; 系统设计师 | 8h |
| 70 | 1.2.3.2 | **确定迁移策略** |  | 3.5d | 2003-09-29 | 2003-10-02 |  | 1d | 0d |  | 80h |
| 71 | 1.2.3.2.1 | 确定用于转换/导入的项目 |  | 1d | 2003-09-29 | 2003-09-30 |  | 3.5d |  | 项目经理 | 8h |
| 72 | 1.2.3.2.2 | 确定用于未导入/转换项目的策略 |  | 1d | 2003-09-29 | 2003-09-30 |  | 2.5d | 1.5d | 项目经理 | 8h |
| 73 | 1.2.3.2.3 | 确定用于迁移的宏 |  | 4h | 2003-09-29 | 2003-09-29 |  | 1d | 0d | 项目经理; 应用程序开发人员 | 8h |
| 74 | 1.2.3.2.4 | 确定用于迁移的模板 |  | 1d | 2003-09-30 | 2003-09-30 | 73 | 1d | 0d | 项目经理 | 8h |
| 75 | 1.2.3.2.5 | 确定用于迁移的自定义集成应用程序 |  | 1d | 2003-10-01 | 2003-10-01 | 74 | 1d | 0d | 项目经理; 应用程序开发人员 | 16h |
| 76 | 1.2.3.2.6 | 确定用于迁移的自定义“项目向导” |  | 1d | 2003-10-02 | 2003-10-02 | 72, 75 | 1d |  | 项目经理; 应用程序开发人员 | 16h |
| 77 | 1.2.3.2.7 | 检查用于从 Microsoft Project Server 2002 升级的数据库迁移工具 |  | 1d | 2003-09-29 | 2003-09-30 |  | 3.5d |  | 数据库管理员 | 8h |
| 78 | 1.2.3.2.8 | 检查用于从 Microsoft SharePoint Team Services 升级的迁移工具 |  | 1d | 2003-09-29 | 2003-09-30 |  | 3.5d |  | 系统设计师 | 8h |
| 79 | 1.2.3.3 | 完成评估迁移需求 | milestone | 0d | 2003-10-02 | 2003-10-02 | 66, 70 | 1d |  |  |  |
| 80 | 1.2.4 | **规划系统集成** |  | 1d | 2003-09-29 | 2003-09-30 | 11 | 3.5d |  |  | 40h |
| 81 | 1.2.4.1 | **确定系统在 EPM 环境中所需的信息** |  | 1d | 2003-09-29 | 2003-09-30 |  | 3.5d | 0d |  | 40h |
| 82 | 1.2.4.1.1 | 评估 HR 和资源池 |  | 1d | 2003-09-29 | 2003-09-30 |  | 3.5d |  | 系统设计师 | 8h |
| 83 | 1.2.4.1.2 | 评估成本跟踪系统 |  | 1d | 2003-09-29 | 2003-09-30 |  | 3.5d |  | 系统设计师 | 8h |
| 84 | 1.2.4.1.3 | 评估其他企业报告系统 |  | 1d | 2003-09-29 | 2003-09-30 |  | 3.5d |  | 系统设计师 | 8h |
| 85 | 1.2.4.1.4 | 评估时间和劳工系统 |  | 1d | 2003-09-29 | 2003-09-30 |  | 3.5d |  | 系统设计师 | 8h |
| 86 | 1.2.4.1.5 | 评估其他系列的商务系统 |  | 1d | 2003-09-29 | 2003-09-30 |  | 3.5d |  | 系统设计师 | 8h |
| 87 | 1.2.4.2 | 完成规划系统集成 | milestone | 0d | 2003-09-30 | 2003-09-30 | 81 | 3.5d |  |  |  |

| ID | WBS | Task | Type | Duration | Start | Finish | Predecessors | Total slack | Free slack | Resources | Work |
| --- | --- | --- | --- | --- | --- | --- | --- | --- | --- | --- | --- |
| 88 | 1.2.5 | **规划基础结构** |  | 4.5d | 2003-09-29 | 2003-10-03 | 11 | 0d |  |  | 432h |
| 89 | 1.2.5.1 | **评估并升级网络** |  | 3.5d | 2003-09-29 | 2003-10-02 |  | 0d |  |  | 112h |
| 90 | 1.2.5.1.1 | **确定现有连接** |  | 1d | 2003-09-29 | 2003-09-30 |  | 0d |  |  | 48h |
| 91 | 1.2.5.1.1.1 | 图解/记录 LAN 连接 |  | 1d | 2003-09-29 | 2003-09-30 |  | 0d |  | 网络管理员; 系统设计师 | 16h |
| 92 | 1.2.5.1.1.2 | 图解/记录 WAN 连接 |  | 1d | 2003-09-29 | 2003-09-30 |  | 0d |  | 网络管理员; 系统设计师 | 16h |
| 93 | 1.2.5.1.1.3 | 评估外部用户连接 |  | 1d | 2003-09-29 | 2003-09-30 |  | 0d |  | 网络管理员; 系统设计师 | 16h |
| 94 | 1.2.5.1.2 | **处理升级** |  | 2.5d | 2003-09-30 | 2003-10-02 | 90 | 0d |  |  | 64h |
| 95 | 1.2.5.1.2.1 | 根据需要增加带宽 |  | 12h | 2003-09-30 | 2003-10-01 |  | 1d |  | 网络管理员; 系统设计师 | 24h |
| 96 | 1.2.5.1.2.2 | 根据需要配置 VPN 解决方案 |  | 20h | 2003-09-30 | 2003-10-02 |  | 0d |  | 网络管理员; 系统设计师 | 40h |
| 97 | 1.2.5.2 | **评估并升级硬件** |  | 1.5d | 2003-09-29 | 2003-09-30 |  | 2d |  |  | 24h |
| 98 | 1.2.5.2.1 | 确定每个项目服务的硬件 |  | 4h | 2003-09-29 | 2003-09-29 |  | 2d | 0d | 服务器管理员; 系统设计师 | 8h |
| 99 | 1.2.5.2.2 | 确定硬件供应商 |  | 4h | 2003-09-30 | 2003-09-30 | 98 | 2d | 0d | 服务器管理员; 系统设计师 | 8h |
| 100 | 1.2.5.2.3 | 订购硬件 |  | 4h | 2003-09-30 | 2003-09-30 | 99 | 2d |  | 服务器管理员; 系统设计师 | 8h |
| 101 | 1.2.5.3 | **评估软件** |  | 1d | 2003-09-29 | 2003-09-30 |  | 2.5d |  |  | 96h |
| 102 | 1.2.5.3.1 | 评估 Microsoft Windows 2000 Server/Microsoft Windows Server 2003 |  | 1d | 2003-09-29 | 2003-09-30 |  | 2.5d |  | 服务器管理员; 系统设计师 | 16h |
| 103 | 1.2.5.3.2 | 评估 Microsoft Internet Information Server |  | 1d | 2003-09-29 | 2003-09-30 |  | 2.5d |  | 服务器管理员; 系统设计师 | 16h |
| 104 | 1.2.5.3.3 | 评估 Microsoft SQL Server |  | 1d | 2003-09-29 | 2003-09-30 |  | 2.5d |  | 服务器管理员; 系统设计师 | 16h |
| 105 | 1.2.5.3.4 | 评估 Microsoft SQL Analysis Services |  | 1d | 2003-09-29 | 2003-09-30 |  | 2.5d |  | 服务器管理员; 系统设计师 | 16h |
| 106 | 1.2.5.3.5 | 评估 Microsoft Windows SharePoint Services |  | 1d | 2003-09-29 | 2003-09-30 |  | 2.5d |  | 服务器管理员; 系统设计师 | 16h |
| 107 | 1.2.5.3.6 | 评估 Microsoft SharePoint Portal Server v2.0 |  | 1d | 2003-09-29 | 2003-09-30 |  | 2.5d |  | 服务器管理员; 系统设计师 | 16h |
| 108 | 1.2.5.4 | **记录基础结构** |  | 1d | 2003-10-03 | 2003-10-03 | 101, 97, 89 | 0d |  |  | 200h |
| 109 | 1.2.5.4.1 | 创建实际实施图表。包括: SQL Server、Analysis Services、Microsoft Office Project Server 2003、Windows SharePoint Services、Microsoft SharePoint Portal Server v2.0、Views Notification Services 和 Session State Server |  | 1d | 2003-10-03 | 2003-10-03 |  | 0d |  | 网络管理员 | 8h |
| 110 | 1.2.5.4.2 | **创建模型配置定义** |  | 1d | 2003-10-03 | 2003-10-03 |  | 0d |  |  | 192h |
| 111 | 1.2.5.4.2.1 | 创建 Microsoft Internet Explorer 定义 |  | 1d | 2003-10-03 | 2003-10-03 |  | 0d |  | 网络管理员; 服务器管理员; 台式计算机支持 | 24h |
| 112 | 1.2.5.4.2.2 | 创建 Project Server 2003 定义 |  | 1d | 2003-10-03 | 2003-10-03 |  | 0d |  | 数据库管理员; 网络管理员; 服务器管理员; 系统设计师 | 32h |
| 113 | 1.2.5.4.2.3 | 创建 SQL Server 定义 |  | 1d | 2003-10-03 | 2003-10-03 |  | 0d |  | 数据库管理员; 网络管理员; 服务器管理员; 系统设计师 | 32h |
| 114 | 1.2.5.4.2.4 | 创建 SQL Server Analysis Services 定义 |  | 1d | 2003-10-03 | 2003-10-03 |  | 0d |  | 数据库管理员; 网络管理员; 服务器管理员; 系统设计师 | 32h |
| 115 | 1.2.5.4.2.5 | 创建 IIS 定义 |  | 1d | 2003-10-03 | 2003-10-03 |  | 0d |  | 网络管理员; 服务器管理员; 系统设计师 | 24h |
| 116 | 1.2.5.4.2.6 | 创建 Windows SharePoint Services 定义 |  | 1d | 2003-10-03 | 2003-10-03 |  | 0d |  | 网络管理员; 服务器管理员; 系统设计师 | 24h |
| 117 | 1.2.5.4.2.7 | 创建 Microsoft SharePoint Portal Server v2.0 定义 |  | 1d | 2003-10-03 | 2003-10-03 |  | 0d |  | 网络管理员; 服务器管理员; 系统设计师 | 24h |
| 118 | 1.2.5.5 | 完成规划基础结构 | milestone | 0d | 2003-10-03 | 2003-10-03 | 108 | 0d |  |  |  |

| ID | WBS | Task | Type | Duration | Start | Finish | Predecessors | Total slack | Free slack | Resources | Work |
| --- | --- | --- | --- | --- | --- | --- | --- | --- | --- | --- | --- |
| 119 | 1.2.6 | **定义安全性** |  | 1d | 2003-09-29 | 2003-09-30 | 11 | 3.5d |  |  | 88h |
| 120 | 1.2.6.1 | 考虑使用 SSL 来访问 SharePoint 技术和 Project Server |  | 1d | 2003-09-29 | 2003-09-30 |  | 3.5d | 0d | 网络管理员; 系统设计师 | 16h |
| 121 | 1.2.6.2 | **定义和记录网络服务帐户** |  | 1d | 2003-09-29 | 2003-09-30 |  | 3.5d | 0d |  | 32h |
| 122 | 1.2.6.2.1 | 设置 SQL Server 服务帐户 |  | 1d | 2003-09-29 | 2003-09-30 |  | 3.5d |  | 网络管理员 | 8h |
| 123 | 1.2.6.2.2 | 设置 Project Server COM+ 程序包帐户 |  | 1d | 2003-09-29 | 2003-09-30 |  | 3.5d |  | 网络管理员 | 8h |
| 124 | 1.2.6.2.3 | 配置 Windows SharePoint Services 服务帐户 |  | 1d | 2003-09-29 | 2003-09-30 |  | 3.5d |  | 网络管理员 | 8h |
| 125 | 1.2.6.2.4 | 配置 Microsoft SharePoint Portal Server v2.0 服务帐户 |  | 1d | 2003-09-29 | 2003-09-30 |  | 3.5d |  | 网络管理员 | 8h |
| 126 | 1.2.6.3 | **定义 Project Server 安全方案** |  | 1d | 2003-09-29 | 2003-09-30 |  | 3.5d | 0d |  | 40h |
| 127 | 1.2.6.3.1 | 记录组 |  | 1d | 2003-09-29 | 2003-09-30 |  | 3.5d |  | 项目经理 | 8h |
| 128 | 1.2.6.3.2 | 记录类别 |  | 1d | 2003-09-29 | 2003-09-30 |  | 3.5d |  | 项目经理 | 8h |
| 129 | 1.2.6.3.3 | 记录安全模板 |  | 1d | 2003-09-29 | 2003-09-30 |  | 3.5d |  | 项目经理 | 8h |
| 130 | 1.2.6.3.4 | 确定组成员 |  | 1d | 2003-09-29 | 2003-09-30 |  | 3.5d |  | 项目经理 | 8h |
| 131 | 1.2.6.3.5 | 确定身份验证方法 |  | 1d | 2003-09-29 | 2003-09-30 |  | 3.5d |  | 项目经理 | 8h |
| 132 | 1.2.6.4 | 完成定义安全性 | milestone | 0d | 2003-09-30 | 2003-09-30 | 120, 121, 126 | 3.5d |  |  |  |
| 133 | 1.2.7 | **定义国际化需求** |  | 1d | 2003-09-29 | 2003-09-30 | 11 | 3.5d |  |  | 16h |
| 134 | 1.2.7.1 | 检查货币需求 |  | 1d | 2003-09-29 | 2003-09-30 |  | 3.5d | 0d | 业务分析人员 | 8h |
| 135 | 1.2.7.2 | 检查语言需求 |  | 1d | 2003-09-29 | 2003-09-30 |  | 3.5d | 0d | 业务分析人员 | 8h |
| 136 | 1.2.7.3 | 完成定义国际化需求 | milestone | 0d | 2003-09-30 | 2003-09-30 | 134, 135 | 3.5d |  |  |  |
| 137 | 1.2.8 | 完成规划 | milestone | 0d | 2003-10-03 | 2003-10-03 | 126, 119, 133, 29, 65, 80, 88 | 0d |  |  |  |
| 138 | 1.3 | **部署** |  | 79.75d | 2003-10-06 | 2004-01-23 | 10 | 0d |  |  | 1660h |
| 139 | 1.3.1 | **部署试生产** |  | 20d | 2003-10-06 | 2003-10-31 |  | 0d |  |  | 694h |
| 140 | 1.3.1.1 | **安装服务器** |  | 17d | 2003-10-06 | 2003-10-28 |  | 3d |  |  | 412h |
| 141 | 1.3.1.1.1 | 安装硬件 |  | 4d | 2003-10-06 | 2003-10-09 |  | 3d | 0d | 服务器管理员 | 32h |
| 142 | 1.3.1.1.2 | **安装软件** |  | 4d | 2003-10-10 | 2003-10-15 | 141 | 3d | 0d |  | 102h |
| 143 | 1.3.1.1.2.1 | 安装操作系统 |  | 4d | 2003-10-10 | 2003-10-15 |  | 3d |  | 服务器管理员 | 32h |
| 144 | 1.3.1.1.2.2 | 安装适当的操作系修补程序 |  | 1d | 2003-10-10 | 2003-10-10 |  | 6d |  | 服务器管理员 | 8h |

| ID | WBS | Task | Duration | Start | Finish | Predecessors | Total slack | Free slack | Resources | Work |
| --- | --- | --- | --- | --- | --- | --- | --- | --- | --- | --- |
| 145 | 1.3.1.1.2.3 | **安装和配置 SQL Server** | 1d | 2003-10-10 | 2003-10-10 |  | 5d | 0d |  | 14h |
| 146 | 1.3.1.1.2.3.1 | 安装 SQL Server | 4h | 2003-10-10 | 2003-10-10 |  | 5d | 0d | 数据库管理员 | 4h |
| 147 | 1.3.1.1.2.3.2 | 创建 Project Server 数据库(运行数据定义脚本或使用安装工具) | 2h | 2003-10-10 | 2003-10-10 | 146 | 5d | 0d | 数据库管理员 | 2h |
| 148 | 1.3.1.1.2.3.3 | 为其他 Project Server 实例创建其他 Project Server 数据库 | 2h | 2003-10-10 | 2003-10-10 | 147 | 5d |  | 数据库管理员 | 2h |
| 149 | 1.3.1.1.2.3.4 | 创建 Project Server 服务用户帐户 | 2h | 2003-10-10 | 2003-10-10 |  | 5.75d |  | 网络管理员 | 2h |
| 150 | 1.3.1.1.2.3.5 | 安装 SQL Server Analysis Services | 4h | 2003-10-10 | 2003-10-10 |  | 5.5d |  | 数据库管理员 | 4h |
| 151 | 1.3.1.1.2.4 | 安装 Windows SharePoint Services | 1d | 2003-10-10 | 2003-10-10 |  | 5d | 0d | 服务器管理员 | 8h |
| 152 | 1.3.1.1.2.5 | 安装 Microsoft SharePoint Portal Server v2.0 | 1d | 2003-10-10 | 2003-10-10 |  | 6d |  | 服务器管理员 | 8h |
| 153 | 1.3.1.1.2.6 | **安装 Project Server** | 1d | 2003-10-13 | 2003-10-13 | 145, 151 | 5d |  |  | 16h |
| 154 | 1.3.1.1.2.6.1 | 安装应用程序服务器 | 1d | 2003-10-13 | 2003-10-13 |  | 5d |  | 服务器管理员 | 8h |
| 155 | 1.3.1.1.2.6.2 | 安装 Project Server (或 Project Server 群集) | 1d | 2003-10-13 | 2003-10-13 |  | 5d |  | 服务器管理员 | 8h |
| 156 | 1.3.1.1.2.7 | 安装终端服务 | 1d | 2003-10-10 | 2003-10-10 |  | 6d |  | 服务器管理员 | 8h |
| 157 | 1.3.1.1.2.8 | 安装适当的应用程序修补程序 | 1d | 2003-10-10 | 2003-10-10 |  | 6d |  | 服务器管理员 | 8h |
| 158 | 1.3.1.1.3 | **配置软件** | 7.5d | 2003-10-16 | 2003-10-27 | 142 | 3d |  |  | 222h |
| 159 | 1.3.1.1.3.1 | **配置 Project Server** | 7.5d | 2003-10-16 | 2003-10-27 |  | 3d | 0d |  | 222h |
| 160 | 1.3.1.1.3.1.1 | 配置 Microsoft Project Server 子网站 | 2h | 2003-10-16 | 2003-10-16 |  | 3d | 0d | 服务器管理员 | 2h |
| 161 | 1.3.1.1.3.1.2 | 在企业全局模板中实施 EPM Enterprise Implementation Framework 执行结果 | 2d | 2003-10-16 | 2003-10-20 | 160 | 3d | 0d | 业务分析人员 | 16h |
| 162 | 1.3.1.1.3.1.3 | 将资源和用户映射到 Windows 用户帐户 | 1d | 2003-10-20 | 2003-10-21 | 161 | 7.25d |  | 网络管理员 | 8h |
| 163 | 1.3.1.1.3.1.4 | 在企业资源库中应用资源 | 1d | 2003-10-20 | 2003-10-21 | 161 | 7.25d |  | 网络管理员 | 8h |
| 164 | 1.3.1.1.3.1.5 | 在 Project Server 中实施安全架构 | 4h | 2003-10-20 | 2003-10-20 | 161 | 7.75d |  | 业务分析人员 | 4h |
| 165 | 1.3.1.1.3.1.6 | 在 Microsoft Office Project Web Access 2003 中实施“项目中心”视图 | 1d | 2003-10-20 | 2003-10-21 | 161 | 7.25d |  | 项目经理 | 8h |
| 166 | 1.3.1.1.3.1.7 | 在 Microsoft Office Project Web Access 2003 中实施“项目” 视图 | 1d | 2003-10-20 | 2003-10-21 | 161 | 7.25d |  | 项目经理 | 8h |
| 167 | 1.3.1.1.3.1.8 | 在 Microsoft Office Project Web Access 2003 中实施“资源中心”视图 | 1d | 2003-10-20 | 2003-10-21 | 161 | 7.25d |  | 项目经理 | 8h |
| 168 | 1.3.1.1.3.1.9 | 在 Microsoft Office Project Web Access 2003 中使用“工作分配”视图 | 1d | 2003-10-20 | 2003-10-21 | 161 | 7.25d |  | 项目经理 | 8h |
| 169 | 1.3.1.1.3.1.10 | 在 Microsoft Office Project Web Access 2003 中实施“项目组合分析器”视图 | 4h | 2003-10-20 | 2003-10-20 | 161 | 7.75d |  | 项目经理; 应用程序开发人员 | 8h |
| 170 | 1.3.1.1.3.1.11 | 在 Microsoft Office Project Web Access 2003 中创建模型 | 4h | 2003-10-20 | 2003-10-20 | 161 | 7.75d |  | 项目经理 | 4h |
| 171 | 1.3.1.1.3.1.12 | 获取和配置 SMTP 服务器信息 | 2h | 2003-10-16 | 2003-10-16 | 160 | 4.75d | 1.75d | 网络管理员 | 2h |
| 172 | 1.3.1.1.3.1.13 | 在 Project Server 中实施通知和提醒 | 2h | 2003-10-20 | 2003-10-20 | 171, 161 | 3d | 0d | 业务分析人员 | 2h |

| ID | WBS | Task | Duration | Start | Finish | Predecessors | Total slack | Free slack | Resources | Work |
| --- | --- | --- | --- | --- | --- | --- | --- | --- | --- | --- |
| 173 | 1.3.1.1.3.1.14 | **执行迁移计划** | 5d | 2003-10-20 | 2003-10-27 | 172 | 3d |  |  | 136h |
| 174 | 1.3.1.1.3.1.14.1 | 迁移资源 | 2d | 2003-10-20 | 2003-10-22 |  | 6d |  | 项目经理 | 16h |
| 175 | 1.3.1.1.3.1.14.2 | 迁移项目计划 | 2d | 2003-10-20 | 2003-10-22 |  | 6d |  | 项目经理 | 16h |
| 176 | 1.3.1.1.3.1.14.3 | 迁移模板 | 1d | 2003-10-20 | 2003-10-21 |  | 7d |  | 项目经理 | 8h |
| 177 | 1.3.1.1.3.1.14.4 | 迁移数据库 | 2d | 2003-10-20 | 2003-10-22 |  | 6d |  | 项目经理 | 16h |
| 178 | 1.3.1.1.3.1.14.5 | 迁移宏 | 5d | 2003-10-20 | 2003-10-27 |  | 3d |  | 应用程序开发人员 | 40h |
| 179 | 1.3.1.1.3.1.14.6 | 迁移自定义“项目向导” | 5d | 2003-10-20 | 2003-10-27 |  | 3d |  | 应用程序开发人员 | 40h |
| 180 | 1.3.1.1.4 | **配置 Microsoft SharePoint Portal Server v2.0** | 0.5d | 2003-10-27 | 2003-10-27 | 159 | 3d | 0d |  | 12h |
| 181 | 1.3.1.1.4.1 | 在 Microsoft Office Project Web Access 2003 中设置 Microsoft SharePoint Portal Server v2.0 连接 | 4h | 2003-10-27 | 2003-10-27 |  | 3d |  | 服务器管理员 | 4h |
| 182 | 1.3.1.1.4.2 | 配置 Microsoft SharePoint Portal Server v2.0 索引 | 4h | 2003-10-27 | 2003-10-27 |  | 3d |  | 服务器管理员 | 4h |
| 183 | 1.3.1.1.4.3 | 将现有工作组网站连接到门户 | 4h | 2003-10-27 | 2003-10-27 |  | 3d |  | 服务器管理员 | 4h |
| 184 | 1.3.1.1.5 | **配置 Windows SharePoint Services** | 1d | 2003-10-28 | 2003-10-28 | 180 | 3d |  |  | 28h |
| 185 | 1.3.1.1.5.1 | 验证 PSCOMPlus 设置 | 2h | 2003-10-28 | 2003-10-28 |  | 3.75d |  | 服务器管理员 | 2h |
| 186 | 1.3.1.1.5.2 | 配置代理服务器 | 2h | 2003-10-28 | 2003-10-28 |  | 3.75d |  | 网络管理员 | 2h |
| 187 | 1.3.1.1.5.3 | 配置 SharePoint 连接设置和网站创建设置 | 1d | 2003-10-28 | 2003-10-28 |  | 3d |  | 服务器管理员 | 8h |
| 188 | 1.3.1.1.5.4 | 配置 Windows SharePoint Services 网站模板 | 1d | 2003-10-28 | 2003-10-28 |  | 3d |  | 服务器管理员 | 8h |
| 189 | 1.3.1.1.5.5 | 配置跨网站安全性 | 1d | 2003-10-28 | 2003-10-28 |  | 3d |  | 服务器管理员 | 8h |
| 190 | 1.3.1.1.6 | **配置 Analysis Services** | 1d | 2003-10-27 | 2003-10-28 | 159 | 3.5d |  |  | 16h |
| 191 | 1.3.1.1.6.1 | 指派多维数据集角色和权限 | 1d | 2003-10-27 | 2003-10-28 |  | 3.5d |  | 数据库管理员 | 8h |
| 192 | 1.3.1.1.6.2 | 验证 PSCOMPlus OLAP 标识 | 1d | 2003-10-27 | 2003-10-28 |  | 3.5d |  | 网络管理员 | 8h |
| 193 | 1.3.1.2 | **执行台式计算机部署** | 5d | 2003-10-06 | 2003-10-10 |  | 0d |  |  | 120h |
| 194 | 1.3.1.2.1 | **执行脚本部署** | 2d | 2003-10-06 | 2003-10-07 |  | 3d |  |  | 20h |
| 195 | 1.3.1.2.1.1 | 创建部署脚本 | 2d | 2003-10-06 | 2003-10-07 |  | 3d |  | 台式计算机支持 | 16h |
| 196 | 1.3.1.2.1.2 | 排定部署脚本运行的日程 | 4h | 2003-10-06 | 2003-10-06 |  | 4.5d |  | 台式计算机支持 | 4h |
| 197 | 1.3.1.2.2 | 部署终端服务客户端 | 20h | 2003-10-06 | 2003-10-08 |  | 2.5d |  | 台式计算机支持 | 20h |

Notes:
- 197: 如果有项目经理通过 WAN 连接到 Project Server，则使用终端服务客户端会改进性能。

| ID | WBS | Task | Type | Duration | Start | Finish | Predecessors | Total slack | Resources | Work |
| --- | --- | --- | --- | --- | --- | --- | --- | --- | --- | --- |
| 198 | 1.3.1.2.3 | **执行手动部署** |  | 3d | 2003-10-06 | 2003-10-08 |  | 2d |  | 28h |
| 199 | 1.3.1.2.3.1 | 为运行安装程序编制说明和文档 |  | 3d | 2003-10-06 | 2003-10-08 |  | 2d | 台式计算机支持 | 24h |
| 200 | 1.3.1.2.3.2 | 提供运行安装程序的位置 |  | 4h | 2003-10-06 | 2003-10-06 |  | 4.5d | 网络管理员 | 4h |
| 201 | 1.3.1.2.4 | **配置 Internet Explorer** |  | 0.5d | 2003-10-06 | 2003-10-06 |  | 4.5d |  | 12h |
| 202 | 1.3.1.2.4.1 | 配置可信网站 |  | 4h | 2003-10-06 | 2003-10-06 |  | 4.5d | 台式计算机支持 | 4h |
| 203 | 1.3.1.2.4.2 | 配置自动下载可信网站区域中的 ActiveX |  | 4h | 2003-10-06 | 2003-10-06 |  | 4.5d | 台式计算机支持 | 4h |
| 204 | 1.3.1.2.4.3 | 允许 Cookie |  | 4h | 2003-10-06 | 2003-10-06 |  | 4.5d | 台式计算机支持 | 4h |
| 205 | 1.3.1.2.5 | 根据需要在台式计算机上安装 Microsoft Office System |  | 5d | 2003-10-06 | 2003-10-10 |  | 0d | 台式计算机支持 | 40h |
| 206 | 1.3.1.3 | 实施规划的系统集成的试生产版本 |  | 10d | 2003-10-13 | 2003-10-24 | 193 | 0d | 应用程序开发人员 | 80h |
| 207 | 1.3.1.4 | **测试试生产部署** |  | 5d | 2003-10-27 | 2003-10-31 | 206 | 0d |  | 82h |
| 208 | 1.3.1.4.1 | 测试系统功能 |  | 3d | 2003-10-27 | 2003-10-29 |  | 2d | 项目经理 | 24h |
| 209 | 1.3.1.4.2 | **解决问题** |  | 5d | 2003-10-27 | 2003-10-31 |  | 0d |  | 50h |
| 210 | 1.3.1.4.2.1 | 解决连接性问题 |  | 5d | 2003-10-27 | 2003-10-31 |  | 0d | 网络管理员 [25%] | 10h |
| 211 | 1.3.1.4.2.2 | 解决安装问题 |  | 5d | 2003-10-27 | 2003-10-31 |  | 0d | 数据库管理员 [25%]; 服务器管理员 [25%]; 系统设计师 [25%]; 台式计算机支持 [25%] | 40h |
| 212 | 1.3.1.4.3 | 擦除测试数据 |  | 1d | 2003-10-27 | 2003-10-27 |  | 4d | 数据库管理员 | 8h |
| 213 | 1.3.1.5 | 完成部署试生产 | milestone | 0d | 2003-10-31 | 2003-10-31 | 140, 193, 207 | 0d |  |  |
| 214 | 1.3.2 | 将试生产结果与成功条件进行比较 |  | 5d | 2003-11-03 | 2003-11-07 | 139 | 0d | 业务分析人员; 项目经理; 工作组成员 | 120h |
| 215 | 1.3.3 | 生产部署得到批准 | milestone | 0d | 2003-11-07 | 2003-11-07 | 214 | 0d |  |  |
| 216 | 1.3.4 | **部署生产系统** |  | 50.75d | 2003-11-10 | 2004-01-19 | 215 | 0d |  | 798h |
| 217 | 1.3.4.1 | **安装服务器** |  | 14.75d | 2003-11-10 | 2003-11-28 |  | 0d |  | 412h |
| 218 | 1.3.4.1.1 | 安装硬件 |  | 4d | 2003-11-10 | 2003-11-13 |  | 0d | 服务器管理员 | 32h |
| 219 | 1.3.4.1.2 | **安装软件** |  | 4d | 2003-11-14 | 2003-11-19 | 218 | 0d |  | 102h |
| 220 | 1.3.4.1.2.1 | 安装操作系统 |  | 4d | 2003-11-14 | 2003-11-19 |  | 0d | 服务器管理员 | 32h |
| 221 | 1.3.4.1.2.2 | 安装适当的操作系统修补程序 |  | 1d | 2003-11-14 | 2003-11-14 |  | 3d | 服务器管理员 | 8h |

| ID | WBS | Task | Duration | Start | Finish | Predecessors | Total slack | Free slack | Resources | Work |
| --- | --- | --- | --- | --- | --- | --- | --- | --- | --- | --- |
| 222 | 1.3.4.1.2.3 | **安装和配置 SQL Server** | 1d | 2003-11-14 | 2003-11-14 |  | 2d | 0d |  | 14h |
| 223 | 1.3.4.1.2.3.1 | 安装 SQL Server | 4h | 2003-11-14 | 2003-11-14 |  | 2d | 0d | 数据库管理员 | 4h |
| 224 | 1.3.4.1.2.3.2 | 创建 Project Server 数据库(运行数据定义脚本或使用安装工具) | 2h | 2003-11-14 | 2003-11-14 | 223 | 2d | 0d | 数据库管理员 | 2h |
| 225 | 1.3.4.1.2.3.3 | 为其他 Project Server 实例创建其他 Project Server 数据库 | 2h | 2003-11-14 | 2003-11-14 | 224 | 2d |  | 数据库管理员 | 2h |
| 226 | 1.3.4.1.2.3.4 | 创建 Project Server 服务用户帐户 | 2h | 2003-11-14 | 2003-11-14 |  | 2.75d |  | 网络管理员 | 2h |
| 227 | 1.3.4.1.2.3.5 | 安装 SQL Server Analysis Services | 4h | 2003-11-14 | 2003-11-14 |  | 2.5d |  | 数据库管理员 | 4h |
| 228 | 1.3.4.1.2.4 | 安装 Windows SharePoint Services | 1d | 2003-11-14 | 2003-11-14 |  | 2d | 0d | 服务器管理员 | 8h |
| 229 | 1.3.4.1.2.5 | 安装 Microsoft SharePoint Portal Server v2.0 | 1d | 2003-11-14 | 2003-11-14 |  | 3d |  | 服务器管理员 | 8h |
| 230 | 1.3.4.1.2.6 | **安装 Project Server** | 1d | 2003-11-17 | 2003-11-17 | 222, 228 | 2d |  |  | 16h |
| 231 | 1.3.4.1.2.6.1 | 安装应用程序服务器 | 1d | 2003-11-17 | 2003-11-17 |  | 2d |  | 服务器管理员 | 8h |
| 232 | 1.3.4.1.2.6.2 | 安装 Project Server (或 Project Server 群集) | 1d | 2003-11-17 | 2003-11-17 |  | 2d |  | 服务器管理员 | 8h |
| 233 | 1.3.4.1.2.7 | 安装终端服务 | 1d | 2003-11-14 | 2003-11-14 |  | 3d |  | 服务器管理员 | 8h |
| 234 | 1.3.4.1.2.8 | 安装适当的应用程序修补程序 | 1d | 2003-11-14 | 2003-11-14 |  | 3d |  | 服务器管理员 | 8h |
| 235 | 1.3.4.1.3 | **配置软件** | 6.75d | 2003-11-20 | 2003-11-28 | 219 | 0d |  |  | 278h |
| 236 | 1.3.4.1.3.1 | **配置 Project Server** | 5.75d | 2003-11-20 | 2003-11-27 |  | 0d |  |  | 222h |
| 237 | 1.3.4.1.3.1.1 | 配置 Project Server 子网站 | 2h | 2003-11-20 | 2003-11-20 |  | 0d |  | 服务器管理员 | 2h |
| 238 | 1.3.4.1.3.1.2 | 在企业全局模板中实施 EPM Enterprise Implementation Framework 执行结果 | 2d | 2003-11-20 | 2003-11-24 | 237 | 2.5d | 0d | 业务分析人员 | 16h |
| 239 | 1.3.4.1.3.1.3 | 将资源和用户映射到 Windows 用户帐户 | 1d | 2003-11-24 | 2003-11-25 | 238 | 2.5d |  | 网络管理员 | 8h |
| 240 | 1.3.4.1.3.1.4 | 在企业资源库中应用资源 | 1d | 2003-11-20 | 2003-11-21 | 237 | 4.5d |  | 网络管理员 | 8h |
| 241 | 1.3.4.1.3.1.5 | 在 Project Server 中实施安全架构 | 4h | 2003-11-20 | 2003-11-20 | 237 | 5d |  | 业务分析人员 | 4h |
| 242 | 1.3.4.1.3.1.6 | 在 Microsoft Office Project Web Access 2003 中实施“项目中心”视图 | 1d | 2003-11-20 | 2003-11-21 | 237 | 4.5d |  | 项目经理 | 8h |
| 243 | 1.3.4.1.3.1.7 | 在 Microsoft Office Project Web Access 2003 中实施“项目”视图 | 1d | 2003-11-20 | 2003-11-21 | 237 | 4.5d |  | 项目经理 | 8h |
| 244 | 1.3.4.1.3.1.8 | 在 Microsoft Office Project Web Access 2003 中实施“资源中心”视图 | 4h | 2003-11-20 | 2003-11-20 | 237 | 5d |  | 项目经理; 应用程序开发人员 | 8h |
| 245 | 1.3.4.1.3.1.9 | 在 Microsoft Office Project Web Access 2003 中使用“工作分配”视图 | 1d | 2003-11-20 | 2003-11-20 |  | 4.75d |  | 项目经理 | 8h |
| 246 | 1.3.4.1.3.1.10 | 在 Microsoft Office Project Web Access 2003 中实施“项目组合分析器”视图 | 1d | 2003-11-20 | 2003-11-20 |  | 4.75d |  | 项目经理 | 8h |
| 247 | 1.3.4.1.3.1.11 | 在 Microsoft Office Project Web Access 2003 中创建模型 | 4h | 2003-11-20 | 2003-11-20 | 237 | 5d |  | 项目经理 | 4h |
| 248 | 1.3.4.1.3.1.12 | 获取和配置 SMTP 服务器信息 | 2h | 2003-11-20 | 2003-11-20 | 237 | 0d |  | 网络管理员 | 2h |
| 249 | 1.3.4.1.3.1.13 | 在 Project Server 中实施通知和提醒 | 2h | 2003-11-20 | 2003-11-20 | 248 | 0d |  | 业务分析人员 | 2h |

| ID | WBS | Task | Duration | Start | Finish | Predecessors | Total slack | Resources | Work |
| --- | --- | --- | --- | --- | --- | --- | --- | --- | --- |
| 250 | 1.3.4.1.3.1.14 | **执行迁移计划** | 5d | 2003-11-20 | 2003-11-27 | 249 | 0d |  | 136h |
| 251 | 1.3.4.1.3.1.14.1 | 迁移资源 | 2d | 2003-11-20 | 2003-11-24 |  | 3d | 项目经理 | 16h |
| 252 | 1.3.4.1.3.1.14.2 | 迁移项目计划 | 2d | 2003-11-20 | 2003-11-24 |  | 3d | 项目经理 | 16h |
| 253 | 1.3.4.1.3.1.14.3 | 迁移模板 | 1d | 2003-11-20 | 2003-11-21 |  | 4d | 项目经理 | 8h |
| 254 | 1.3.4.1.3.1.14.4 | 迁移数据库 | 2d | 2003-11-20 | 2003-11-24 |  | 3d | 项目经理 | 16h |
| 255 | 1.3.4.1.3.1.14.5 | 迁移宏 | 5d | 2003-11-20 | 2003-11-27 |  | 0d | 应用程序开发人员 | 40h |
| 256 | 1.3.4.1.3.1.14.6 | 迁移自定义“项目向导” | 5d | 2003-11-20 | 2003-11-27 |  | 0d | 应用程序开发人员 | 40h |
| 257 | 1.3.4.1.3.2 | **配置 Microsoft SharePoint Portal Server v2.0** | 0.5d | 2003-11-27 | 2003-11-28 | 236 | 0.5d |  | 12h |
| 258 | 1.3.4.1.3.2.1 | 在 Microsoft Office Project Web Access 2003 中设置 Microsoft SharePoint Portal Server v2.0 连接 | 4h | 2003-11-27 | 2003-11-28 |  | 0.5d | 服务器管理员 | 4h |
| 259 | 1.3.4.1.3.2.2 | 配置 Microsoft SharePoint Portal Server v2.0 索引 | 4h | 2003-11-27 | 2003-11-28 |  | 0.5d | 服务器管理员 | 4h |
| 260 | 1.3.4.1.3.2.3 | 将现有工作组网站连接到门户 | 4h | 2003-11-27 | 2003-11-28 |  | 0.5d | 服务器管理员 | 4h |
| 261 | 1.3.4.1.3.3 | **配置 Windows SharePoint Services** | 1d | 2003-11-27 | 2003-11-28 | 236 | 0d |  | 28h |
| 262 | 1.3.4.1.3.3.1 | 验证 PSCOMPlus 设置 | 2h | 2003-11-27 | 2003-11-27 |  | 0.75d | 服务器管理员 | 2h |
| 263 | 1.3.4.1.3.3.2 | 配置代理服务器 | 2h | 2003-11-27 | 2003-11-27 |  | 0.75d | 网络管理员 | 2h |
| 264 | 1.3.4.1.3.3.3 | 配置 SharePoint 连接设置和网站创建设置 | 1d | 2003-11-27 | 2003-11-28 |  | 0d | 服务器管理员 | 8h |
| 265 | 1.3.4.1.3.3.4 | 配置 Windows SharePoint Services 网站模板 | 1d | 2003-11-27 | 2003-11-28 |  | 0d | 服务器管理员 | 8h |
| 266 | 1.3.4.1.3.3.5 | 配置跨网站安全性 | 1d | 2003-11-27 | 2003-11-28 |  | 0d | 服务器管理员 | 8h |
| 267 | 1.3.4.1.3.4 | **配置 Analysis Services** | 1d | 2003-11-27 | 2003-11-28 | 236 | 0d |  | 16h |
| 268 | 1.3.4.1.3.4.1 | 指派多维数据集角色和权限 | 1d | 2003-11-27 | 2003-11-28 |  | 0d | 数据库管理员 | 8h |
| 269 | 1.3.4.1.3.4.2 | 验证 PSCOMPlus OLAP 标识 | 1d | 2003-11-27 | 2003-11-28 |  | 0d | 网络管理员 | 8h |
| 270 | 1.3.4.2 | **执行台式计算机部署** | 5d | 2003-11-28 | 2003-12-05 | 217 | 0d |  | 120h |
| 271 | 1.3.4.2.1 | **执行脚本部署** | 2d | 2003-11-28 | 2003-12-02 |  | 3d |  | 20h |
| 272 | 1.3.4.2.1.1 | 创建部署脚本 | 2d | 2003-11-28 | 2003-12-02 |  | 3d | 台式计算机支持 | 16h |
| 273 | 1.3.4.2.1.2 | 排定部署脚本运行的日程 | 4h | 2003-11-28 | 2003-12-01 |  | 4.5d | 台式计算机支持 | 4h |
| 274 | 1.3.4.2.2 | 部署终端服务客户端 | 20h | 2003-11-28 | 2003-12-03 |  | 2.5d | 台式计算机支持 | 20h |

Notes:
- 274: 如果有项目经理通过 WAN 连接到 Project Server，则使用终端服务客户端会改进性能。

| ID | WBS | Task | Type | Duration | Start | Finish | Predecessors | Total slack | Free slack | Resources | Work |
| --- | --- | --- | --- | --- | --- | --- | --- | --- | --- | --- | --- |
| 275 | 1.3.4.2.3 | **执行手动部署** |  | 3d | 2003-11-28 | 2003-12-03 |  | 2d |  |  | 28h |
| 276 | 1.3.4.2.3.1 | 为运行安装程序编制说明和文档 |  | 3d | 2003-11-28 | 2003-12-03 |  | 2d |  | 台式计算机支持 | 24h |
| 277 | 1.3.4.2.3.2 | 提供运行安装程序的位置 |  | 4h | 2003-11-28 | 2003-12-01 |  | 4.5d |  | 网络管理员 | 4h |
| 278 | 1.3.4.2.4 | **配置 Internet Explorer** |  | 0.5d | 2003-11-28 | 2003-12-01 |  | 4.5d |  |  | 12h |
| 279 | 1.3.4.2.4.1 | 配置可信网站 |  | 4h | 2003-11-28 | 2003-12-01 |  | 4.5d |  | 台式计算机支持 | 4h |
| 280 | 1.3.4.2.4.2 | 配置自动下载可信网站区域中的 ActiveX |  | 4h | 2003-11-28 | 2003-12-01 |  | 4.5d |  | 台式计算机支持 | 4h |
| 281 | 1.3.4.2.4.3 | 允许 Cookie |  | 4h | 2003-11-28 | 2003-12-01 |  | 4.5d |  | 台式计算机支持 | 4h |
| 282 | 1.3.4.2.5 | 根据需要在台式计算机上安装 Microsoft Office System |  | 5d | 2003-11-28 | 2003-12-05 |  | 0d |  | 台式计算机支持 | 40h |
| 283 | 1.3.4.3 | 实施规划的系统集成的产品版本 |  | 30d | 2003-12-05 | 2004-01-16 | 270 | 0d |  | 应用程序开发人员 | 240h |
| 284 | 1.3.4.4 | **测试生产部署** |  | 1d | 2004-01-16 | 2004-01-19 | 283 | 0d |  |  | 26h |
| 285 | 1.3.4.4.1 | 测试系统功能 |  | 1d | 2004-01-16 | 2004-01-19 |  | 0d |  | 项目经理 | 8h |
| 286 | 1.3.4.4.2 | **解决问题** |  | 1d | 2004-01-16 | 2004-01-19 |  | 0d |  |  | 10h |
| 287 | 1.3.4.4.2.1 | 解决连接性问题 |  | 1d | 2004-01-16 | 2004-01-19 |  | 0d |  | 网络管理员 [25%] | 2h |
| 288 | 1.3.4.4.2.2 | 解决安装问题 |  | 1d | 2004-01-16 | 2004-01-19 |  | 0d |  | 数据库管理员 [25%]; 服务器管理员 [25%]; 系统设计师 [25%]; 台式计算机支持 [25%] | 8h |
| 289 | 1.3.4.4.3 | 擦除测试数据 |  | 1d | 2004-01-16 | 2004-01-19 |  | 0d |  | 数据库管理员 | 8h |
| 290 | 1.3.4.5 | 完成部署生产系统 | milestone | 0d | 2004-01-19 | 2004-01-19 | 284 | 0d |  | 业务分析人员; 项目经理; 工作组成员 |  |
| 291 | 1.3.5 | **将试生产数据迁移到产品** |  | 4d | 2004-01-19 | 2004-01-23 | 216 | 0d |  |  | 48h |
| 292 | 1.3.5.1 | 迁移试生产数据库 |  | 1d | 2004-01-19 | 2004-01-20 |  | 0d |  | 数据库管理员 | 8h |
| 293 | 1.3.5.2 | 迁移 Windows SharePoint Services 信息 |  | 2d | 2004-01-20 | 2004-01-22 | 292 | 0d |  | 数据库管理员; 服务器管理员 | 32h |
| 294 | 1.3.5.3 | 迁移或重建 OLAP 多维数据集 |  | 4h | 2004-01-22 | 2004-01-23 | 293 | 0d |  | 数据库管理员 | 4h |
| 295 | 1.3.5.4 | 迁移“项目组合分析器”视图 |  | 4h | 2004-01-23 | 2004-01-23 | 294 | 0d |  | 数据库管理员 | 4h |
| 296 | 1.3.5.5 | 完成将试生产数据迁移到产品 | milestone | 0d | 2004-01-23 | 2004-01-23 | 295 | 0d |  |  |  |
| 297 | 1.3.6 | 完成部署 | milestone | 0d | 2004-01-23 | 2004-01-23 | 216, 291 | 0d |  |  |  |
| 298 | 1.4 | **部署后** |  | 30d | 2004-01-23 | 2004-03-05 | 138 | 0d |  |  | 274.4h |
| 299 | 1.4.1 | **实施和测试备份** |  | 1.25d | 2004-01-23 | 2004-01-26 |  | 28.75d |  |  | 40h |
| 300 | 1.4.1.1 | 实施 Project Server 的备份策略 |  | 4h | 2004-01-23 | 2004-01-26 |  | 28.75d | 0d | 数据库管理员; 服务器管理员 | 8h |
| 301 | 1.4.1.2 | 实施 Windows SharePoint Services 的备份策略 |  | 4h | 2004-01-23 | 2004-01-26 |  | 28.75d | 0d | 数据库管理员; 服务器管理员 | 8h |
| 302 | 1.4.1.3 | 测试 Project Server 备份策略 |  | 4h | 2004-01-26 | 2004-01-26 | 300 | 28.75d | 0d | 数据库管理员; 服务器管理员 | 8h |
| 303 | 1.4.1.4 | 测试 Windows SharePoint Services 备份策略 |  | 4h | 2004-01-26 | 2004-01-26 | 301 | 28.75d | 0d | 数据库管理员; 服务器管理员 | 8h |
| 304 | 1.4.1.5 | 实施和测试灾难计划与恢复策略 |  | 2h | 2004-01-26 | 2004-01-26 | 302, 303 | 28.75d | 0d | 数据库管理员; 网络管理员; 服务器管理员; 系统设计师 | 8h |
| 305 | 1.4.1.6 | 完成实施和测试备份 | milestone | 0d | 2004-01-26 | 2004-01-26 | 304 | 28.75d |  |  |  |

| ID | WBS | Task | Type | Duration | Start | Finish | Predecessors | Total slack | Free slack | Resources | Work |
| --- | --- | --- | --- | --- | --- | --- | --- | --- | --- | --- | --- |
| 306 | 1.4.2 | **实施性能调整和监控** |  | 30d | 2004-01-23 | 2004-03-05 |  | 0d |  |  | 115.2h |
| 307 | 1.4.2.1 | 使用性能监视器观察性能参数 |  | 30d | 2004-01-23 | 2004-03-05 |  | 0d |  | 数据库管理员 [6%]; 服务器管理员 [6%] | 28.8h |
| 308 | 1.4.2.2 | 比较计划性能 |  | 30d | 2004-01-23 | 2004-03-05 |  | 0d |  | 数据库管理员 [6%]; 服务器管理员 [6%] | 28.8h |
| 309 | 1.4.2.3 | 根据需要调整设置 |  | 30d | 2004-01-23 | 2004-03-05 |  | 0d |  | 数据库管理员 [6%]; 服务器管理员 [6%] | 28.8h |
| 310 | 1.4.2.4 | 适当地重新预测要求和计划 |  | 30d | 2004-01-23 | 2004-03-05 |  | 0d |  | 数据库管理员 [6%]; 服务器管理员 [6%] | 28.8h |
| 311 | 1.4.2.5 | 完成实施性能调整和监控 | milestone | 0d | 2004-03-05 | 2004-03-05 | 307, 308, 309, 310 | 0d |  |  |  |
| 312 | 1.4.3 | **设置系统维护** |  | 30d | 2004-01-23 | 2004-03-05 |  | 0d |  |  | 23.2h |
| 313 | 1.4.3.1 | 创建 SQL Server 维护计划 |  | 4h | 2004-01-23 | 2004-01-26 |  | 29.5d |  | 数据库管理员 | 4h |
| 314 | 1.4.3.2 | 管理用户帐户 |  | 30d | 2004-01-23 | 2004-03-05 |  | 0d |  | 数据库管理员 [4%] | 9.6h |
| 315 | 1.4.3.3 | 监控日志和数据文件 |  | 30d | 2004-01-23 | 2004-03-05 |  | 0d |  | 数据库管理员 [4%] | 9.6h |
| 316 | 1.4.3.4 | 完成设置系统维护 | milestone | 0d | 2004-03-05 | 2004-03-05 | 313, 314, 315 | 0d |  |  |  |
| 317 | 1.4.4 | 获得用户反馈 |  | 1d | 2004-01-23 | 2004-01-26 |  | 24d | 0d | 业务分析人员; 项目经理; 工作组成员 | 24h |
| 318 | 1.4.5 | 评估经验教训 |  | 1d | 2004-01-26 | 2004-01-27 | 317 | 24d | 0d | 业务分析人员; 项目经理; 工作组成员 | 24h |
| 319 | 1.4.6 | 根据需要修改项目 |  | 3d | 2004-01-27 | 2004-01-30 | 318 | 24d | 0d | 业务分析人员 | 24h |
| 320 | 1.4.7 | 建立未来的 Microsoft Project 用户工作组 |  | 1d | 2004-01-30 | 2004-02-02 | 319 | 24d |  | 业务分析人员; 项目经理; 工作组成员 | 24h |
| 321 | 1.4.8 | 完成部署后工作 | milestone | 0d | 2004-03-05 | 2004-03-05 | 319, 312, 306, 299 | 0d |  |  |  |
| 322 | 1.5 | 完成 Microsoft Project 2003 部署 | milestone | 0d | 2004-03-05 | 2004-03-05 | 298 | 0d |  |  |  |
