# Microsoft SharePoint Portal Server v2_0 部署

Schedule from MS Project, 2003-09-15 to 2004-05-04.

## Calendars

- 标准: Mon-Fri 08:00-12:00, 13:00-17:00; Sat-Sun off.

## Resources

| Resource |
| --- |
| 项目经理 |
| 网络管理员 |
| 部署管理员 |
| 台式计算机管理员 |
| Intranet/Internet 管理员 |
| 工作区协调员 |
| 数据库管理员 |
| 测试/QA 负责人 |
| 风险承担者 |
| 教育/培训负责人 |

## Schedule

| ID | WBS | Task | Type | Duration | Start | Finish | Predecessors | Total slack | Resources | Work |
| --- | --- | --- | --- | --- | --- | --- | --- | --- | --- | --- |
| 1 | 1 | **Microsoft SharePoint Portal Server v2.0 部署** |  | 166.75d | 2003-09-15 | 2004-05-04 |  | 0d |  | 6324h |
| 2 | 1.1 | **构想** |  | 5.75d | 2003-09-15 | 2003-09-22 |  | 0d |  | 88h |
| 3 | 1.1.1 | 评估 Microsoft SharePoint Portal Server v2.0 功能 |  | 2d | 2003-09-15 | 2003-09-16 |  | 0d | 网络管理员; Intranet/Internet 管理员; 风险承担者 | 48h |
| 4 | 1.1.2 | 评估 Microsoft SharePoint Portal Server v2.0 的公司目标(公司知识共享) |  | 2d | 2003-09-17 | 2003-09-18 | 3 | 0d | 风险承担者 | 16h |
| 5 | 1.1.3 | 阐明初步成本/利润分析 |  | 4h | 2003-09-19 | 2003-09-19 | 4 | 0d | 风险承担者 | 4h |
| 6 | 1.1.4 | 确定项目范围(实验室、试生产、国际/地区部署、共存策略等) |  | 4h | 2003-09-19 | 2003-09-19 | 5 | 0d | 项目经理; 风险承担者 | 8h |
| 7 | 1.1.5 | 确定主要里程碑 |  | 2h | 2003-09-22 | 2003-09-22 | 6 | 0d | 项目经理; 风险承担者 | 4h |
| 8 | 1.1.6 | 确保执行所需的赞助和投资 |  | 4h | 2003-09-22 | 2003-09-22 | 7 | 0d | 项目经理; 风险承担者 | 8h |
| 9 | 1.1.7 | 完成构想 | milestone | 0d | 2003-09-22 | 2003-09-22 | 8 | 0d |  |  |
| 10 | 1.2 | **规划** |  | 36d | 2003-09-22 | 2003-11-11 | 2 | 0d |  | 1228h |
| 11 | 1.2.1 | **召集项目组和定义角色** |  | 2d | 2003-09-22 | 2003-09-24 |  | 0d |  | 80h |
| 12 | 1.2.1.1 | 指派/定义项目经理 |  | 1d | 2003-09-22 | 2003-09-23 | 9 | 0d | 风险承担者 | 8h |
| 13 | 1.2.1.2 | 指派/定义基础结构/网络管理员 |  | 1d | 2003-09-22 | 2003-09-23 | 9 | 0d | 项目经理 | 8h |
| 14 | 1.2.1.3 | 指派/定义部署管理员 |  | 1d | 2003-09-22 | 2003-09-23 | 9 | 0d | 项目经理 | 8h |
| 15 | 1.2.1.4 | 指派/定义台式计算机管理员 |  | 1d | 2003-09-22 | 2003-09-23 | 9 | 0d | 项目经理 | 8h |
| 16 | 1.2.1.5 | 指派/定义 Intranet/Internet 管理员 |  | 1d | 2003-09-22 | 2003-09-23 | 9 | 0d | 项目经理 | 8h |
| 17 | 1.2.1.6 | 指派/定义工作区协调员 |  | 1d | 2003-09-22 | 2003-09-23 | 9 | 0d | 项目经理 | 8h |
| 18 | 1.2.1.7 | 指派/定义数据库管理员 |  | 1d | 2003-09-22 | 2003-09-23 | 9 | 0d | 项目经理 | 8h |
| 19 | 1.2.1.8 | 指派/定义测试/QA 负责人 |  | 1d | 2003-09-22 | 2003-09-23 | 9 | 0d | 项目经理 | 8h |
| 20 | 1.2.1.9 | 指派/定义教育/培训负责人 |  | 1d | 2003-09-22 | 2003-09-23 | 9 | 0d | 项目经理 | 8h |
| 21 | 1.2.1.10 | 建立子组角色和责任(基础结构、安全、服务器等) |  | 1d | 2003-09-23 | 2003-09-24 | 12, 13, 14, 15, 16, 17, 18, 19, 20 | 0d | 项目经理 | 8h |
| 22 | 1.2.1.11 | 召集项目组和定义角色完成 | milestone | 0d | 2003-09-24 | 2003-09-24 | 21 | 0d |  |  |
| 23 | 1.2.2 | **审查/详细描述当前数据处理环境** |  | 2d | 2003-09-24 | 2003-09-26 | 11 | 0d |  | 88h |
| 24 | 1.2.2.1 | 检查/详细描述 Microsoft SharePoint Portal Server v2.0 需求 |  | 1d | 2003-09-24 | 2003-09-25 |  | 0d | 网络管理员; Intranet/Internet 管理员 | 16h |
| 25 | 1.2.2.2 | 审查/详细描述技术体系结构 |  | 1d | 2003-09-24 | 2003-09-25 |  | 0d | 网络管理员; Intranet/Internet 管理员 | 16h |
| 26 | 1.2.2.3 | 审查/详细描述服务器硬件和软件清单 |  | 1d | 2003-09-24 | 2003-09-25 |  | 0d | 网络管理员; Intranet/Internet 管理员 | 16h |
| 27 | 1.2.2.4 | 审查/详细描述客户端硬件和软件清单 |  | 1d | 2003-09-24 | 2003-09-25 |  | 0d | 台式计算机管理员 | 8h |
| 28 | 1.2.2.5 | 审查/详细描述当前管理/服务传输模型 |  | 1d | 2003-09-24 | 2003-09-25 |  | 0d | 台式计算机管理员 | 8h |
| 29 | 1.2.2.6 | 记录当前数据处理环境 |  | 1d | 2003-09-25 | 2003-09-26 | 28, 24, 25, 26, 27 | 0d | 网络管理员; 台式计算机管理员; 数据库管理员 | 24h |
| 30 | 1.2.2.7 | 完成检查/详细描述当前数据处理环境 | milestone | 0d | 2003-09-26 | 2003-09-26 | 29 | 0d |  |  |

Notes:
- 1: SharePoint Portal Server 可集合功能以快速创建带有搜索功能、文档管理功能和工作组选项的公司 Web 端口。 / SharePoint Portal Server 与日常所用的工具(如Windows 资源管理器、Office 应用程序和浏览器)紧密集成以帮助您在单位内创建、管理和共享内容。 / 请参阅帮助获取有关此模板的各部分的更多信息。

| ID | WBS | Task | Type | Duration | Start | Finish | Predecessors | Total slack | Free slack | Resources | Work |
| --- | --- | --- | --- | --- | --- | --- | --- | --- | --- | --- | --- |
| 31 | 1.2.3 | **确定初步设计目标** |  | 5d | 2003-09-26 | 2003-10-03 | 11 | 0d |  |  | 96h |
| 32 | 1.2.3.1 | 将构想/范围映射到当前数据处理环境 |  | 1d | 2003-09-26 | 2003-09-29 | 30 | 0d |  | 项目经理; 网络管理员; Intranet/Internet 管理员; 风险承担者 | 32h |
| 33 | 1.2.3.2 | 确定 Microsoft SharePoint Portal Server v2.0 策略 |  | 1d | 2003-09-29 | 2003-09-30 | 32 | 0d |  | 项目经理; 网络管理员; Intranet/Internet 管理员; 风险承担者 | 32h |
| 34 | 1.2.3.3 | 确定 Microsoft SharePoint Portal Server v2.0 存储需求 |  | 1d | 2003-09-30 | 2003-10-01 | 33 | 0d |  | 网络管理员; 数据库管理员 | 16h |
| 35 | 1.2.3.4 | 确定项目信息分发策略(Internet、intranet、电子邮件) |  | 1d | 2003-10-01 | 2003-10-02 | 34 | 0d |  | 教育/培训负责人 | 8h |
| 36 | 1.2.3.5 | 与执行赞助人一起审阅初步设计目标 |  | 1d | 2003-10-02 | 2003-10-03 | 35 | 0d |  | 项目经理 | 8h |
| 37 | 1.2.3.6 | 完成确定初步设计目标 | milestone | 0d | 2003-10-03 | 2003-10-03 | 36 | 0d |  |  |  |
| 38 | 1.2.4 | **确定共存策略** |  | 1d | 2003-10-03 | 2003-10-06 | 31 | 0d |  |  | 16h |
| 39 | 1.2.4.1 | 确定公司内部的互操作性问题(支持的操作系统、拓扑、协议等) |  | 1d | 2003-10-03 | 2003-10-06 |  | 0d |  | 网络管理员 | 8h |
| 40 | 1.2.4.2 | 确定与合作伙伴的互操作性问题(拓扑、协议等) |  | 1d | 2003-10-03 | 2003-10-06 | 36 | 0d |  | 网络管理员 | 8h |
| 41 | 1.2.4.3 | 共存策略工作确定完毕 | milestone | 0d | 2003-10-06 | 2003-10-06 | 39, 40 | 0d |  |  |  |
| 42 | 1.2.5 | **建立测试实验室环境** |  | 3d | 2003-10-03 | 2003-10-08 | 31 | 24d |  |  | 24h |
| 43 | 1.2.5.1 | 选择一个或多个实验室位置 |  | 4h | 2003-10-03 | 2003-10-06 |  | 24d | 0d | 项目经理 | 4h |
| 44 | 1.2.5.2 | 确定实验室空间和环境要求 |  | 4h | 2003-10-06 | 2003-10-06 | 43 | 24d | 0d | 项目经理 | 4h |
| 45 | 1.2.5.3 | 确定电源和网络连接要求 |  | 4h | 2003-10-06 | 2003-10-07 | 44 | 24d | 0d | 部署管理员 | 4h |
| 46 | 1.2.5.4 | 设计和记录实验室的理想化和实际配置 |  | 4h | 2003-10-07 | 2003-10-07 | 45 | 24d | 0d | 部署管理员 | 4h |
| 47 | 1.2.5.5 | 确定实验室人员 |  | 4h | 2003-10-07 | 2003-10-08 | 46 | 24d | 0d | 部署管理员 | 4h |
| 48 | 1.2.5.6 | 定义实验室的改动控制过程 |  | 4h | 2003-10-08 | 2003-10-08 | 47 | 24d | 0d | 部署管理员 | 4h |
| 49 | 1.2.5.7 | 实验室环境建立测试完毕 | milestone | 0d | 2003-10-08 | 2003-10-08 | 48 | 24d |  |  |  |
| 50 | 1.2.6 | **进行风险评估** |  | 4d | 2003-10-06 | 2003-10-10 | 38 | 22d |  |  | 32h |
| 51 | 1.2.6.1 | 确定并分析潜在风险 |  | 1d | 2003-10-06 | 2003-10-07 |  | 22d | 0d | 项目经理 | 8h |
| 52 | 1.2.6.2 | 量化风险的潜在影响 |  | 1d | 2003-10-07 | 2003-10-08 | 51 | 22d | 0d | 项目经理 | 8h |
| 53 | 1.2.6.3 | 详细描述增加过程 |  | 1d | 2003-10-08 | 2003-10-09 | 52 | 22d | 0d | 项目经理 | 8h |
| 54 | 1.2.6.4 | 记录风险评估 |  | 1d | 2003-10-09 | 2003-10-10 | 53 | 22d | 0d | 项目经理 | 8h |
| 55 | 1.2.6.5 | 完成执行风险评估 | milestone | 0d | 2003-10-10 | 2003-10-10 | 54 | 22d |  |  |  |

| ID | WBS | Task | Type | Duration | Start | Finish | Predecessors | Total slack | Free slack | Resources | Work |
| --- | --- | --- | --- | --- | --- | --- | --- | --- | --- | --- | --- |
| 56 | 1.2.7 | **定义通讯策略** |  | 5d | 2003-10-06 | 2003-10-13 | 38 | 146d |  |  | 40h |
| 57 | 1.2.7.1 | 定义各个阶段的通讯策略 |  | 1d | 2003-10-06 | 2003-10-07 |  | 146d | 0d | 教育/培训负责人 | 8h |
| 58 | 1.2.7.2 | 定义通讯目标 |  | 1d | 2003-10-07 | 2003-10-08 | 57 | 146d | 0d | 教育/培训负责人 | 8h |
| 59 | 1.2.7.3 | 定义通讯传输机制 |  | 1d | 2003-10-08 | 2003-10-09 | 58 | 146d | 0d | 教育/培训负责人 | 8h |
| 60 | 1.2.7.4 | 建立通讯时间表 |  | 1d | 2003-10-09 | 2003-10-10 | 59 | 146d | 0d | 教育/培训负责人 | 8h |
| 61 | 1.2.7.5 | 记录通讯策略/标准 |  | 1d | 2003-10-10 | 2003-10-13 | 60 | 146d | 0d | 教育/培训负责人 | 8h |
| 62 | 1.2.7.6 | 完成定义通信策略 | milestone | 0d | 2003-10-13 | 2003-10-13 | 61 | 146d |  |  |  |
| 63 | 1.2.8 | **定义教育/培训策略** |  | 4d | 2003-10-06 | 2003-10-10 | 38 | 22d |  |  | 32h |
| 64 | 1.2.8.1 | 为部署人口统计定义教育策略(管理员、技术支持、最终用户) |  | 1d | 2003-10-06 | 2003-10-07 |  | 22d | 0d | 教育/培训负责人 | 8h |
| 65 | 1.2.8.2 | 定义教育传输机制 |  | 1d | 2003-10-07 | 2003-10-08 | 64 | 22d | 0d | 教育/培训负责人 | 8h |
| 66 | 1.2.8.3 | 按阶段建立教育时间表 |  | 1d | 2003-10-08 | 2003-10-09 | 65 | 22d | 0d | 教育/培训负责人 | 8h |
| 67 | 1.2.8.4 | 记录教育策略/标准 |  | 1d | 2003-10-09 | 2003-10-10 | 66 | 22d | 0d | 教育/培训负责人 | 8h |
| 68 | 1.2.8.5 | 完成定义教育/培训策略 | milestone | 0d | 2003-10-10 | 2003-10-10 | 67 | 22d |  | 教育/培训负责人 |  |
| 69 | 1.2.9 | **规划客户端部署** |  | 20d | 2003-10-06 | 2003-11-03 | 38 | 6d |  |  | 200h |
| 70 | 1.2.9.1 | 检查现有硬件并与客户端硬件需求进行比较 |  | 5d | 2003-10-06 | 2003-10-13 |  | 6d | 0d | 台式计算机管理员 | 40h |
| 71 | 1.2.9.2 | 检查现有操作系统并与 Microsoft SharePoint Portal Server v2.0 支持的操作系统进行比较 |  | 5d | 2003-10-13 | 2003-10-20 | 70 | 6d | 0d | 台式计算机管理员 | 40h |
| 72 | 1.2.9.3 | 检查现有客户端浏览器并与浏览器需求进行比较 |  | 5d | 2003-10-20 | 2003-10-27 | 71 | 6d | 0d | 台式计算机管理员 | 40h |
| 73 | 1.2.9.4 | 根据需要升级客户端硬件、操作系统、浏览器等 |  | 5d | 2003-10-27 | 2003-11-03 | 72 | 6d | 0d | 部署管理员; 台式计算机管理员 | 80h |
| 74 | 1.2.9.5 | 完成规划客户端部署 | milestone | 0d | 2003-11-03 | 2003-11-03 | 73 | 6d |  |  |  |
| 75 | 1.2.10 | **规划服务器配置** |  | 15d | 2003-10-06 | 2003-10-27 | 38 | 0d |  |  | 256h |
| 76 | 1.2.10.1 | 确定文档管理方法 |  | 1d | 2003-10-06 | 2003-10-07 |  | 25d |  | Intranet/Internet 管理员 | 8h |
| 77 | 1.2.10.2 | 确定现有内容源 |  | 3d | 2003-10-06 | 2003-10-09 |  | 23d |  | Intranet/Internet 管理员 | 24h |
| 78 | 1.2.10.3 | 检查服务器软件需求 |  | 1d | 2003-10-06 | 2003-10-07 |  | 25d |  | Intranet/Internet 管理员 | 8h |
| 79 | 1.2.10.4 | **确定用户的角色** |  | 2d | 2003-10-06 | 2003-10-08 |  | 0d |  |  | 48h |
| 80 | 1.2.10.4.1 | 确定 Web 前端用户数 |  | 2d | 2003-10-06 | 2003-10-08 |  | 0d |  | 项目经理 | 16h |
| 81 | 1.2.10.4.2 | 确定文档管理用户数 |  | 2d | 2003-10-06 | 2003-10-08 |  | 0d |  | 项目经理 | 16h |
| 82 | 1.2.10.4.3 | 确定搜索用户数 |  | 2d | 2003-10-06 | 2003-10-08 |  | 0d |  | 项目经理 | 16h |

| ID | WBS | Task | Type | Duration | Start | Finish | Predecessors | Total slack | Free slack | Resources | Work |
| --- | --- | --- | --- | --- | --- | --- | --- | --- | --- | --- | --- |
| 83 | 1.2.10.5 | **文档使用模式** |  | 2d | 2003-10-06 | 2003-10-08 |  | 0d |  |  | 48h |
| 84 | 1.2.10.5.1 | 确定 Web 前端用户的预期使用模式 |  | 2d | 2003-10-06 | 2003-10-08 |  | 0d |  | Intranet/Internet 管理员 | 16h |
| 85 | 1.2.10.5.2 | 确定文档管理用户的预期使用模式 |  | 2d | 2003-10-06 | 2003-10-08 |  | 0d |  | Intranet/Internet 管理员 | 16h |
| 86 | 1.2.10.5.3 | 确定搜索用户的预期使用模式 |  | 2d | 2003-10-06 | 2003-10-08 |  | 0d |  | Intranet/Internet 管理员 | 16h |
| 87 | 1.2.10.6 | **规划容量** |  | 13d | 2003-10-08 | 2003-10-27 | 79, 83 | 0d |  |  | 120h |
| 88 | 1.2.10.6.1 | 确定角色和使用模式的常规负载 |  | 2d | 2003-10-08 | 2003-10-10 |  | 0d |  | Intranet/Internet 管理员 | 16h |
| 89 | 1.2.10.6.2 | 确定存储的文档数和文档存储大小 |  | 2d | 2003-10-10 | 2003-10-14 | 88 | 0d |  | Intranet/Internet 管理员 | 16h |
| 90 | 1.2.10.6.3 | 估计索引大小 |  | 1d | 2003-10-14 | 2003-10-15 | 89 | 0d |  | Intranet/Internet 管理员 | 8h |
| 91 | 1.2.10.6.4 | 确定增长需求 |  | 1d | 2003-10-15 | 2003-10-16 | 90 | 0d |  | 网络管理员; Intranet/Internet 管理员; 数据库管理员 | 24h |
| 92 | 1.2.10.6.5 | 确定最大负载因子 |  | 1d | 2003-10-16 | 2003-10-17 | 91 | 0d |  | Intranet/Internet 管理员 | 8h |
| 93 | 1.2.10.6.6 | 确定单个服务器、服务器场或共享服务之间的方法 |  | 2d | 2003-10-17 | 2003-10-21 | 92 | 0d |  | Intranet/Internet 管理员 | 16h |
| 94 | 1.2.10.6.7 | 评估缓存、负载平衡和其他缩放技术 |  | 1d | 2003-10-21 | 2003-10-22 | 93 | 0d |  | 网络管理员 | 8h |
| 95 | 1.2.10.6.8 | 确定服务器的缩放计划 |  | 2d | 2003-10-22 | 2003-10-24 | 94 | 0d |  | Intranet/Internet 管理员 | 16h |
| 96 | 1.2.10.6.9 | 绘制系统体系结构 |  | 1d | 2003-10-24 | 2003-10-27 | 95 | 0d |  | Intranet/Internet 管理员 | 8h |
| 97 | 1.2.10.7 | 完成规划服务器配置 | milestone | 0d | 2003-10-27 | 2003-10-27 | 96 | 11d |  |  |  |
| 98 | 1.2.11 | **规划安全性** |  | 1d | 2003-10-06 | 2003-10-07 | 38 | 25d |  |  | 44h |
| 99 | 1.2.11.1 | **确定 Microsoft SharePoint Portal Server v2.0 角色** |  | 1d | 2003-10-06 | 2003-10-07 |  | 25d | 0d |  | 8h |
| 100 | 1.2.11.1.1 | 分配用户角色以向用户提供执行特定任务的权限 |  | 1d | 2003-10-06 | 2003-10-07 |  | 25d |  | 网络管理员 | 8h |
| 101 | 1.2.11.2 | **定义内容安全策略** |  | 1d | 2003-10-06 | 2003-10-07 |  | 25d | 0d |  | 8h |
| 102 | 1.2.11.2.1 | 利用基于角色的安全性控制用户对内容的访问 |  | 1d | 2003-10-06 | 2003-10-07 |  | 25d |  | 网络管理员 | 8h |
| 103 | 1.2.11.3 | **创建访问帐户** |  | 0.5d | 2003-10-06 | 2003-10-07 |  | 25.5d | 0.5d |  | 12h |
| 104 | 1.2.11.3.1 | 确定和创建配置数据库管理帐户 |  | 4h | 2003-10-06 | 2003-10-07 |  | 25.5d |  | 网络管理员 | 4h |
| 105 | 1.2.11.3.2 | 确定和创建默认内容访问帐户 |  | 4h | 2003-10-06 | 2003-10-07 |  | 25.5d |  | 网络管理员 | 4h |
| 106 | 1.2.11.3.3 | 确定和创建应用程序池帐户 |  | 4h | 2003-10-06 | 2003-10-07 |  | 25.5d |  | 网络管理员 | 4h |

| ID | WBS | Task | Type | Duration | Start | Finish | Predecessors | Total slack | Free slack | Resources | Work |
| --- | --- | --- | --- | --- | --- | --- | --- | --- | --- | --- | --- |
| 107 | 1.2.11.4 | **确定连接到 Internet 的安全措施** |  | 1d | 2003-10-06 | 2003-10-07 |  | 25d | 0d |  | 16h |
| 108 | 1.2.11.4.1 | 使用 SSL 评估 |  | 1d | 2003-10-06 | 2003-10-07 |  | 25d |  | Intranet/Internet 管理员 | 8h |
| 109 | 1.2.11.4.2 | 评估防止未经授权访问的技术 |  | 1d | 2003-10-06 | 2003-10-07 |  | 25d |  | 网络管理员 | 8h |
| 110 | 1.2.11.5 | 安全规划完成 | milestone | 0d | 2003-10-07 | 2003-10-07 | 99, 101, 103, 107 | 25d |  |  |  |
| 111 | 1.2.12 | **规划网络** |  | 11d | 2003-10-27 | 2003-11-11 | 38, 87 | 0d |  |  | 88h |
| 112 | 1.2.12.1 | 检查连接性和带宽需求 |  | 2d | 2003-10-27 | 2003-10-29 |  | 0d |  | 网络管理员 | 16h |
| 113 | 1.2.12.2 | 检查当前网络 |  | 2d | 2003-10-29 | 2003-10-31 | 112 | 0d |  | 网络管理员 | 16h |
| 114 | 1.2.12.3 | 图解未来的网络拓扑 |  | 2d | 2003-10-31 | 2003-11-04 | 113 | 0d |  | 网络管理员 | 16h |
| 115 | 1.2.12.4 | 根据需要升级 WAN 和 LAN |  | 5d | 2003-11-04 | 2003-11-11 | 114 | 0d |  | 网络管理员 | 40h |
| 116 | 1.2.12.5 | 完成规划网络 | milestone | 0d | 2003-11-11 | 2003-11-11 | 115 | 0d |  |  |  |
| 117 | 1.2.13 | **规划升级** |  | 4d | 2003-10-06 | 2003-10-10 | 38 | 22d |  |  | 48h |
| 118 | 1.2.13.1 | 检查内容迁移策略 |  | 2d | 2003-10-06 | 2003-10-08 |  | 22d | 0d | 工作区协调员 | 16h |
| 119 | 1.2.13.2 | 检查共存策略 |  | 2d | 2003-10-06 | 2003-10-08 |  | 22d | 0d | 工作区协调员 | 16h |
| 120 | 1.2.13.3 | 确定和记录升级策略 |  | 2d | 2003-10-08 | 2003-10-10 | 119, 118 | 22d | 0d | 工作区协调员 | 16h |
| 121 | 1.2.13.4 | 完成规划升级 | milestone | 0d | 2003-10-10 | 2003-10-10 | 120 | 22d |  |  |  |
| 122 | 1.2.14 | **本地化计划** |  | 3d | 2003-10-06 | 2003-10-09 | 38 | 23d |  |  | 40h |
| 123 | 1.2.14.1 | 确定用于服务器场的语言 |  | 1d | 2003-10-06 | 2003-10-07 |  | 23d | 0d | 部署管理员 | 8h |
| 124 | 1.2.14.2 | 检查区域的搜索设置 |  | 2d | 2003-10-07 | 2003-10-09 | 123 | 23d | 0d | 部署管理员 | 16h |
| 125 | 1.2.14.3 | 检查 Microsoft Windows SharePoint Services 的语言考虑事项 |  | 2d | 2003-10-06 | 2003-10-08 |  | 24d | 1d | 部署管理员 | 16h |
| 126 | 1.2.14.4 | 完成本地化计划 | milestone | 0d | 2003-10-09 | 2003-10-09 | 124, 125 | 23d |  |  |  |
| 127 | 1.2.15 | **规划集成** |  | 9d | 2003-10-06 | 2003-10-17 | 38 | 17d |  |  | 112h |
| 128 | 1.2.15.1 | 规划 Windows SharePoint Services 部署(在“Windows SharePoint Services 部署”模板中完成规划) |  | 5d | 2003-10-06 | 2003-10-13 |  | 21d | 4d | 部署管理员 | 40h |
| 129 | 1.2.15.2 | 确定要集成的其他系统 |  | 2d | 2003-10-06 | 2003-10-08 |  | 17d | 0d | 部署管理员 | 16h |
| 130 | 1.2.15.3 | 确定集成策略 |  | 2d | 2003-10-08 | 2003-10-10 | 129 | 17d | 0d | 部署管理员 | 16h |
| 131 | 1.2.15.4 | 制定集成计划 |  | 5d | 2003-10-10 | 2003-10-17 | 130 | 17d | 0d | 部署管理员 | 40h |
| 132 | 1.2.15.5 | 完成规划集成 | milestone | 0d | 2003-10-17 | 2003-10-17 | 131, 128 | 17d |  |  |  |

| ID | WBS | Task | Type | Duration | Start | Finish | Predecessors | Total slack | Free slack | Resources | Work |
| --- | --- | --- | --- | --- | --- | --- | --- | --- | --- | --- | --- |
| 133 | 1.2.16 | **规划维护** |  | 2d | 2003-10-06 | 2003-10-08 | 38 | 24d |  |  | 32h |
| 134 | 1.2.16.1 | 规划备份和恢复 |  | 2d | 2003-10-06 | 2003-10-08 |  | 24d | 0d | 网络管理员 | 16h |
| 135 | 1.2.16.2 | 规划其他日常维护 |  | 2d | 2003-10-06 | 2003-10-08 |  | 24d | 0d | 网络管理员 | 16h |
| 136 | 1.2.16.3 | 完成规划维护 | milestone | 0d | 2003-10-08 | 2003-10-08 | 134, 135 | 24d |  |  |  |
| 137 | 1.2.17 | 规划工作完成 | milestone | 0d | 2003-11-11 | 2003-11-11 | 49, 55, 111, 117, 122, 127, 133, 98, 63, 69, 75 | 0d |  |  |  |
| 138 | 1.2.18 | 部署得到批准 | milestone | 0d | 2003-11-11 | 2003-11-11 | 137 | 0d |  |  |  |
| 139 | 1.3 | **部署** |  | 91d | 2003-11-11 | 2004-03-17 | 138 | 0d |  |  | 2032h |
| 140 | 1.3.1 | **部署试生产系统** |  | 43d | 2003-11-11 | 2004-01-09 |  | 0d |  |  | 1016h |
| 141 | 1.3.1.1 | **安装硬件** |  | 4d | 2003-11-11 | 2003-11-17 |  | 0d |  |  | 32h |
| 142 | 1.3.1.1.1 | 根据需要订购新硬件 |  | 2d | 2003-11-11 | 2003-11-13 |  | 0d |  | 网络管理员 | 16h |
| 143 | 1.3.1.1.2 | 配置新硬件 |  | 2d | 2003-11-13 | 2003-11-17 | 142 | 0d |  | 网络管理员 | 16h |
| 144 | 1.3.1.2 | **安装软件** |  | 24d | 2003-11-17 | 2003-12-19 | 143 | 0d |  |  | 584h |
| 145 | 1.3.1.2.1 | 安装操作系统 |  | 1d | 2003-11-17 | 2003-11-18 |  | 0d |  | 网络管理员 | 8h |
| 146 | 1.3.1.2.2 | 安装 Windows SharePoint Services (有关 Windows SharePoint Services 安装程序和配置的信息，请参阅“Microsoft Windows SharePoint Services 部署”模板) |  | 1d | 2003-11-18 | 2003-11-19 | 145 | 0d |  | 网络管理员 | 8h |
| 147 | 1.3.1.2.3 | 设置网络负载平衡 |  | 1d | 2003-11-19 | 2003-11-20 | 146 | 0d |  | 网络管理员 | 8h |
| 148 | 1.3.1.2.4 | 安装 Microsoft SharePoint Portal Server v2.0 |  | 1d | 2003-11-20 | 2003-11-21 | 147 | 0d |  | 网络管理员 | 8h |
| 149 | 1.3.1.2.5 | 安装 Microsoft SQL Server |  | 1d | 2003-11-21 | 2003-11-24 | 148 | 0d |  | 数据库管理员 | 8h |
| 150 | 1.3.1.2.6 | 配置 Web 前端服务器 |  | 1d | 2003-11-24 | 2003-11-25 | 149 | 0d |  | 网络管理员 | 8h |
| 151 | 1.3.1.2.7 | 配置索引管理和作业服务器(如果已成组部署) |  | 1d | 2003-11-25 | 2003-11-26 | 150 | 0d |  | 网络管理员 | 8h |
| 152 | 1.3.1.2.8 | 配置搜索服务器(如果有大规模部署) |  | 1d | 2003-11-26 | 2003-11-27 | 151 | 0d |  | 网络管理员 | 8h |
| 153 | 1.3.1.2.9 | 配置向后兼容性(如果需要) |  | 1d | 2003-11-27 | 2003-11-28 | 152 | 15d |  | 网络管理员 | 8h |
| 154 | 1.3.1.2.10 | **配置软件** |  | 16d | 2003-11-27 | 2003-12-19 | 152 | 0d |  |  | 512h |
| 155 | 1.3.1.2.10.1 | 创建门户 |  | 1d | 2003-11-27 | 2003-11-28 |  | 0d |  | 工作区协调员 | 8h |
| 156 | 1.3.1.2.10.2 | 配置电子邮件设置 |  | 1d | 2003-11-28 | 2003-12-01 | 155 | 14d |  | 工作区协调员 | 8h |
| 157 | 1.3.1.2.10.3 | 配置使用率分析 |  | 1d | 2003-11-28 | 2003-12-01 | 155 | 14d |  | Intranet/Internet 管理员 | 8h |
| 158 | 1.3.1.2.10.4 | 配置防病毒保护 |  | 1d | 2003-11-28 | 2003-12-01 | 155 | 14d |  | Intranet/Internet 管理员 | 8h |
| 159 | 1.3.1.2.10.5 | 配置阻止的文件 |  | 1d | 2003-11-28 | 2003-12-01 | 155 | 14d |  | 工作区协调员 | 8h |
| 160 | 1.3.1.2.10.6 | 配置门户安全性 |  | 3d | 2003-11-28 | 2003-12-03 | 155 | 12d |  | 工作区协调员 | 24h |
| 161 | 1.3.1.2.10.7 | 配置用户配置文件 |  | 3d | 2003-11-28 | 2003-12-03 | 155 | 12d |  | 工作区协调员 | 24h |
| 162 | 1.3.1.2.10.8 | 配置听众 |  | 2d | 2003-11-28 | 2003-12-02 | 155 | 13d |  | 工作区协调员 | 16h |

| ID | WBS | Task | Duration | Start | Finish | Predecessors | Total slack | Resources | Work |
| --- | --- | --- | --- | --- | --- | --- | --- | --- | --- |
| 163 | 1.3.1.2.10.9 | **配置搜索** | 3d | 2003-11-28 | 2003-12-03 | 155 | 12d |  | 48h |
| 164 | 1.3.1.2.10.9.1 | 安装并注册自定义筛选器 | 1d | 2003-11-28 | 2003-12-01 |  | 14d | 工作区协调员 | 8h |
| 165 | 1.3.1.2.10.9.2 | 配置内容位置 | 2d | 2003-11-28 | 2003-12-02 |  | 13d | 工作区协调员 | 16h |
| 166 | 1.3.1.2.10.9.3 | 修改复杂词汇和词典文件并创建自定义搜索查询 | 3d | 2003-11-28 | 2003-12-03 |  | 12d | 工作区协调员 | 24h |
| 167 | 1.3.1.2.10.10 | **配置文档管理** | 15d | 2003-11-28 | 2003-12-19 | 155 | 0d |  | 208h |
| 168 | 1.3.1.2.10.10.1 | **创建文件夹结构** | 6d | 2003-11-28 | 2003-12-08 |  | 0d |  | 72h |
| 169 | 1.3.1.2.10.10.1.1 | 分配安全角色 | 3d | 2003-11-28 | 2003-12-03 |  | 0d | 工作区协调员 | 24h |
| 170 | 1.3.1.2.10.10.1.2 | 选择发布过程 | 3d | 2003-12-03 | 2003-12-08 | 169 | 9d | 工作区协调员 | 24h |
| 171 | 1.3.1.2.10.10.1.3 | 添加审批流程 | 3d | 2003-12-03 | 2003-12-08 | 169 | 0d | 工作区协调员 | 24h |
| 172 | 1.3.1.2.10.10.2 | **创建文档配置文件和自定义配置文件** | 2d | 2003-12-08 | 2003-12-10 |  | 0d |  | 24h |
| 173 | 1.3.1.2.10.10.2.1 | 计划文档配置文件 | 1d | 2003-12-08 | 2003-12-09 | 171 | 8d | 工作区协调员 | 8h |
| 174 | 1.3.1.2.10.10.2.2 | 强调带关键字的主题 | 1d | 2003-12-08 | 2003-12-09 | 171 | 0d | 工作区协调员 | 8h |
| 175 | 1.3.1.2.10.10.2.3 | 启用 Web 讨论 | 1d | 2003-12-09 | 2003-12-10 | 174 | 0d | 工作区协调员 | 8h |
| 176 | 1.3.1.2.10.10.3 | **将文档移动到工作环境中** | 7d | 2003-12-10 | 2003-12-19 |  | 0d |  | 112h |
| 177 | 1.3.1.2.10.10.3.1 | 移动多个单独的文档 | 7d | 2003-12-10 | 2003-12-19 | 175 | 0d | 工作区协调员 | 56h |
| 178 | 1.3.1.2.10.10.3.2 | 导入现有文件夹 | 7d | 2003-12-10 | 2003-12-19 | 175 | 0d | 工作区协调员 | 56h |
| 179 | 1.3.1.2.10.11 | 配置警告 | 2d | 2003-11-28 | 2003-12-02 | 155 | 13d | 工作区协调员 | 16h |
| 180 | 1.3.1.2.10.12 | 配置个人登录服务 | 5d | 2003-11-28 | 2003-12-05 | 155 | 10d | 网络管理员; 工作区协调员 | 80h |
| 181 | 1.3.1.2.10.13 | 配置个人网站 | 5d | 2003-11-28 | 2003-12-05 | 155 | 10d | 工作区协调员 | 40h |
| 182 | 1.3.1.2.10.14 | 根据 Extranet 的使用需要配置 Microsoft SharePoint Portal Server v2.0 | 2d | 2003-11-28 | 2003-12-02 | 155 | 13d | Intranet/Internet 管理员 | 16h |
| 183 | 1.3.1.3 | 进行自定义 | 5d | 2003-12-19 | 2003-12-26 | 144 | 0d | Intranet/Internet 管理员 | 40h |
| 184 | 1.3.1.4 | 实施集成 | 5d | 2003-12-19 | 2003-12-26 | 144 | 0d | Intranet/Internet 管理员 | 40h |
| 185 | 1.3.1.5 | **将试生产部署到客户端计算机** | 5d | 2003-11-11 | 2003-11-18 |  | 28d |  | 120h |
| 186 | 1.3.1.5.1 | 根据需要更新客户端操作系统 | 5d | 2003-11-11 | 2003-11-18 |  | 28d | 台式计算机管理员 | 40h |
| 187 | 1.3.1.5.2 | 根据需要更新客户端浏览器 | 5d | 2003-11-11 | 2003-11-18 |  | 28d | 台式计算机管理员 | 40h |
| 188 | 1.3.1.5.3 | 根据需要更新客户端软件。 | 5d | 2003-11-11 | 2003-11-18 |  | 28d | 台式计算机管理员 | 40h |
| 189 | 1.3.1.6 | 培训试生产用户 | 5d | 2003-12-26 | 2004-01-02 | 141, 144, 185, 183, 184 | 0d | 教育/培训负责人 | 40h |

| ID | WBS | Task | Type | Duration | Start | Finish | Predecessors | Total slack | Resources | Work |
| --- | --- | --- | --- | --- | --- | --- | --- | --- | --- | --- |
| 190 | 1.3.1.7 | **测试和评估试生产** |  | 5d | 2004-01-02 | 2004-01-09 | 189 | 0d |  | 160h |
| 191 | 1.3.1.7.1 | 测试门户 |  | 5d | 2004-01-02 | 2004-01-09 |  | 0d | 测试/QA 负责人 | 40h |
| 192 | 1.3.1.7.2 | 测试搜索和索引 |  | 5d | 2004-01-02 | 2004-01-09 |  | 0d | 测试/QA 负责人 | 40h |
| 193 | 1.3.1.7.3 | 测试自定义 |  | 5d | 2004-01-02 | 2004-01-09 |  | 0d | 测试/QA 负责人 | 40h |
| 194 | 1.3.1.7.4 | 测试集成 |  | 5d | 2004-01-02 | 2004-01-09 |  | 0d | 测试/QA 负责人 | 40h |
| 195 | 1.3.1.8 | 完成部署试生产系统 | milestone | 0d | 2004-01-09 | 2004-01-09 | 190 | 0d |  |  |
| 196 | 1.3.1.9 | 生产部署得到批准 | milestone | 0d | 2004-01-09 | 2004-01-09 | 195 | 0d |  |  |
| 197 | 1.3.2 | 将试生产环境迁移到产品 |  | 5d | 2004-01-09 | 2004-01-16 | 196 | 0d |  |  |
| 198 | 1.3.3 | **部署生产系统** |  | 43d | 2004-01-16 | 2004-03-17 | 197 | 0d |  | 1016h |
| 199 | 1.3.3.1 | **安装硬件** |  | 4d | 2004-01-16 | 2004-01-22 |  | 0d |  | 32h |
| 200 | 1.3.3.1.1 | 根据需要订购新硬件 |  | 2d | 2004-01-16 | 2004-01-20 |  | 0d | 网络管理员 | 16h |
| 201 | 1.3.3.1.2 | 配置新硬件 |  | 2d | 2004-01-20 | 2004-01-22 | 200 | 0d | 网络管理员 | 16h |
| 202 | 1.3.3.2 | **安装软件** |  | 24d | 2004-01-22 | 2004-02-25 | 201 | 0d |  | 584h |
| 203 | 1.3.3.2.1 | 安装操作系统 |  | 1d | 2004-01-22 | 2004-01-23 |  | 0d | 网络管理员 | 8h |
| 204 | 1.3.3.2.2 | 安装 Windows SharePoint Services (有关 Windows SharePoint Services 安装程序和配置的信息，请参阅“Microsoft Windows SharePoint Services 部署”模板) |  | 1d | 2004-01-23 | 2004-01-26 | 203 | 0d | 网络管理员 | 8h |
| 205 | 1.3.3.2.3 | 设置网络负载平衡 |  | 1d | 2004-01-26 | 2004-01-27 | 204 | 0d | 网络管理员 | 8h |
| 206 | 1.3.3.2.4 | 安装 Microsoft SharePoint Portal Server v2.0 |  | 1d | 2004-01-27 | 2004-01-28 | 205 | 0d | 网络管理员 | 8h |
| 207 | 1.3.3.2.5 | 安装 SQL Server |  | 1d | 2004-01-28 | 2004-01-29 | 206 | 0d | 数据库管理员 | 8h |
| 208 | 1.3.3.2.6 | 配置 Web 前端服务器 |  | 1d | 2004-01-29 | 2004-01-30 | 207 | 0d | 网络管理员 | 8h |
| 209 | 1.3.3.2.7 | 配置索引管理和作业服务器(如果已成组部署) |  | 1d | 2004-01-30 | 2004-02-02 | 208 | 0d | 网络管理员 | 8h |
| 210 | 1.3.3.2.8 | 配置搜索服务器(如果有大规模部署) |  | 1d | 2004-02-02 | 2004-02-03 | 209 | 0d | 网络管理员 | 8h |
| 211 | 1.3.3.2.9 | 配置向后兼容性(如果需要) |  | 1d | 2004-02-03 | 2004-02-04 | 210 | 15d | 网络管理员 | 8h |
| 212 | 1.3.3.2.10 | **配置软件** |  | 16d | 2004-02-03 | 2004-02-25 | 210 | 0d |  | 512h |
| 213 | 1.3.3.2.10.1 | 创建门户 |  | 1d | 2004-02-03 | 2004-02-04 |  | 0d | 工作区协调员 | 8h |
| 214 | 1.3.3.2.10.2 | 配置电子邮件设置 |  | 1d | 2004-02-04 | 2004-02-05 | 213 | 14d | 工作区协调员 | 8h |
| 215 | 1.3.3.2.10.3 | 配置使用率分析 |  | 1d | 2004-02-04 | 2004-02-05 | 213 | 14d | Intranet/Internet 管理员 | 8h |
| 216 | 1.3.3.2.10.4 | 配置防病毒保护 |  | 1d | 2004-02-04 | 2004-02-05 | 213 | 14d | Intranet/Internet 管理员 | 8h |
| 217 | 1.3.3.2.10.5 | 配置阻止的文件 |  | 1d | 2004-02-04 | 2004-02-05 | 213 | 14d | 工作区协调员 | 8h |
| 218 | 1.3.3.2.10.6 | 配置门户安全性 |  | 3d | 2004-02-04 | 2004-02-09 | 213 | 12d | 工作区协调员 | 24h |
| 219 | 1.3.3.2.10.7 | 配置用户配置文件 |  | 3d | 2004-02-04 | 2004-02-09 | 213 | 12d | 工作区协调员 | 24h |
| 220 | 1.3.3.2.10.8 | 配置听众 |  | 2d | 2004-02-04 | 2004-02-06 | 213 | 13d | 工作区协调员 | 16h |

| ID | WBS | Task | Duration | Start | Finish | Predecessors | Total slack | Resources | Work |
| --- | --- | --- | --- | --- | --- | --- | --- | --- | --- |
| 221 | 1.3.3.2.10.9 | **配置搜索** | 3d | 2004-02-04 | 2004-02-09 | 213 | 12d |  | 48h |
| 222 | 1.3.3.2.10.9.1 | 安装并注册筛选器 | 1d | 2004-02-04 | 2004-02-05 |  | 14d | 工作区协调员 | 8h |
| 223 | 1.3.3.2.10.9.2 | 配置内容位置 | 2d | 2004-02-04 | 2004-02-06 |  | 13d | 工作区协调员 | 16h |
| 224 | 1.3.3.2.10.9.3 | 修改复杂词汇和词典文件并创建自定义搜索查询 | 3d | 2004-02-04 | 2004-02-09 |  | 12d | 工作区协调员 | 24h |
| 225 | 1.3.3.2.10.10 | **配置文档管理** | 15d | 2004-02-04 | 2004-02-25 | 213 | 0d |  | 208h |
| 226 | 1.3.3.2.10.10.1 | **创建文件夹结构** | 6d | 2004-02-04 | 2004-02-12 |  | 0d |  | 72h |
| 227 | 1.3.3.2.10.10.1.1 | 分配安全角色 | 3d | 2004-02-04 | 2004-02-09 |  | 0d | 工作区协调员 | 24h |
| 228 | 1.3.3.2.10.10.1.2 | 选择发布过程 | 3d | 2004-02-09 | 2004-02-12 | 227 | 9d | 工作区协调员 | 24h |
| 229 | 1.3.3.2.10.10.1.3 | 添加审批流程 | 3d | 2004-02-09 | 2004-02-12 | 227 | 0d | 工作区协调员 | 24h |
| 230 | 1.3.3.2.10.10.2 | **创建文档配置文件和自定义配置文件** | 2d | 2004-02-12 | 2004-02-16 |  | 0d |  | 24h |
| 231 | 1.3.3.2.10.10.2.1 | 计划文档配置文件 | 1d | 2004-02-12 | 2004-02-13 | 229 | 8d | 工作区协调员 | 8h |
| 232 | 1.3.3.2.10.10.2.2 | 强调带关键字的主题 | 1d | 2004-02-12 | 2004-02-13 | 229 | 0d | 工作区协调员 | 8h |
| 233 | 1.3.3.2.10.10.2.3 | 启用 Web 讨论 | 1d | 2004-02-13 | 2004-02-16 | 232 | 0d | 工作区协调员 | 8h |
| 234 | 1.3.3.2.10.10.3 | **将文档移动到工作环境中** | 7d | 2004-02-16 | 2004-02-25 |  | 0d |  | 112h |
| 235 | 1.3.3.2.10.10.3.1 | 移动多个单独的文档 | 7d | 2004-02-16 | 2004-02-25 | 233 | 0d | 工作区协调员 | 56h |
| 236 | 1.3.3.2.10.10.3.2 | 导入现有文件夹 | 7d | 2004-02-16 | 2004-02-25 | 233 | 0d | 工作区协调员 | 56h |
| 237 | 1.3.3.2.10.11 | 配置警告 | 2d | 2004-02-04 | 2004-02-06 | 213 | 13d | 工作区协调员 | 16h |
| 238 | 1.3.3.2.10.12 | 配置个人登录服务 | 5d | 2004-02-04 | 2004-02-11 | 213 | 10d | 网络管理员; 工作区协调员 | 80h |
| 239 | 1.3.3.2.10.13 | 配置个人网站 | 5d | 2004-02-04 | 2004-02-11 | 213 | 10d | 工作区协调员 | 40h |
| 240 | 1.3.3.2.10.14 | 根据 Extranet 的使用需要配置 Microsoft SharePoint Portal Server v2.0 | 2d | 2004-02-04 | 2004-02-06 | 213 | 13d | Intranet/Internet 管理员 | 16h |
| 241 | 1.3.3.3 | 进行自定义 | 5d | 2004-02-25 | 2004-03-03 | 202 | 0d | Intranet/Internet 管理员 | 40h |
| 242 | 1.3.3.4 | 实施集成 | 5d | 2004-02-25 | 2004-03-03 | 202 | 0d | Intranet/Internet 管理员 | 40h |
| 243 | 1.3.3.5 | **部署到客户端计算机** | 5d | 2004-01-16 | 2004-01-23 |  | 28d |  | 120h |
| 244 | 1.3.3.5.1 | 根据需要更新客户端操作系统 | 5d | 2004-01-16 | 2004-01-23 |  | 28d | 台式计算机管理员 | 40h |
| 245 | 1.3.3.5.2 | 根据需要更新客户端浏览器 | 5d | 2004-01-16 | 2004-01-23 |  | 28d | 台式计算机管理员 | 40h |
| 246 | 1.3.3.5.3 | 根据需要更新客户端软件。 | 5d | 2004-01-16 | 2004-01-23 |  | 28d | 台式计算机管理员 | 40h |
| 247 | 1.3.3.6 | 培训用户 | 5d | 2004-03-03 | 2004-03-10 | 199, 202, 241, 242, 243 | 0d | 教育/培训负责人 | 40h |

| ID | WBS | Task | Type | Duration | Start | Finish | Predecessors | Total slack | Free slack | Resources | Work |
| --- | --- | --- | --- | --- | --- | --- | --- | --- | --- | --- | --- |
| 248 | 1.3.3.7 | **测试和评估系统** |  | 5d | 2004-03-10 | 2004-03-17 | 247 | 0d |  |  | 160h |
| 249 | 1.3.3.7.1 | 测试门户 |  | 5d | 2004-03-10 | 2004-03-17 |  | 0d |  | 测试/QA 负责人 | 40h |
| 250 | 1.3.3.7.2 | 测试搜索和索引 |  | 5d | 2004-03-10 | 2004-03-17 |  | 0d |  | 测试/QA 负责人 | 40h |
| 251 | 1.3.3.7.3 | 测试自定义 |  | 5d | 2004-03-10 | 2004-03-17 |  | 0d |  | 测试/QA 负责人 | 40h |
| 252 | 1.3.3.7.4 | 测试集成 |  | 5d | 2004-03-10 | 2004-03-17 |  | 0d |  | 测试/QA 负责人 | 40h |
| 253 | 1.3.3.8 | 完成生产部署 | milestone | 0d | 2004-03-17 | 2004-03-17 | 248 | 0d |  |  |  |
| 254 | 1.3.4 | 完成部署生产系统 | milestone | 0d | 2004-03-17 | 2004-03-17 | 253 | 0d |  |  |  |
| 255 | 1.4 | **执行后审查** |  | 34d | 2004-03-17 | 2004-05-04 | 139 | 0d |  |  | 2976h |
| 256 | 1.4.1 | **维护系统** |  | 30d | 2004-03-17 | 2004-04-28 |  | 0d |  |  | 2912h |
| 257 | 1.4.1.1 | **备份和恢复** |  | 2d | 2004-03-17 | 2004-03-19 |  | 28d |  |  | 32h |
| 258 | 1.4.1.1.1 | 执行备份 |  | 1d | 2004-03-17 | 2004-03-18 |  | 28d | 0d | 网络管理员; 数据库管理员 | 16h |
| 259 | 1.4.1.1.2 | 测试恢复/灾难恢复 |  | 1d | 2004-03-18 | 2004-03-19 | 258 | 28d |  | 网络管理员; 数据库管理员 | 16h |
| 260 | 1.4.1.2 | **监控性能** |  | 30d | 2004-03-17 | 2004-04-28 |  | 0d |  |  | 2400h |
| 261 | 1.4.1.2.1 | 监控 SQL Server 性能 |  | 30d | 2004-03-17 | 2004-04-28 |  | 0d |  | 网络管理员; 数据库管理员 | 480h |
| 262 | 1.4.1.2.2 | 监控 Web 前端性能 |  | 30d | 2004-03-17 | 2004-04-28 |  | 0d |  | Intranet/Internet 管理员 | 240h |
| 263 | 1.4.1.2.3 | 监控搜索性能 |  | 30d | 2004-03-17 | 2004-04-28 |  | 0d |  | Intranet/Internet 管理员 | 240h |
| 264 | 1.4.1.2.4 | 重新预测系统需求和容量 |  | 30d | 2004-03-17 | 2004-04-28 |  | 0d |  | 网络管理员; Intranet/Internet 管理员; 数据库管理员 | 720h |
| 265 | 1.4.1.2.5 | 根据需要规划更多容量 |  | 30d | 2004-03-17 | 2004-04-28 |  | 0d |  | 网络管理员; Intranet/Internet 管理员; 数据库管理员 | 720h |
| 266 | 1.4.1.3 | 解决客户端/连接性问题 |  | 30d | 2004-03-17 | 2004-04-28 |  | 0d |  | 网络管理员; 台式计算机管理员 | 480h |
| 267 | 1.4.2 | 获得用户反馈 |  | 1d | 2004-04-28 | 2004-04-29 | 256 | 0d |  | 项目经理; 风险承担者 | 16h |
| 268 | 1.4.3 | 评估经验教训 |  | 1d | 2004-04-29 | 2004-04-30 | 267 | 0d |  | 项目经理; 风险承担者 | 16h |
| 269 | 1.4.4 | 根据需要修改项目 |  | 1d | 2004-04-30 | 2004-05-03 | 268 | 0d |  | 网络管理员; 台式计算机管理员 | 16h |
| 270 | 1.4.5 | 建立正在进行的基础机构规划小组 |  | 1d | 2004-05-03 | 2004-05-04 | 269 | 0d |  | 项目经理; 风险承担者 | 16h |
| 271 | 1.4.6 | 执行后审查工作完毕 | milestone | 0d | 2004-05-04 | 2004-05-04 | 270 | 0d |  |  |  |
| 272 | 1.4.7 | 完成部署 Microsoft SharePoint Portal Server v2.0 | milestone | 0d | 2004-05-04 | 2004-05-04 | 271 | 0d |  |  |  |
