# Microsoft Windows XP 部署

Schedule from MS Project, 2004-01-01 to 2005-06-03.

## Calendars

- 标准: Mon-Fri 08:00-12:00, 13:00-17:00; Sat-Sun off.

## Schedule

| ID | WBS | Task | Type | Duration | Start | Finish | Predecessors | Total slack |
| --- | --- | --- | --- | --- | --- | --- | --- | --- |
| 1 | 1 | **Microsoft Windows 2000 Server 到 Windows XP 部署模板** |  | 371.75d | 2004-01-01 | 2005-06-03 |  | 0d |
| 2 | 1.1 | **构想/范围** |  | 23d | 2004-01-01 | 2004-02-02 |  | 0d |
| 3 | 1.1.1 | 评估公司商务目标 |  | 5d | 2004-01-01 | 2004-01-07 |  | 0d |
| 4 | 1.1.2 | 确定技术目标 |  | 5d | 2004-01-08 | 2004-01-14 | 3 | 0d |
| 5 | 1.1.3 | 阐明初步成本/利润分析 |  | 5d | 2004-01-15 | 2004-01-21 | 4 | 0d |
| 6 | 1.1.4 | 确定项目范围(实验室、试生产、国际/地区部署、共存策略等) |  | 5d | 2004-01-22 | 2004-01-28 | 5 | 0d |
| 7 | 1.1.5 | 确定主要里程碑 |  | 2d | 2004-01-29 | 2004-01-30 | 6 | 0d |
| 8 | 1.1.6 | 确保执行所需的赞助/投资 |  | 1d | 2004-02-02 | 2004-02-02 | 7 | 0d |
| 9 | 1.1.7 | 构想/项目范围规划完成 | milestone | 0d | 2004-02-02 | 2004-02-02 | 8 | 0d |
| 10 | 1.2 | **规划** |  | 72.75d | 2004-02-03 | 2004-05-13 |  | 0d |
| 11 | 1.2.1 | **召集项目组/定义角色** |  | 6d | 2004-02-03 | 2004-02-10 |  | 0d |
| 12 | 1.2.1.1 | 指派/定义项目经理 |  | 4h | 2004-02-03 | 2004-02-03 | 9 | 348.25d |
| 13 | 1.2.1.2 | 指派/定义基础结构管理员 |  | 4h | 2004-02-03 | 2004-02-03 | 9 | 348.25d |
| 14 | 1.2.1.3 | 指派/定义部署管理员 |  | 4h | 2004-02-03 | 2004-02-03 | 9 | 348.25d |
| 15 | 1.2.1.4 | 指派/定义台式计算机管理员 |  | 4h | 2004-02-03 | 2004-02-03 | 9 | 348.25d |
| 16 | 1.2.1.5 | 指派/定义 Intranet/Internet 管理员 |  | 4h | 2004-02-03 | 2004-02-03 | 9 | 348.25d |
| 17 | 1.2.1.6 | 指派/定义数据库服务器管理员 |  | 4h | 2004-02-03 | 2004-02-03 | 9 | 348.25d |
| 18 | 1.2.1.7 | 指派/定义浏览器管理员 |  | 4h | 2004-02-03 | 2004-02-03 | 9 | 348.25d |
| 19 | 1.2.1.8 | 指派/定义信息管理员 |  | 4h | 2004-02-03 | 2004-02-03 | 9 | 348.25d |
| 20 | 1.2.1.9 | 指派/定义网络管理员 |  | 4h | 2004-02-03 | 2004-02-03 | 9 | 348.25d |
| 21 | 1.2.1.10 | 指派/定义测试质量安全组 |  | 4h | 2004-02-03 | 2004-02-03 | 9 | 348.25d |
| 22 | 1.2.1.11 | 指派/定义用户教育/培训/通讯 |  | 4h | 2004-02-03 | 2004-02-03 | 9 | 348.25d |
| 23 | 1.2.1.12 | 指派/定义后勤管理人员 |  | 1d | 2004-02-03 | 2004-02-03 | 9 | 0d |
| 24 | 1.2.1.13 | 建立子组角色和责任(例如，基础结构、安全、服务器) |  | 5d | 2004-02-04 | 2004-02-10 | 23 | 0d |
| 25 | 1.2.1.14 | 召集项目组/角色定义完毕 | milestone | 0d | 2004-02-10 | 2004-02-10 | 24 | 0d |

Notes:
- 1: 此 Microsoft Project 模板是为了方便企业环境中 Microsoft Windows XP 的部署而设计的。该模板的设计是为了将执行组织集中在关键步骤上，这些步骤确保了成功的、经过周密计划的执行。
- 2: 计划部署的第一步是定义项目目标。在此步骤中，确定您想要获得的特定商务目标以及 Windows XP 帮助您获得这些目标的方法。这个策略还将帮助您选择最有用的 Windows XP 功能。
- 10: 在此阶段，您应该为想要部署的每个 Windows XP 功能制定一个特定的功能设计说明。当您测试不同的配置以决定如何使用 Windows XP 功能来满足项目目标时，在此阶段测试实验室将变得至关重要。

| ID | WBS | Task | Type | Duration | Start | Finish | Predecessors | Total slack | Free slack |
| --- | --- | --- | --- | --- | --- | --- | --- | --- | --- |
| 26 | 1.2.2 | **详细描述当前数据处理环境** |  | 10d | 2004-02-11 | 2004-02-24 |  | 0d |  |
| 27 | 1.2.2.1 | 详细描述商务组织要求 |  | 5d | 2004-02-11 | 2004-02-17 | 25 | 0d |  |
| 28 | 1.2.2.2 | 详细描述地理方面的考虑因素 |  | 5d | 2004-02-11 | 2004-02-17 | 25 | 0d |  |
| 29 | 1.2.2.3 | 详细描述主要商务过程 |  | 5d | 2004-02-11 | 2004-02-17 | 25 | 0d |  |
| 30 | 1.2.2.4 | 详细描述信息体系结构/流程 |  | 5d | 2004-02-11 | 2004-02-17 | 25 | 0d |  |
| 31 | 1.2.2.5 | 详细描述应用程序要求 |  | 5d | 2004-02-11 | 2004-02-17 | 25 | 0d |  |
| 32 | 1.2.2.6 | 详细描述技术体系结构 |  | 5d | 2004-02-11 | 2004-02-17 | 25 | 0d |  |
| 33 | 1.2.2.7 | 详细描述服务器硬件和软件清单 |  | 5d | 2004-02-11 | 2004-02-17 | 25 | 0d |  |
| 34 | 1.2.2.8 | 详细描述客户端硬件和软件清单 |  | 5d | 2004-02-11 | 2004-02-17 | 25 | 0d |  |
| 35 | 1.2.2.9 | 详细描述当前和未来的信息技术标准 |  | 5d | 2004-02-11 | 2004-02-17 | 25 | 0d |  |
| 36 | 1.2.2.10 | 详细描述当前管理/服务传输模型 |  | 5d | 2004-02-11 | 2004-02-17 | 25 | 0d |  |
| 37 | 1.2.2.11 | 记录当前数据处理环境 |  | 5d | 2004-02-18 | 2004-02-24 | 27, 28, 29, 30, 31, 32, 35, 36, 33, 34 | 0d |  |
| 38 | 1.2.2.12 | 详细描述当前数据处理环境完毕 | milestone | 0d | 2004-02-24 | 2004-02-24 | 37 | 0d |  |
| 39 | 1.2.3 | **初步设计目标** |  | 12d | 2004-02-25 | 2004-03-11 |  | 0d |  |
| 40 | 1.2.3.1 | 将构想/范围映射到当前数据处理环境 |  | 10d | 2004-02-25 | 2004-03-09 | 38 | 0d |  |
| 41 | 1.2.3.2 | 与执行赞助人一起审阅初步设计目标 |  | 2d | 2004-03-10 | 2004-03-11 | 40 | 0d |  |
| 42 | 1.2.3.3 | 初步设计目标确定完毕 | milestone | 0d | 2004-03-11 | 2004-03-11 | 41 | 0d |  |
| 43 | 1.2.4 | **确定共存策略** |  | 3d | 2004-03-12 | 2004-03-16 |  | 29.75d |  |
| 44 | 1.2.4.1 | 确定公司内部的互操作性问题(支持的操作系统、拓扑、协议等) |  | 3d | 2004-03-12 | 2004-03-16 | 42 | 29.75d | 0d |
| 45 | 1.2.4.2 | 确定与合作伙伴的互操作性问题(例如，拓扑、协议) |  | 3d | 2004-03-12 | 2004-03-16 | 42 | 29.75d | 0d |
| 46 | 1.2.4.3 | 共存策略工作确定完毕 | milestone | 0d | 2004-03-16 | 2004-03-16 | 45, 44 | 29.75d |  |
| 47 | 1.2.5 | **建立测试实验室环境** |  | 32.75d | 2004-03-12 | 2004-04-27 |  | 0d |  |
| 48 | 1.2.5.1 | 审阅当前配置文档并且定义实验室模型 |  | 2d | 2004-03-12 | 2004-03-15 | 42 | 0d |  |
| 49 | 1.2.5.2 | 选择一个或多个实验室位置 |  | 1d | 2004-03-16 | 2004-03-16 | 48 | 0d |  |
| 50 | 1.2.5.3 | 确定实验室空间和环境要求 |  | 1d | 2004-03-17 | 2004-03-17 | 49 | 0d |  |
| 51 | 1.2.5.4 | 确定电源和网络连接要求 |  | 2d | 2004-03-18 | 2004-03-19 | 50 | 0d |  |
| 52 | 1.2.5.5 | 设计和记录实验室的理想化和实际配置 |  | 2d | 2004-03-22 | 2004-03-23 | 51 | 0d |  |
| 53 | 1.2.5.6 | 确定硬件要求 |  | 2d | 2004-03-24 | 2004-03-25 | 52 | 0d |  |
| 54 | 1.2.5.7 | 确定软件要求，包括商务应用软件和工具 |  | 3d | 2004-03-26 | 2004-03-30 | 53 | 0d |  |
| 55 | 1.2.5.8 | 确定实验室人员 |  | 1d | 2004-03-31 | 2004-03-31 | 54 | 0d |  |
| 56 | 1.2.5.9 | 确定数据库要求 |  | 1d | 2004-04-01 | 2004-04-01 | 55 | 0d |  |
| 57 | 1.2.5.10 | 确定布线和网络连接计划 |  | 1d | 2004-04-02 | 2004-04-02 | 56 | 0d |  |
| 58 | 1.2.5.11 | 获得硬件，包括电缆和软件 |  | 3d | 2004-04-05 | 2004-04-07 | 57 | 0d |  |
| 59 | 1.2.5.12 | 获得工作区设备，如办公桌、椅子、白板、软木板、灯、电话和搁板 |  | 3d | 2004-04-05 | 2004-04-07 | 57 | 0d |  |
| 60 | 1.2.5.13 | 建立和配置网络 |  | 3d | 2004-04-08 | 2004-04-12 | 58, 59 | 0d |  |
| 61 | 1.2.5.14 | 测试网络连通性 |  | 1d | 2004-04-13 | 2004-04-13 | 60 | 0d |  |
| 62 | 1.2.5.15 | 建立和配置服务器 |  | 2d | 2004-04-14 | 2004-04-15 | 61 | 0d |  |
| 63 | 1.2.5.16 | 安装应用程序并在服务器上建立数据库 |  | 2d | 2004-04-16 | 2004-04-19 | 62 | 1d |  |
| 64 | 1.2.5.17 | 安装测试和管理工具 |  | 4h | 2004-04-16 | 2004-04-16 | 62 | 2.5d |  |
| 65 | 1.2.5.18 | 建立和配置客户机 |  | 2d | 2004-04-16 | 2004-04-19 | 62 | 0d |  |
| 66 | 1.2.5.19 | 在客户机上安装应用程序 |  | 1d | 2004-04-20 | 2004-04-20 | 65 | 0d |  |
| 67 | 1.2.5.20 | 测试所有实验室组件 |  | 2d | 2004-04-21 | 2004-04-22 | 66, 64, 63 | 0d |  |
| 68 | 1.2.5.21 | 指派实验室管理人员 |  | 2h | 2004-04-23 | 2004-04-23 | 67 | 0d |  |
| 69 | 1.2.5.22 | 定义实验室的改动控制过程 |  | 4h | 2004-04-23 | 2004-04-23 | 68 | 0d |  |
| 70 | 1.2.5.23 | 创建、测试和记录实验室恢复过程 |  | 2d | 2004-04-23 | 2004-04-27 | 69 | 0d |  |
| 71 | 1.2.5.24 | 实验室环境建立测试完毕 | milestone | 0d | 2004-04-27 | 2004-04-27 | 70 | 0d |  |

| ID | WBS | Task | Type | Duration | Start | Finish | Predecessors | Total slack | Free slack |
| --- | --- | --- | --- | --- | --- | --- | --- | --- | --- |
| 72 | 1.2.6 | **进行风险评估** |  | 12d | 2004-04-27 | 2004-05-13 |  | 0d |  |
| 73 | 1.2.6.1 | 确定关键的应用程序 |  | 2d | 2004-04-27 | 2004-04-29 | 71, 46 | 0d |  |
| 74 | 1.2.6.2 | 确定并分析潜在风险 |  | 4d | 2004-04-29 | 2004-05-05 | 73 | 0d |  |
| 75 | 1.2.6.3 | 量化风险的潜在影响 |  | 2d | 2004-05-05 | 2004-05-07 | 74 | 0d |  |
| 76 | 1.2.6.4 | 详细描述增加过程 |  | 2d | 2004-05-07 | 2004-05-11 | 75 | 0d |  |
| 77 | 1.2.6.5 | 记录风险评估 |  | 2d | 2004-05-11 | 2004-05-13 | 76 | 0d |  |
| 78 | 1.2.6.6 | 风险评估完毕 | milestone | 0d | 2004-05-13 | 2004-05-13 | 77 | 0d |  |
| 79 | 1.2.7 | **定义通讯策略** |  | 13d | 2004-03-12 | 2004-03-30 |  | 31.75d |  |
| 80 | 1.2.7.1 | 定义各个阶段的通讯策略 |  | 3d | 2004-03-12 | 2004-03-16 | 42 | 31.75d | 0d |
| 81 | 1.2.7.2 | 定义听众 |  | 1d | 2004-03-17 | 2004-03-17 | 80 | 31.75d | 0d |
| 82 | 1.2.7.3 | 定义通讯传输机制 |  | 3d | 2004-03-18 | 2004-03-22 | 81 | 31.75d | 0d |
| 83 | 1.2.7.4 | 建立通讯时间表 |  | 4d | 2004-03-23 | 2004-03-26 | 82 | 31.75d | 0d |
| 84 | 1.2.7.5 | 记录通讯策略/标准 |  | 2d | 2004-03-29 | 2004-03-30 | 83 | 31.75d | 0d |
| 85 | 1.2.7.6 | 通讯完毕 | milestone | 0d | 2004-03-30 | 2004-03-30 | 84 | 31.75d |  |
| 86 | 1.2.8 | **定义教育/培训策略** |  | 44.75d | 2004-03-12 | 2004-05-13 |  | 0d |  |
| 87 | 1.2.8.1 | 为部署人口统计定义教育策略(例如，管理员、技术支持、用户) |  | 2d | 2004-03-12 | 2004-03-15 | 42 | 35.75d | 0d |
| 88 | 1.2.8.2 | 定义教育传输机制 |  | 2d | 2004-03-16 | 2004-03-17 | 87 | 35.75d | 0d |
| 89 | 1.2.8.3 | 按阶段建立教育时间表 |  | 3d | 2004-03-18 | 2004-03-22 | 88 | 35.75d | 0d |
| 90 | 1.2.8.4 | 记录教育策略/标准 |  | 2d | 2004-03-23 | 2004-03-24 | 89 | 35.75d | 0d |
| 91 | 1.2.8.5 | 教育工作完毕 | milestone | 0d | 2004-03-24 | 2004-03-24 | 90 | 35.75d |  |
| 92 | 1.2.8.6 | 规划工作完成 | milestone | 0d | 2004-05-13 | 2004-05-13 | 91, 85, 78 | 0d |  |
| 93 | 1.3 | **开发** |  | 264d | 2004-05-13 | 2005-05-18 |  | 0d |  |
| 94 | 1.3.1 | **评估迁移策略** |  | 15d | 2004-05-13 | 2004-06-03 |  | 0d |  |
| 95 | 1.3.1.1 | 确定迁移标志 |  | 1d | 2004-05-13 | 2004-05-14 | 92 | 0d |  |
| 96 | 1.3.1.2 | 确定支持的升级路径 |  | 2d | 2004-05-14 | 2004-05-18 | 95 | 0d |  |
| 97 | 1.3.1.3 | 检查现有域结构 |  | 2d | 2004-05-18 | 2004-05-20 | 96 | 0d |  |
| 98 | 1.3.1.4 | 确定重新构建域的原因 |  | 2d | 2004-05-20 | 2004-05-24 | 97 | 0d |  |
| 99 | 1.3.1.5 | 确定重新构建域的时间 |  | 1d | 2004-05-24 | 2004-05-25 | 98 | 0d |  |
| 100 | 1.3.1.6 | 确定升级域控制器的策略 |  | 2d | 2004-05-25 | 2004-05-27 | 99 | 0d |  |
| 101 | 1.3.1.7 | 确定升级域的顺序 |  | 2d | 2004-05-27 | 2004-05-31 | 100 | 0d |  |
| 102 | 1.3.1.8 | 制定故障恢复计划 |  | 2d | 2004-05-31 | 2004-06-02 | 101 | 0d |  |
| 103 | 1.3.1.9 | 确定移动到本机模式的时间 |  | 1d | 2004-06-02 | 2004-06-03 | 102 | 0d |  |
| 104 | 1.3.1.10 | 迁移策略评估完毕 | milestone | 0d | 2004-06-03 | 2004-06-03 | 103 | 0d |  |

Notes:
- 86: 部署前，应该培训用户有关 Windows XP 的特性和功能。您可能还想要提供正式的培训。 / Microsoft Windows XP Professional 和 Windows XP Server 的 Microsoft Official Curriculum (MOC)为计算机专业人员提供了配置、管理和支持基于 Windows XP 网络的专门技术。
- 93: 在功能开发阶段，您将为打算执行的 Windows XP 功能创建实际的设计，有时称为功能说明。当您决定所选功能在产品环境中实际工作的方式时，将涉及到这个阶段。 / 当每个部署小组创建了自己的计划，并且与部署小组同步来创建综合的设计说明时，在此阶段中将开始重复的设计和测试过程。 / 在此阶段中，首先将出现 Windows XP 功能的相关技术，因此不同的部署专业小组协作和共享对性能、功能和每个功能之间相关性的认识是非常重要的。项目计划包含功能说明(与每个小组的计划相结合)和时间计划。 / 项目计划被认可的里程碑是从管理到继续进行部署的权限。 / 此阶段的任务是使小组集中于开发中需要注意的地方。

| ID | WBS | Task | Type | Duration | Start | Finish | Predecessors | Total slack |
| --- | --- | --- | --- | --- | --- | --- | --- | --- |
| 105 | 1.3.2 | **Active Directory** |  | 69d | 2004-06-03 | 2004-09-08 |  | 0d |
| 106 | 1.3.2.1 | **Active Directory 和域名称空间** |  | 56d | 2004-06-03 | 2004-08-20 |  | 0d |
| 107 | 1.3.2.1.1 | 审阅 Active Directory 功能 |  | 3d | 2004-06-03 | 2004-06-08 | 104 | 0d |
| 108 | 1.3.2.1.2 | **设计 Active Directory 目录林计划** |  | 53d | 2004-06-08 | 2004-08-20 |  | 0d |
| 109 | 1.3.2.1.2.1 | 确定网络中的目录林数目 |  | 2d | 2004-06-08 | 2004-06-10 | 107 | 0d |
| 110 | 1.3.2.1.2.2 | 定义目录林更改控制策略 |  | 2d | 2004-06-10 | 2004-06-14 | 109 | 0d |
| 111 | 1.3.2.1.2.3 | **记录部署后对目录林进行更改的影响因素** |  | 3d | 2004-06-14 | 2004-06-17 |  | 0d |
| 112 | 1.3.2.1.2.3.1 | 定义架构更改策略 |  | 2d | 2004-06-14 | 2004-06-16 | 110 | 0d |
| 113 | 1.3.2.1.2.3.2 | 定义配置更改策略 |  | 1d | 2004-06-16 | 2004-06-17 | 112 | 0d |
| 114 | 1.3.2.1.2.3.3 | 记录部署后对目录林进行更改的影响因素 | milestone | 0d | 2004-06-17 | 2004-06-17 | 113 | 0d |
| 115 | 1.3.2.1.2.4 | 记录目录林计划 |  | 2d | 2004-06-17 | 2004-06-21 | 114 | 0d |
| 116 | 1.3.2.1.2.5 | Active Directory 目录林计划设计完毕 | milestone | 0d | 2004-06-21 | 2004-06-21 | 115 | 0d |
| 117 | 1.3.2.1.2.6 | **设计 Active Directory 域计划** |  | 12d | 2004-06-21 | 2004-07-07 |  | 0d |
| 118 | 1.3.2.1.2.6.1 | **确定每个目录林中域的数目** |  | 5d | 2004-06-21 | 2004-06-28 |  | 0d |
| 119 | 1.3.2.1.2.6.1.1 | 评估单域模式 |  | 3d | 2004-06-21 | 2004-06-24 | 116 | 0d |
| 120 | 1.3.2.1.2.6.1.2 | **评估多域模式** |  | 2d | 2004-06-24 | 2004-06-28 |  | 0d |
| 121 | 1.3.2.1.2.6.1.2.1 | 评估保留的原有 Windows 2000 域 |  | 2d | 2004-06-24 | 2004-06-28 | 119, 116 | 0d |
| 122 | 1.3.2.1.2.6.1.2.2 | 评估管理的磁盘分区应考虑的因素 |  | 2d | 2004-06-24 | 2004-06-28 | 119 | 0d |
| 123 | 1.3.2.1.2.6.1.2.3 | 评估实际的磁盘分区应考虑的因素 |  | 2d | 2004-06-24 | 2004-06-28 | 119 | 0d |
| 124 | 1.3.2.1.2.6.1.2.4 | 多域模型确定完毕 | milestone | 0d | 2004-06-28 | 2004-06-28 | 123, 121, 122 | 0d |
| 125 | 1.3.2.1.2.6.2 | 指派目录林根域 |  | 4h | 2004-06-28 | 2004-06-29 | 119, 124 | 0d |
| 126 | 1.3.2.1.2.6.3 | 为每个域指定一个域名系统(DNS)名称以创建域层次结构 |  | 4h | 2004-06-29 | 2004-06-29 | 125 | 0d |
| 127 | 1.3.2.1.2.6.4 | 规划 DNS 服务器部署 |  | 2d | 2004-06-29 | 2004-07-01 | 126 | 0d |
| 128 | 1.3.2.1.2.6.5 | 使用快捷方式信任优化身份验证 |  | 2d | 2004-07-01 | 2004-07-05 | 127 | 0d |
| 129 | 1.3.2.1.2.6.6 | 记录部署后对域进行更改的影响因素 |  | 2d | 2004-07-05 | 2004-07-07 | 128 | 0d |
| 130 | 1.3.2.1.2.6.7 | Active Directory 域计划设计完毕 | milestone | 0d | 2004-07-07 | 2004-07-07 | 129 | 0d |

Notes:
- 106: Active Directory 结构和域名系统(DNS)，以及 WINS、DHCP、网络协议、文件、打印、数据流媒体以及其他带宽密集的应用程序必须被设计成适合商务的需要和信息技术(IT)的性能。 / 如果您的商务中包含大量的附属和漫游或远程访问的用户，那么需要考虑组织单位、组策略、安全以及智能镜像技术。如果要提供安全的 Intranet 或 Extranet 功能，那么 IPSec 和公钥基础结构(PKI)将作为重要组件来设计。 / 如果您正在将 Windows XP Professional 配置为台式计算机和膝上型电脑中的主要操作系统，那么您需要考虑安装选项、多语言能力、安全、Active Directory，以及其他更改和配置管理技术。 / 最后，如果您正在不同种类的环境(不是 Windows XP 的其他网络操作系统)下工作，那么还需要考虑互操作性和共存选项。

| ID | WBS | Task | Type | Duration | Start | Finish | Predecessors | Total slack |
| --- | --- | --- | --- | --- | --- | --- | --- | --- |
| 131 | 1.3.2.1.2.7 | **设计 Active Directory 组织单位(OU)计划** |  | 6d | 2004-07-07 | 2004-07-15 |  | 0d |
| 132 | 1.3.2.1.2.7.1 | 定义组织单位以委托管理 |  | 2d | 2004-07-07 | 2004-07-09 | 130 | 0d |
| 133 | 1.3.2.1.2.7.2 | 定义组织单位以隐藏对象 |  | 1d | 2004-07-09 | 2004-07-12 | 132 | 0d |
| 134 | 1.3.2.1.2.7.3 | 定义组织单位以应用组策略 |  | 1d | 2004-07-12 | 2004-07-13 | 133 | 0d |
| 135 | 1.3.2.1.2.7.4 | 记录部署后对组织单位结构进行更改的影响因素 |  | 2d | 2004-07-13 | 2004-07-15 | 134 | 0d |
| 136 | 1.3.2.1.2.7.5 | Active Directory 组织单位计划设计完毕 | milestone | 0d | 2004-07-15 | 2004-07-15 | 135 | 0d |
| 137 | 1.3.2.1.2.8 | **设计站点拓扑计划** |  | 26d | 2004-07-15 | 2004-08-20 |  | 0d |
| 138 | 1.3.2.1.2.8.1 | **使用物理网络拓扑定义站点和站点链接** |  | 12d | 2004-07-15 | 2004-08-02 |  | 0d |
| 139 | 1.3.2.1.2.8.1.1 | 获得物理网络拓扑映射 |  | 4h | 2004-07-15 | 2004-07-16 | 136 | 0d |
| 140 | 1.3.2.1.2.8.1.2 | 为每一个局域网(LAN)或高速骨干网连接的 LAN 集创建站点 |  | 2d | 2004-07-16 | 2004-07-20 | 139 | 0d |
| 141 | 1.3.2.1.2.8.1.3 | 为每个没有直接连接的位置创建一个站点(SMTP 邮件) |  | 2d | 2004-07-20 | 2004-07-22 | 140 | 0d |
| 142 | 1.3.2.1.2.8.1.4 | 为每个站点记录 Internet 协议(IP)子网 |  | 4h | 2004-07-22 | 2004-07-22 | 141 | 0d |
| 143 | 1.3.2.1.2.8.1.5 | **站点链接** |  | 7d | 2004-07-22 | 2004-08-02 |  | 0d |
| 144 | 1.3.2.1.2.8.1.5.1 | 使用站点链接定义站点连接 |  | 2d | 2004-07-22 | 2004-07-26 | 142 | 0d |
| 145 | 1.3.2.1.2.8.1.5.2 | 定义重复日程 |  | 2d | 2004-07-26 | 2004-07-28 | 144 | 0d |
| 146 | 1.3.2.1.2.8.1.5.3 | 定义重复间隔 |  | 1d | 2004-07-28 | 2004-07-29 | 145 | 0d |
| 147 | 1.3.2.1.2.8.1.5.4 | 定义重复传输 |  | 1d | 2004-07-29 | 2004-07-30 | 146 | 0d |
| 148 | 1.3.2.1.2.8.1.5.5 | 定义链接成本 |  | 1d | 2004-07-30 | 2004-08-02 | 147 | 0d |
| 149 | 1.3.2.1.2.8.1.5.6 | 站点链接完毕 | milestone | 0d | 2004-08-02 | 2004-08-02 | 148 | 0d |
| 150 | 1.3.2.1.2.8.2 | **定义站点内的服务器位置** |  | 11d | 2004-08-02 | 2004-08-17 |  | 0d |
| 151 | 1.3.2.1.2.8.2.1 | 定义每个物理磁盘分区的域控制器位置设计 |  | 1d | 2004-08-02 | 2004-08-03 | 149 | 0d |
| 152 | 1.3.2.1.2.8.2.2 | **定义其他域控制器** |  | 6d | 2004-08-03 | 2004-08-11 |  | 0d |
| 153 | 1.3.2.1.2.8.2.2.1 | 分析故障移动要求 |  | 3d | 2004-08-03 | 2004-08-06 | 151 | 0d |
| 154 | 1.3.2.1.2.8.2.2.2 | 分析域控制器客户端工作量 |  | 3d | 2004-08-06 | 2004-08-11 | 153 | 0d |
| 155 | 1.3.2.1.2.8.2.2.3 | 其他域控制器定义完毕 | milestone | 0d | 2004-08-11 | 2004-08-11 | 154 | 0d |
| 156 | 1.3.2.1.2.8.2.3 | 定义全局目录服务器的位置 |  | 2d | 2004-08-11 | 2004-08-13 | 155 | 0d |
| 157 | 1.3.2.1.2.8.2.4 | 定义 DNS 服务器的位置 |  | 2d | 2004-08-13 | 2004-08-17 | 156 | 0d |
| 158 | 1.3.2.1.2.8.3 | 记录部署后对站点拓扑进行更改的影响因素 |  | 3d | 2004-08-17 | 2004-08-20 | 157 | 0d |
| 159 | 1.3.2.1.2.8.4 | 站点拓扑计划设计完毕 | milestone | 0d | 2004-08-20 | 2004-08-20 | 158 | 0d |

| ID | WBS | Task | Type | Duration | Start | Finish | Predecessors | Total slack | Free slack |
| --- | --- | --- | --- | --- | --- | --- | --- | --- | --- |
| 160 | 1.3.2.2 | **评估 Active Directory 与 Exchange 2000 同步** |  | 13d | 2004-08-20 | 2004-09-08 |  | 0d |  |
| 161 | 1.3.2.2.1 | 检查现有域结构和 Exchange 站点拓扑 |  | 1d | 2004-08-20 | 2004-08-23 | 159 | 0d |  |
| 162 | 1.3.2.2.2 | 审查网络以便用于 Active Directory 连接器(ADC)部署 |  | 1d | 2004-08-23 | 2004-08-24 | 161 | 0d |  |
| 163 | 1.3.2.2.3 | 考虑特殊的网络需求 |  | 1d | 2004-08-24 | 2004-08-25 | 162 | 0d |  |
| 164 | 1.3.2.2.4 | **确定要管理哪个目录服务中的对象** |  | 2d | 2004-08-25 | 2004-08-27 |  | 0d |  |
| 165 | 1.3.2.2.4.1 | 评估 Active Directory 中对象的管理 |  | 2d | 2004-08-25 | 2004-08-27 | 163 | 0d |  |
| 166 | 1.3.2.2.4.2 | 评估 Exchange Server 2000 目录服务中对象的管理 |  | 2d | 2004-08-25 | 2004-08-27 | 163 | 0d |  |
| 167 | 1.3.2.2.5 | 定义用于目录同步的对象 |  | 2d | 2004-08-27 | 2004-08-31 | 165, 166 | 0d |  |
| 168 | 1.3.2.2.6 | 使用 Windows XP 组织单位映射 Exchange 容器 |  | 1d | 2004-08-31 | 2004-09-01 | 167 | 0d |  |
| 169 | 1.3.2.2.7 | 设计连接许可协议 |  | 2d | 2004-09-01 | 2004-09-03 | 168 | 0d |  |
| 170 | 1.3.2.2.8 | 记录 ADC 连接计划策略/标准 |  | 3d | 2004-09-03 | 2004-09-08 | 169 | 0d |  |
| 171 | 1.3.2.2.9 | Active Directory 与 Exchange 2000 一起同步完毕 | milestone | 0d | 2004-09-08 | 2004-09-08 | 170 | 0d |  |
| 172 | 1.3.2.3 | Active Directory 完毕 | milestone | 0d | 2004-09-08 | 2004-09-08 | 171 | 0d |  |
| 173 | 1.3.3 | **客户端策略、标准和管理** |  | 40.5d | 2004-06-03 | 2004-07-30 |  | 92.5d |  |
| 174 | 1.3.3.1 | 定义客户端管理策略 |  | 2d | 2004-06-03 | 2004-06-07 | 104, 92 | 92.5d | 0d |
| 175 | 1.3.3.2 | 定义基于作业功能的客户端应用程序需求 |  | 3d | 2004-06-07 | 2004-06-10 | 174 | 92.5d | 0d |
| 176 | 1.3.3.3 | 定义基于作业功能的客户端配置限制 |  | 3d | 2004-06-10 | 2004-06-15 | 175 | 92.5d | 0d |
| 177 | 1.3.3.4 | 配置已批准的客户端硬件(膝上型电脑和台式计算机)以运行 Windows XP |  | 2d | 2004-06-15 | 2004-06-17 | 176 | 92.5d | 0d |
| 178 | 1.3.3.5 | 配置基本的 Windows XP 用户界面选项 |  | 2d | 2004-06-17 | 2004-06-21 | 177 | 92.5d | 0d |
| 179 | 1.3.3.6 | 配置登录/注销选项 |  | 4h | 2004-06-21 | 2004-06-22 | 178 | 92.5d | 0d |
| 180 | 1.3.3.7 | 配置“开始”菜单选项 |  | 4h | 2004-06-22 | 2004-06-22 | 179 | 92.5d | 0d |
| 181 | 1.3.3.8 | 配置桌面选项 |  | 4h | 2004-06-22 | 2004-06-23 | 180 | 92.5d | 0d |
| 182 | 1.3.3.9 | 配置多语言选项 |  | 4h | 2004-06-23 | 2004-06-23 | 181 | 92.5d | 0d |
| 183 | 1.3.3.10 | 配置辅助功能选项 |  | 4h | 2004-06-23 | 2004-06-24 | 182 | 92.5d | 0d |
| 184 | 1.3.3.11 | 配置基于客户端需求和管理原则的应用程序 |  | 1d | 2004-06-24 | 2004-06-25 | 183 | 92.5d | 0d |
| 185 | 1.3.3.12 | 配置强制的应用程序 |  | 1d | 2004-06-25 | 2004-06-28 | 184 | 92.5d | 0d |
| 186 | 1.3.3.13 | 配置可选的应用程序 |  | 1d | 2004-06-28 | 2004-06-29 | 185 | 92.5d | 0d |
| 187 | 1.3.3.14 | 记录客户端策略/标准 |  | 3d | 2004-06-29 | 2004-07-02 | 186 | 92.5d | 0d |

| ID | WBS | Task | Type | Duration | Start | Finish | Predecessors | Total slack | Free slack |
| --- | --- | --- | --- | --- | --- | --- | --- | --- | --- |
| 188 | 1.3.3.15 | **更改配置策略** |  | 20d | 2004-07-02 | 2004-07-30 |  | 92.5d |  |
| 189 | 1.3.3.15.1 | 定义用户和组织更改以及配置管理需求 |  | 2d | 2004-07-02 | 2004-07-06 | 187 | 92.5d | 0d |
| 190 | 1.3.3.15.2 | 评估并选择所需的 Windows XP 更改和配置管理功能 |  | 3d | 2004-07-06 | 2004-07-09 | 189 | 92.5d | 0d |
| 191 | 1.3.3.15.3 | 评估用于软件分发的其他应用程序，例如 SMS、Tivoli 等 |  | 3d | 2004-07-09 | 2004-07-14 | 190 | 92.5d | 0d |
| 192 | 1.3.3.15.4 | 计划使用远程 OS 安装来安装 Windows XP |  | 4d | 2004-07-14 | 2004-07-20 | 191 | 92.5d | 0d |
| 193 | 1.3.3.15.5 | 配置组策略以便启用 IntelliMirror (智能镜像)软件安装和维护 |  | 4d | 2004-07-20 | 2004-07-26 | 192 | 92.5d | 0d |
| 194 | 1.3.3.15.6 | 为用户数据管理配置服务器共享和组策略 |  | 2d | 2004-07-26 | 2004-07-28 | 193 | 92.5d | 0d |
| 195 | 1.3.3.15.7 | 为用户设置管理配置服务器共享和组策略 |  | 2d | 2004-07-28 | 2004-07-30 | 194 | 92.5d | 0d |
| 196 | 1.3.3.15.8 | 配置策略更改完毕 | milestone | 0d | 2004-07-30 | 2004-07-30 | 195 | 92.5d | 0d |
| 197 | 1.3.3.16 | 客户端策略、标准和管理确定完毕 | milestone | 0d | 2004-07-30 | 2004-07-30 | 196 | 92.5d |  |
| 198 | 1.3.4 | **应用程序与 Windows XP 的兼容性** |  | 37.5d | 2004-05-13 | 2004-07-06 |  | 55.5d |  |
| 199 | 1.3.4.1 | 审阅详细的应用程序清单文档 |  | 2d | 2004-05-13 | 2004-05-17 | 92 | 55.5d | 0d |
| 200 | 1.3.4.2 | 请考虑减少使用的应用程序数量并制定桌面标准 |  | 5d | 2004-05-17 | 2004-05-24 | 199 | 55.5d | 0d |
| 201 | 1.3.4.3 | 开发用于区分应用程序优先次序的系统 |  | 2d | 2004-05-24 | 2004-05-26 | 200 | 55.5d | 0d |
| 202 | 1.3.4.4 | 按照应用程序执行商务的关键程度区分其优先次序 |  | 1d | 2004-05-26 | 2004-05-27 | 201 | 55.5d | 0d |
| 203 | 1.3.4.5 | 编写测试计划，包含测试方法、实验室和测试资源需求，以及计划安排 |  | 4d | 2004-05-27 | 2004-06-02 | 202 | 55.5d | 0d |
| 204 | 1.3.4.6 | 开发用于捕获和报告测试结果的测试跟踪系统 |  | 1d | 2004-06-02 | 2004-06-03 | 203 | 55.5d | 0d |
| 205 | 1.3.4.7 | 计划测试事件 |  | 5d | 2004-06-03 | 2004-06-10 | 204 | 55.5d | 0d |
| 206 | 1.3.4.8 | 测试应用程序并记录结果 |  | 10d | 2004-06-10 | 2004-06-24 | 205 | 55.5d | 0d |
| 207 | 1.3.4.9 | 报告测试进度 |  | 10d | 2004-06-15 | 2004-06-29 | 206FS-7.5% | 55.5d | 0d |
| 208 | 1.3.4.10 | 解决应用程序的不兼容性 |  | 5d | 2004-06-29 | 2004-07-06 | 207 | 55.5d | 0d |
| 209 | 1.3.4.11 | 应用程序与 Windows XP 完全兼容 | milestone | 0d | 2004-07-06 | 2004-07-06 | 208 | 55.5d | 0d |
| 210 | 1.3.5 | **安全方面应考虑的因素** |  | 64d | 2004-09-08 | 2004-12-07 |  | 0d |  |
| 211 | 1.3.5.1 | 确定适用于网络的安全风险 |  | 5d | 2004-09-08 | 2004-09-15 | 172 | 0d |  |
| 212 | 1.3.5.2 | 估计可以确认的安全风险的解决方案 |  | 3d | 2004-09-15 | 2004-09-20 | 211 | 0d |  |
| 213 | 1.3.5.3 | 确保所有对网络资源的访问都需要使用域帐户进行身份验证 |  | 2d | 2004-09-20 | 2004-09-22 | 212 | 0d |  |
| 214 | 1.3.5.4 | 决定用户团体需要将强身份验证用于交互式或远程访问登录的部分 |  | 1d | 2004-09-22 | 2004-09-23 | 213 | 0d |  |
| 215 | 1.3.5.5 | 定义域用户帐户的密码长度、更改的时间间隔和复杂性要求，并且制订计划以便将这些要求传递给用户团体 |  | 1d | 2004-09-23 | 2004-09-24 | 214 | 0d |  |
| 216 | 1.3.5.6 | 确定如果强身份验证满足安全目的，是否需要智能卡登录的公钥安全 |  | 1d | 2004-09-24 | 2004-09-27 | 215 | 0d |  |
| 217 | 1.3.5.7 | 定义启用远程访问服务的策略 |  | 2d | 2004-09-27 | 2004-09-29 | 216 | 0d |  |
| 218 | 1.3.5.8 | 制定关于远程访问过程，包括连接方法的过程/通讯 |  | 2d | 2004-09-29 | 2004-10-01 | 217 | 0d |  |
| 219 | 1.3.5.9 | 定义用户组并建立组名称以及使用组类型方法的惯例 |  | 3d | 2004-10-01 | 2004-10-06 | 218 | 0d |  |
| 220 | 1.3.5.10 | 定义打算用于对企业范围资源的广泛安全访问的最高级别安全组 |  | 1d | 2004-10-06 | 2004-10-07 | 219 | 0d |  |
| 221 | 1.3.5.11 | 通过使用安全组方法的特定参考定义访问控制策略 |  | 2d | 2004-10-07 | 2004-10-11 | 220 | 0d |  |
| 222 | 1.3.5.12 | 定义创建新组的过程以及负有管理组成员职责的人员 |  | 1d | 2004-10-11 | 2004-10-12 | 221 | 0d |  |
| 223 | 1.3.5.13 | 确定哪个现有域属于此目录林以及哪个域将使用外部信任关系 |  | 1d | 2004-10-12 | 2004-10-13 | 222 | 0d |  |
| 224 | 1.3.5.14 | 描述域、域树、目录林，并明确说明它们之间的信任关系 |  | 1d | 2004-10-13 | 2004-10-14 | 223 | 0d |  |
| 225 | 1.3.5.15 | 定义确定和管理敏感或机密信息以及用户需求的策略，以便保护敏感的数据 |  | 1d | 2004-10-14 | 2004-10-15 | 224 | 0d |  |
| 226 | 1.3.5.16 | 确定提供可能需要数据保护的敏感数据的网络数据服务器 |  | 1d | 2004-10-15 | 2004-10-18 | 225 | 0d |  |
| 227 | 1.3.5.17 | 制定远程访问使用的保护数据的 Internet 协议安全(IPSec)部署规划，或访问敏感的应用程序数据服务器的部署规划 |  | 2d | 2004-10-18 | 2004-10-20 | 226 | 0d |  |
| 228 | 1.3.5.18 | 如果使用加密文件系统(EFS)，请说明数据故障恢复策略，包括组织中的故障恢复代理的角色 |  | 2d | 2004-10-20 | 2004-10-22 | 227 | 0d |  |
| 229 | 1.3.5.19 | 如果使用 EFS，请说明用来实现数据故障恢复进程及验证组织的进程状况的过程 |  | 2d | 2004-10-22 | 2004-10-26 | 228 | 0d |  |
| 230 | 1.3.5.20 | 如果使用 IPSec，请确定网络中所使用的方法的方案，并理解性能的含义 |  | 2d | 2004-10-26 | 2004-10-28 | 229 | 0d |  |
| 231 | 1.3.5.21 | 定义/传送域范围的帐户策略 |  | 3d | 2004-10-28 | 2004-11-02 | 230 | 0d |  |
| 232 | 1.3.5.22 | 决定网络中不同类别系统的本地安全策略需求，如台式计算机、文件和打印服务器、电子邮件服务器，然后为每个类别定义适当的“组策略”安全设置 |  | 3d | 2004-11-02 | 2004-11-05 | 231 | 0d |  |
| 233 | 1.3.5.23 | 定义可以使用特定的安全模板来管理安全设置的应用程序服务器，然后考虑通过“组策略”管理它们 |  | 2d | 2004-11-05 | 2004-11-09 | 232 | 0d |  |
| 234 | 1.3.5.24 | 将适当的安全模板应用于从 Windows 2000 升级的系统，而不是应用到全新安装的系统 |  | 1d | 2004-11-09 | 2004-11-10 | 233 | 0d |  |
| 235 | 1.3.5.25 | 使用安全模板作为描述要执行不同类别计算机的安全级别的手段 |  | 1d | 2004-11-10 | 2004-11-11 | 234 | 0d |  |
| 236 | 1.3.5.26 | 制定测试计划以便验证常规的商务应用程序在正确配置的安全系统中是否正常运行 |  | 5d | 2004-11-11 | 2004-11-18 | 235 | 0d |  |
| 237 | 1.3.5.27 | 定义所需要的其他应用程序，这些程序将提供增强的安全功能以满足组织的安全目标 |  | 1d | 2004-11-18 | 2004-11-19 | 236 | 0d |  |
| 238 | 1.3.5.28 | 说明下载代码需要的安全级别 |  | 1d | 2004-11-19 | 2004-11-22 | 237 | 0d |  |
| 239 | 1.3.5.29 | 为所有内部开发的分布式软件部署用于实现代码签名的内部过程 |  | 2d | 2004-11-22 | 2004-11-24 | 238 | 0d |  |
| 240 | 1.3.5.30 | 说明确保管理员帐户和管理控制台安全的策略 |  | 1d | 2004-11-24 | 2004-11-25 | 239 | 0d |  |
| 241 | 1.3.5.31 | 确定计划授权管理员控制特定任务的条件 |  | 1d | 2004-11-25 | 2004-11-26 | 240 | 0d |  |
| 242 | 1.3.5.32 | 确定关于审核的策略，包括工作人员 |  | 2d | 2004-11-26 | 2004-11-30 | 241 | 0d |  |
| 243 | 1.3.5.33 | 记录安全策略/标准 |  | 5d | 2004-11-30 | 2004-12-07 | 242 | 0d |  |
| 244 | 1.3.5.34 | 安全方面的考虑因素确定完毕 | milestone | 0d | 2004-12-07 | 2004-12-07 | 243 | 0d |  |

| ID | WBS | Task | Type | Duration | Start | Finish | Predecessors | Total slack | Free slack |
| --- | --- | --- | --- | --- | --- | --- | --- | --- | --- |
| 245 | 1.3.6 | **公钥基础结构** |  | 19d | 2004-09-08 | 2004-10-05 |  | 45d |  |
| 246 | 1.3.6.1 | 确定证书要求 |  | 2d | 2004-09-08 | 2004-09-10 | 172 | 45d | 0d |
| 247 | 1.3.6.2 | 定义颁发证书的过程 |  | 1d | 2004-09-10 | 2004-09-13 | 246 | 45d | 0d |
| 248 | 1.3.6.3 | 定义证书授权机构信任层次结构 |  | 2d | 2004-09-13 | 2004-09-15 | 247 | 45d | 0d |
| 249 | 1.3.6.4 | 定义证书授权机构(CA)的安全要求 |  | 2d | 2004-09-15 | 2004-09-17 | 248 | 45d | 0d |
| 250 | 1.3.6.5 | 定义证书的使用寿命 |  | 1d | 2004-09-17 | 2004-09-20 | 249 | 45d | 0d |
| 251 | 1.3.6.6 | 定义证书登记和重新申请的过程 |  | 2d | 2004-09-20 | 2004-09-22 | 250 | 45d | 0d |
| 252 | 1.3.6.7 | 定义证书吊销策略 |  | 1d | 2004-09-22 | 2004-09-23 | 251 | 45d | 0d |
| 253 | 1.3.6.8 | 定义维护策略 |  | 2d | 2004-09-23 | 2004-09-27 | 252 | 45d | 0d |
| 254 | 1.3.6.9 | 定义灾难故障恢复策略 |  | 3d | 2004-09-27 | 2004-09-30 | 253 | 45d | 0d |
| 255 | 1.3.6.10 | 创建设计文档 |  | 2d | 2004-09-30 | 2004-10-04 | 254 | 45d | 0d |
| 256 | 1.3.6.11 | 创建首展计划和时间安排 |  | 1d | 2004-10-04 | 2004-10-05 | 255 | 45d | 0d |
| 257 | 1.3.6.12 | 公钥基础结构创建完毕 | milestone | 0d | 2004-10-05 | 2004-10-05 | 256 | 45d |  |
| 258 | 1.3.7 | **成员服务器迁移(非域控制器)** |  | 7.5d | 2004-09-08 | 2004-09-20 |  | 56.5d |  |
| 259 | 1.3.7.1 | 决定容量计划 |  | 2d | 2004-09-08 | 2004-09-10 | 172 | 56.5d | 0d |
| 260 | 1.3.7.2 | 计划用于网络中断的情况 |  | 1d | 2004-09-10 | 2004-09-13 | 259 | 56.5d | 0d |
| 261 | 1.3.7.3 | 读取预安装或预升级的清单 |  | 4h | 2004-09-13 | 2004-09-14 | 260 | 56.5d | 0d |
| 262 | 1.3.7.4 | 读取硬件清单和硬件兼容性列表(HCL) |  | 1d | 2004-09-14 | 2004-09-15 | 261 | 56.5d | 0d |
| 263 | 1.3.7.5 | 检查第三方软件兼容性 |  | 2d | 2004-09-15 | 2004-09-17 | 262 | 56.5d | 0d |
| 264 | 1.3.7.6 | 记录详细的成员服务器迁移策略/标准 |  | 1d | 2004-09-17 | 2004-09-20 | 263 | 56.5d | 0d |
| 265 | 1.3.7.7 | 成员服务器迁移(非域控制器)完毕 | milestone | 0d | 2004-09-20 | 2004-09-20 | 264 | 56.5d |  |
| 266 | 1.3.8 | **终端服务** |  | 15d | 2004-09-08 | 2004-09-29 |  | 49d |  |
| 267 | 1.3.8.1 | 选择远程管理或服务器应用程序模式 |  | 2d | 2004-09-08 | 2004-09-10 | 172 | 49d | 0d |
| 268 | 1.3.8.2 | 确定许可证申请 |  | 1d | 2004-09-10 | 2004-09-13 | 267 | 49d | 0d |
| 269 | 1.3.8.3 | 确定终端服务如何利于商务环境 |  | 2d | 2004-09-13 | 2004-09-15 | 268 | 49d | 0d |
| 270 | 1.3.8.4 | 记录现有数据处理环境 |  | 1d | 2004-09-15 | 2004-09-16 | 269 | 49d | 0d |
| 271 | 1.3.8.5 | 制定实现终端服务(包括联网、安全以及域结构)的计划 |  | 3d | 2004-09-16 | 2004-09-21 | 270 | 49d | 0d |
| 272 | 1.3.8.6 | 建立服务器部署(包括 CPU、存储等)的原则和标准 |  | 1d | 2004-09-21 | 2004-09-22 | 271 | 49d | 0d |
| 273 | 1.3.8.7 | 记录详细的终端服务策略/标准 |  | 5d | 2004-09-22 | 2004-09-29 | 272 | 49d | 0d |
| 274 | 1.3.8.8 | 终端服务完成 | milestone | 0d | 2004-09-29 | 2004-09-29 | 273 | 49d |  |

| ID | WBS | Task | Type | Duration | Start | Finish | Predecessors | Total slack | Free slack |
| --- | --- | --- | --- | --- | --- | --- | --- | --- | --- |
| 275 | 1.3.9 | **高可用性应用程序/服务(群集)** |  | 28d | 2004-07-06 | 2004-08-13 |  | 55.5d |  |
| 276 | 1.3.9.1 | 确定负有重要职责的应用程序和服务的特定的高可用性需求 |  | 2d | 2004-07-06 | 2004-07-08 | 209 | 55.5d | 0d |
| 277 | 1.3.9.2 | 确定群集需求 |  | 2d | 2004-07-08 | 2004-07-12 | 276 | 55.5d | 0d |
| 278 | 1.3.9.3 | 确定网络风险 |  | 1d | 2004-07-12 | 2004-07-13 | 277 | 55.5d | 0d |
| 279 | 1.3.9.4 | 标明网络风险的位置 |  | 1d | 2004-07-13 | 2004-07-14 | 278 | 55.5d | 0d |
| 280 | 1.3.9.5 | 决定哪些应用程序要与网络负载平衡一起使用 |  | 2d | 2004-07-14 | 2004-07-16 | 279 | 55.5d | 0d |
| 281 | 1.3.9.6 | 执行网络负载平衡的容量计划 |  | 2d | 2004-07-16 | 2004-07-20 | 280 | 55.5d | 0d |
| 282 | 1.3.9.7 | 优化网络负载平衡群集 |  | 2d | 2004-07-20 | 2004-07-22 | 281 | 55.5d | 0d |
| 283 | 1.3.9.8 | 确定组织中的组件服务或 Microsoft Transaction Server (MTS)应用程序 |  | 1d | 2004-07-22 | 2004-07-23 | 282 | 55.5d | 0d |
| 284 | 1.3.9.9 | 选择组件负载平衡解决方案 |  | 1d | 2004-07-23 | 2004-07-26 | 283 | 55.5d | 0d |
| 285 | 1.3.9.10 | 执行组件负载平衡的容量计划 |  | 1d | 2004-07-26 | 2004-07-27 | 284 | 55.5d | 0d |
| 286 | 1.3.9.11 | 测试并调整应用程序的组件负载平衡性能 |  | 2d | 2004-07-27 | 2004-07-29 | 285 | 55.5d | 0d |
| 287 | 1.3.9.12 | 选择要运行在服务器群集中的应用程序 |  | 1d | 2004-07-29 | 2004-07-30 | 286 | 55.5d | 0d |
| 288 | 1.3.9.13 | 确定网络风险 |  | 1d | 2004-07-30 | 2004-08-02 | 287 | 55.5d | 0d |
| 289 | 1.3.9.14 | 决定组的故障转移策略 |  | 1d | 2004-08-02 | 2004-08-03 | 288 | 55.5d | 0d |
| 290 | 1.3.9.15 | 选择域模型 |  | 1d | 2004-08-03 | 2004-08-04 | 289 | 55.5d | 0d |
| 291 | 1.3.9.16 | 选择群集模型 |  | 1d | 2004-08-04 | 2004-08-05 | 290 | 55.5d | 0d |
| 292 | 1.3.9.17 | 执行群集服务的容量计划 |  | 2d | 2004-08-05 | 2004-08-09 | 291 | 55.5d | 0d |
| 293 | 1.3.9.18 | 记录群集策略/标准 |  | 4d | 2004-08-09 | 2004-08-13 | 292 | 55.5d | 0d |
| 294 | 1.3.9.19 | 高可用性应用程序/服务(群集)完成 | milestone | 0d | 2004-08-13 | 2004-08-13 | 293 | 55.5d | 0d |
| 295 | 1.3.10 | **存储管理策略** |  | 9d | 2004-08-13 | 2004-08-26 |  | 55.5d |  |
| 296 | 1.3.10.1 | 评估 Windows XP 磁盘管理策略 |  | 1d | 2004-08-13 | 2004-08-16 | 294 | 209.5d |  |
| 297 | 1.3.10.2 | 确定基本存储 |  | 4h | 2004-08-13 | 2004-08-13 | 294 | 210d |  |
| 298 | 1.3.10.3 | 确定动态存储 |  | 4h | 2004-08-13 | 2004-08-13 | 294 | 55.5d | 0d |
| 299 | 1.3.10.4 | 评估卷管理 |  | 1d | 2004-08-13 | 2004-08-16 | 298 | 55.5d | 0d |
| 300 | 1.3.10.5 | 评估装入点 |  | 2d | 2004-08-16 | 2004-08-18 | 299 | 55.5d | 0d |
| 301 | 1.3.10.6 | 评估磁盘碎片整理策略 |  | 4h | 2004-08-18 | 2004-08-19 | 300 | 55.5d | 0d |
| 302 | 1.3.10.7 | 评估可移动存储策略 |  | 1d | 2004-08-19 | 2004-08-20 | 301 | 55.5d | 0d |
| 303 | 1.3.10.8 | 评估远程存储策略 |  | 1d | 2004-08-20 | 2004-08-23 | 302 | 55.5d | 0d |
| 304 | 1.3.10.9 | 记录存储管理策略/标准 |  | 3d | 2004-08-23 | 2004-08-26 | 303 | 55.5d | 0d |
| 305 | 1.3.10.10 | 存储管理策略完成 | milestone | 0d | 2004-08-26 | 2004-08-26 | 304 | 55.5d | 0d |

| ID | WBS | Task | Type | Duration | Start | Finish | Predecessors | Total slack | Free slack |
| --- | --- | --- | --- | --- | --- | --- | --- | --- | --- |
| 306 | 1.3.11 | **补救风险评估** |  | 7d | 2004-08-26 | 2004-09-06 |  | 55.5d |  |
| 307 | 1.3.11.1 | 审阅风险评估文档 |  | 1d | 2004-08-26 | 2004-08-27 | 305 | 55.5d | 0d |
| 308 | 1.3.11.2 | 确定解决方案 |  | 3d | 2004-08-27 | 2004-09-01 | 307 | 55.5d | 0d |
| 309 | 1.3.11.3 | 传达到项目赞助者、高级管理以及项目成员 |  | 1d | 2004-09-01 | 2004-09-02 | 308 | 55.5d | 0d |
| 310 | 1.3.11.4 | 将风险作为日常项目管理的一部分进行评估 |  | 2d | 2004-09-02 | 2004-09-06 | 309 | 55.5d | 0d |
| 311 | 1.3.11.5 | 补救风险评估完成 | milestone | 0d | 2004-09-06 | 2004-09-06 | 310 | 55.5d | 0d |
| 312 | 1.3.12 | **制定通讯工作** |  | 11d | 2004-09-06 | 2004-09-21 |  | 55.5d |  |
| 313 | 1.3.12.1 | 审阅通讯策略/标准 |  | 3d | 2004-09-06 | 2004-09-09 | 311 | 55.5d | 0d |
| 314 | 1.3.12.2 | 制定通讯材料 |  | 5d | 2004-09-09 | 2004-09-16 | 313 | 55.5d | 0d |
| 315 | 1.3.12.3 | 审阅通讯材料 |  | 2d | 2004-09-16 | 2004-09-20 | 314 | 55.5d | 0d |
| 316 | 1.3.12.4 | 批准通讯策略和材料 |  | 1d | 2004-09-20 | 2004-09-21 | 315 | 55.5d | 0d |
| 317 | 1.3.12.5 | 通讯完毕 | milestone | 0d | 2004-09-21 | 2004-09-21 | 316 | 55.5d |  |
| 318 | 1.3.13 | **制定教育/培训** |  | 66.5d | 2004-09-06 | 2004-12-07 |  | 0d |  |
| 319 | 1.3.13.1 | 审阅培训策略/标准 |  | 1d | 2004-09-06 | 2004-09-07 | 311 | 57.5d | 0d |
| 320 | 1.3.13.2 | 制定/获得培训材料 |  | 5d | 2004-09-07 | 2004-09-14 | 319 | 57.5d | 0d |
| 321 | 1.3.13.3 | 审阅教育材料 |  | 2d | 2004-09-14 | 2004-09-16 | 320 | 57.5d | 0d |
| 322 | 1.3.13.4 | 批准教育策略和材料 |  | 1d | 2004-09-16 | 2004-09-17 | 321 | 57.5d | 0d |
| 323 | 1.3.13.5 | 制定培训工作完成 | milestone | 0d | 2004-09-17 | 2004-09-17 | 322 | 57.5d |  |
| 324 | 1.3.13.6 | 开发工作完毕 | milestone | 0d | 2004-12-07 | 2004-12-07 | 323, 317, 294, 274, 265, 257, 244, 197 | 0d |  |
| 325 | 1.3.14 | **概念的验证(POC)** |  | 116d | 2004-12-07 | 2005-05-18 |  | 0d |  |
| 326 | 1.3.14.1 | **POC 准备** |  | 8.5d | 2004-12-07 | 2004-12-20 |  | 0d |  |
| 327 | 1.3.14.1.1 | 准备基于制定/设计解决方案的测试计划和清单 |  | 3d | 2004-12-07 | 2004-12-10 | 324 | 0d |  |
| 328 | 1.3.14.1.2 | 记录功能和组件以便测试 |  | 2d | 2004-12-10 | 2004-12-14 | 327 | 0d |  |
| 329 | 1.3.14.1.3 | 保护休息人员的安全 |  | 4h | 2004-12-14 | 2004-12-15 | 328 | 0d |  |

Notes:
- 325: 在此阶段，将创建概念的验证(POC)环境以评估在计划中早期讨论的不同组件。为了实现正确的评估目的，POC 环境应该是完整的 Windows XP 模型的微缩版本。

| ID | WBS | Task | Type | Duration | Start | Finish | Predecessors | Total slack |
| --- | --- | --- | --- | --- | --- | --- | --- | --- |
| 330 | 1.3.14.1.4 | **确保测试实验室环境模拟建议的环境** |  | 3d | 2004-12-15 | 2004-12-20 | 71, 329 | 0d |
| 331 | 1.3.14.1.4.1 | 配置服务器硬件和驱动程序 |  | 2d | 2004-12-15 | 2004-12-17 | 329 | 1d |
| 332 | 1.3.14.1.4.2 | 配置服务和配置 |  | 1d | 2004-12-15 | 2004-12-16 | 329 | 2d |
| 333 | 1.3.14.1.4.3 | 配置用户帐户 |  | 1d | 2004-12-15 | 2004-12-16 | 329 | 2d |
| 334 | 1.3.14.1.4.4 | 配置域结构(模拟的域层次结构) |  | 2d | 2004-12-15 | 2004-12-17 | 329 | 1d |
| 335 | 1.3.14.1.4.5 | 配置服务器功能/策略 |  | 2d | 2004-12-15 | 2004-12-17 | 329 | 1d |
| 336 | 1.3.14.1.4.6 | 配置混合的环境 |  | 1d | 2004-12-15 | 2004-12-16 | 329 | 2d |
| 337 | 1.3.14.1.4.7 | 配置客户机配置 |  | 2d | 2004-12-15 | 2004-12-17 | 329 | 1d |
| 338 | 1.3.14.1.4.8 | 配置网络拓扑和协议 |  | 2d | 2004-12-15 | 2004-12-17 | 329 | 1d |
| 339 | 1.3.14.1.4.9 | 配置WAN 连接性 |  | 2d | 2004-12-15 | 2004-12-17 | 329 | 1d |
| 340 | 1.3.14.1.4.10 | 配置远程连接性 |  | 1d | 2004-12-15 | 2004-12-16 | 329 | 2d |
| 341 | 1.3.14.1.4.11 | 配置外围设备 |  | 3d | 2004-12-15 | 2004-12-20 | 329 | 0d |
| 342 | 1.3.14.1.4.12 | 配置与其他操作系统的互操作性(UNIX、大型机等) |  | 3d | 2004-12-15 | 2004-12-20 | 329 | 0d |
| 343 | 1.3.14.1.4.13 | 配置管理工具 |  | 1d | 2004-12-15 | 2004-12-16 | 329 | 2d |
| 344 | 1.3.14.1.4.14 | 配置容错技术 |  | 2d | 2004-12-15 | 2004-12-17 | 329 | 1d |
| 345 | 1.3.14.1.4.15 | 配置终端服务 |  | 2d | 2004-12-15 | 2004-12-17 | 329 | 1d |
| 346 | 1.3.14.1.4.16 | 确保测试实验室环境模拟建议的环境完成 | milestone | 0d | 2004-12-20 | 2004-12-20 | 331, 332, 333, 334, 335, 336, 337, 338, 339, 340, 341, 342, 343, 344, 345 | 0d |
| 347 | 1.3.14.1.5 | POC 准备完毕 | milestone | 0d | 2004-12-20 | 2004-12-20 | 346 | 0d |
| 348 | 1.3.14.2 | **部署到 POC 实验室机器的开发解决方案** |  | 20d | 2004-12-20 | 2005-01-17 |  | 0d |
| 349 | 1.3.14.2.1 | 执行测试来测试计划说明 |  | 2d | 2004-12-20 | 2004-12-22 | 347 | 0d |
| 350 | 1.3.14.2.2 | 分析结果 |  | 4d | 2004-12-22 | 2004-12-28 | 349 | 0d |
| 351 | 1.3.14.2.3 | **缓和结果** |  | 14d | 2004-12-28 | 2005-01-17 |  | 0d |
| 352 | 1.3.14.2.3.1 | **测试事例问题** |  | 14d | 2004-12-28 | 2005-01-17 |  | 0d |
| 353 | 1.3.14.2.3.1.1 | 在 POC 跟踪系统中记录 |  | 3d | 2004-12-28 | 2004-12-31 | 350 | 0d |
| 354 | 1.3.14.2.3.1.2 | 修订测试事例 |  | 3d | 2004-12-31 | 2005-01-05 | 353 | 0d |
| 355 | 1.3.14.2.3.1.3 | 重新运行测试 |  | 3d | 2005-01-05 | 2005-01-10 | 354 | 0d |
| 356 | 1.3.14.2.3.1.4 | 记录结果/更改 |  | 5d | 2005-01-10 | 2005-01-17 | 355 | 0d |
| 357 | 1.3.14.2.3.1.5 | 测试事例问题完成 | milestone | 0d | 2005-01-17 | 2005-01-17 | 356 | 0d |

| ID | WBS | Task | Type | Duration | Start | Finish | Predecessors | Total slack | Free slack |
| --- | --- | --- | --- | --- | --- | --- | --- | --- | --- |
| 358 | 1.3.14.2.3.2 | **实验室设置问题** |  | 6d | 2004-12-28 | 2005-01-05 |  | 8d |  |
| 359 | 1.3.14.2.3.2.1 | 在 POC 跟踪系统中记录 |  | 1d | 2004-12-28 | 2004-12-29 | 350 | 8d | 0d |
| 360 | 1.3.14.2.3.2.2 | 跟随实验室更改控制过程 |  | 1d | 2004-12-29 | 2004-12-30 | 359 | 8d | 0d |
| 361 | 1.3.14.2.3.2.3 | 重新配置实验室 |  | 1d | 2004-12-30 | 2004-12-31 | 360 | 8d | 0d |
| 362 | 1.3.14.2.3.2.4 | 重新运行测试 |  | 1d | 2004-12-31 | 2005-01-03 | 361 | 8d | 0d |
| 363 | 1.3.14.2.3.2.5 | 记录结果/更改 |  | 2d | 2005-01-03 | 2005-01-05 | 362 | 8d | 0d |
| 364 | 1.3.14.2.3.2.6 | 实验室设置问题完成 | milestone | 0d | 2005-01-05 | 2005-01-05 | 363 | 8d |  |
| 365 | 1.3.14.2.3.3 | **开发/设计问题** |  | 4d | 2004-12-28 | 2005-01-03 |  | 10d |  |
| 366 | 1.3.14.2.3.3.1 | 在 POC 跟踪系统中记录 |  | 1d | 2004-12-28 | 2004-12-29 | 350 | 10d | 0d |
| 367 | 1.3.14.2.3.3.2 | 增加开发/设计问题 |  | 1d | 2004-12-29 | 2004-12-30 | 366 | 10d | 0d |
| 368 | 1.3.14.2.3.3.3 | 区分优先次序/风险分析 |  | 1d | 2004-12-30 | 2004-12-31 | 367 | 10d | 0d |
| 369 | 1.3.14.2.3.3.4 | 跟踪解决方案 |  | 1d | 2004-12-31 | 2005-01-03 | 368 | 10d | 0d |
| 370 | 1.3.14.2.3.3.5 | 开发/设计问题完毕 | milestone | 0d | 2005-01-03 | 2005-01-03 | 369 | 10d |  |
| 371 | 1.3.14.2.3.4 | 对 POC 实验室机器的开发解决方案部署完成 | milestone | 0d | 2005-01-17 | 2005-01-17 | 370, 364, 357 | 0d |  |
| 372 | 1.3.14.3 | **执行整套的风险评估** |  | 7d | 2005-01-17 | 2005-01-26 |  | 0d |  |
| 373 | 1.3.14.3.1 | 将经验教训记录存档 |  | 3d | 2005-01-17 | 2005-01-20 | 371 | 0d |  |
| 374 | 1.3.14.3.2 | 记录修改 |  | 2d | 2005-01-20 | 2005-01-24 | 373 | 0d |  |
| 375 | 1.3.14.3.3 | 准备好以继续进行试生产 |  | 2d | 2005-01-24 | 2005-01-26 | 374 | 0d |  |
| 376 | 1.3.14.3.4 | 执行整套的风险评估 | milestone | 0d | 2005-01-26 | 2005-01-26 | 375 | 0d |  |
| 377 | 1.3.14.4 | POC 完成 | milestone | 0d | 2005-01-26 | 2005-01-26 | 376 | 0d |  |
| 378 | 1.3.14.5 | **试生产** |  | 55d | 2005-01-26 | 2005-04-13 |  | 0d |  |
| 379 | 1.3.14.5.1 | **规划** |  | 24d | 2005-01-26 | 2005-03-01 |  | 0d |  |
| 380 | 1.3.14.5.1.1 | 确定试生产范围和目标 |  | 4d | 2005-01-26 | 2005-02-01 | 377 | 0d |  |
| 381 | 1.3.14.5.1.2 | 确定试生产组/个体/资源/设备 |  | 2d | 2005-02-01 | 2005-02-03 | 380 | 11d | 0d |
| 382 | 1.3.14.5.1.3 | 记录资源和任务 |  | 2d | 2005-02-03 | 2005-02-07 | 381, 380 | 11d | 0d |
| 383 | 1.3.14.5.1.4 | 制定用户团体的通讯材料(例如，FAQ、Web 站点、电子邮件) |  | 5d | 2005-02-07 | 2005-02-14 | 380, 382 | 11d |  |
| 384 | 1.3.14.5.1.5 | 制定用户支持计划 |  | 3d | 2005-02-01 | 2005-02-04 | 380 | 17d |  |
| 385 | 1.3.14.5.1.6 | 制定培训计划 |  | 4d | 2005-02-01 | 2005-02-07 | 380 | 16d |  |
| 386 | 1.3.14.5.1.7 | 确保 POC 实验室稳定 |  | 2d | 2005-02-01 | 2005-02-03 | 380 | 0d |  |

Notes:
- 378: 完成功能设计和开发并且彻底地测试功能配置后，您就可以处理试生产项目。 / 在保持计划时间财政预算的同时，跟踪部署问题和有效地解决它们对于到达部署目标是至关重要的。 / 部署小组应该设置许多临时传输的里程碑，每个都涉及到解决方案开发、测试、验证预先指定的性能标准，以及重新设计。 / 试生产项目开始运行并稳定后，赞助商和部署工作组就可以评估新的 Windows XP 基础结构的功能并验证产品首展和支持计划是否都是正常的。主要的里程碑和部署文档可能包括以下内容: / - 技术验证完成 / - 完善而稳定的功能说明 / - POC 完成 / - 试制的测试完成 / - 试生产完成 / - 更新的风险管理计划 / 其他可能要制定的部署文档包括如下内容: / - 培训计划 / - 支持或技术支持计划 / - 操作转换计划

| ID | WBS | Task | Type | Duration | Start | Finish | Predecessors | Total slack |
| --- | --- | --- | --- | --- | --- | --- | --- | --- |
| 387 | 1.3.14.5.1.8 | **制定首展过程** |  | 14d | 2005-02-03 | 2005-02-23 |  | 0d |
| 388 | 1.3.14.5.1.8.1 | 确定安装程序需要的工具和供给 |  | 2d | 2005-02-03 | 2005-02-07 | 386 | 16d |
| 389 | 1.3.14.5.1.8.2 | 确定脚本列表及其位置 |  | 3d | 2005-02-03 | 2005-02-08 | 386 | 15d |
| 390 | 1.3.14.5.1.8.3 | 确定备份应先于或在配置过程中进行 |  | 1d | 2005-02-03 | 2005-02-04 | 386 | 0d |
| 391 | 1.3.14.5.1.8.4 | 记录迁移到新域结构的步骤 |  | 3d | 2005-02-04 | 2005-02-09 | 390 | 0d |
| 392 | 1.3.14.5.1.8.5 | 记录执行手动和自动进行计算机升级的步骤 |  | 2d | 2005-02-09 | 2005-02-11 | 391 | 0d |
| 393 | 1.3.14.5.1.8.6 | 记录安装程序接受测试 |  | 2d | 2005-02-11 | 2005-02-15 | 392 | 0d |
| 394 | 1.3.14.5.1.8.7 | 记录安装程序和管理员要执行的操作过程(重设权限、更改密码等) |  | 3d | 2005-02-15 | 2005-02-18 | 393 | 0d |
| 395 | 1.3.14.5.1.8.8 | 记录如果试生产失败，返回的步骤 |  | 3d | 2005-02-18 | 2005-02-23 | 394 | 0d |
| 396 | 1.3.14.5.1.8.9 | 制定首展过程完成 | milestone | 0d | 2005-02-23 | 2005-02-23 | 395 | 0d |
| 397 | 1.3.14.5.1.9 | 确定已知的风险以及这些风险的突发计划 |  | 2d | 2005-02-23 | 2005-02-25 | 396 | 0d |
| 398 | 1.3.14.5.1.10 | 制定回滚计划 |  | 2d | 2005-02-25 | 2005-03-01 | 397 | 0d |
| 399 | 1.3.14.5.1.11 | 试生产规划完毕 | milestone | 0d | 2005-03-01 | 2005-03-01 | 398, 389, 388, 383, 384, 385, 386 | 0d |
| 400 | 1.3.14.5.2 | **部署** |  | 12d | 2005-03-01 | 2005-03-17 |  | 0d |
| 401 | 1.3.14.5.2.1 | 与试生产用户通讯 |  | 4h | 2005-03-01 | 2005-03-01 | 399 | 4.5d |
| 402 | 1.3.14.5.2.2 | 处理用户培训 |  | 5d | 2005-03-01 | 2005-03-08 | 399 | 0d |
| 403 | 1.3.14.5.2.3 | 确保支持组织准备就绪 |  | 4d | 2005-03-01 | 2005-03-07 | 399 | 1d |
| 404 | 1.3.14.5.2.4 | 准备试生产场地 |  | 2d | 2005-03-08 | 2005-03-10 | 403, 402, 401 | 0d |
| 405 | 1.3.14.5.2.5 | 部署首展过程 |  | 5d | 2005-03-10 | 2005-03-17 | 404 | 0d |
| 406 | 1.3.14.5.2.6 | 试生产部署工作完成 | milestone | 0d | 2005-03-17 | 2005-03-17 | 405 | 0d |
| 407 | 1.3.14.5.3 | **评估试生产** |  | 8d | 2005-03-17 | 2005-03-29 |  | 0d |
| 408 | 1.3.14.5.3.1 | 处理台式计算机测试方案 |  | 5d | 2005-03-17 | 2005-03-24 | 406 | 0d |
| 409 | 1.3.14.5.3.2 | 处理服务器测试方案 |  | 5d | 2005-03-17 | 2005-03-24 | 406 | 0d |
| 410 | 1.3.14.5.3.3 | 处理第三方应用程序测试方案 |  | 5d | 2005-03-17 | 2005-03-24 | 406 | 0d |
| 411 | 1.3.14.5.3.4 | 处理自定义应用程序测试方案 |  | 5d | 2005-03-17 | 2005-03-24 | 406 | 0d |
| 412 | 1.3.14.5.3.5 | 处理共存测试方案 |  | 5d | 2005-03-17 | 2005-03-24 | 406 | 0d |
| 413 | 1.3.14.5.3.6 | 确定范围更改 |  | 3d | 2005-03-24 | 2005-03-29 | 412, 411, 410, 409, 408 | 0d |
| 414 | 1.3.14.5.3.7 | 确定成本因素 |  | 2d | 2005-03-24 | 2005-03-28 | 412, 411, 410, 409, 408 | 1d |
| 415 | 1.3.14.5.3.8 | 确定互操作性问题 |  | 3d | 2005-03-24 | 2005-03-29 | 412, 411, 410, 409, 408 | 0d |
| 416 | 1.3.14.5.3.9 | 确定未预料到的停工期 |  | 2d | 2005-03-24 | 2005-03-28 | 412, 411, 410, 409, 408 | 1d |
| 417 | 1.3.14.5.3.10 | 试生产测试工作完成 | milestone | 0d | 2005-03-29 | 2005-03-29 | 416, 415, 413, 414 | 0d |

| ID | WBS | Task | Type | Duration | Start | Finish | Predecessors | Total slack | Free slack |
| --- | --- | --- | --- | --- | --- | --- | --- | --- | --- |
| 418 | 1.3.14.5.4 | **试生产后评估** |  | 11d | 2005-03-29 | 2005-04-13 |  | 0d |  |
| 419 | 1.3.14.5.4.1 | 获得用户反馈 |  | 5d | 2005-03-29 | 2005-04-05 | 417 | 0d |  |
| 420 | 1.3.14.5.4.2 | 评估经验教训 |  | 2d | 2005-04-05 | 2005-04-07 | 419 | 0d |  |
| 421 | 1.3.14.5.4.3 | 根据需要修改项目 |  | 2d | 2005-04-07 | 2005-04-11 | 420 | 0d |  |
| 422 | 1.3.14.5.4.4 | 记录下面步骤的建议 |  | 2d | 2005-04-11 | 2005-04-13 | 421 | 0d |  |
| 423 | 1.3.14.5.4.5 | 试生产后评估完毕 | milestone | 0d | 2005-04-13 | 2005-04-13 | 422 | 0d |  |
| 424 | 1.3.14.5.5 | 试生产工作完成 | milestone | 0d | 2005-04-13 | 2005-04-13 | 423 | 0d |  |
| 425 | 1.3.14.6 | **部署** |  | 25.5d | 2005-04-13 | 2005-05-18 |  | 0d |  |
| 426 | 1.3.14.6.1 | **通讯** |  | 2.5d | 2005-04-13 | 2005-04-15 |  | 0d |  |
| 427 | 1.3.14.6.1.1 | 审阅通讯策略文档 |  | 2d | 2005-04-13 | 2005-04-15 | 424 | 0d |  |
| 428 | 1.3.14.6.1.2 | 启动通讯 |  | 4h | 2005-04-15 | 2005-04-15 | 427 | 0d |  |
| 429 | 1.3.14.6.1.3 | 通讯完成 | milestone | 0d | 2005-04-15 | 2005-04-15 | 428 | 0d |  |
| 430 | 1.3.14.6.2 | **教育/培训** |  | 11d | 2005-04-15 | 2005-05-02 |  | 2d |  |
| 431 | 1.3.14.6.2.1 | 审阅教育/培训计划文档 |  | 1d | 2005-04-15 | 2005-04-18 | 429 | 2d | 0d |
| 432 | 1.3.14.6.2.2 | 处理管理培训 |  | 5d | 2005-04-18 | 2005-04-25 | 431 | 2d | 0d |
| 433 | 1.3.14.6.2.3 | 处理用户培训 |  | 5d | 2005-04-25 | 2005-05-02 | 432 | 2d | 0d |
| 434 | 1.3.14.6.2.4 | 教育/培训完成 | milestone | 0d | 2005-05-02 | 2005-05-02 | 433 | 2d |  |
| 435 | 1.3.14.6.3 | **域迁移** |  | 13d | 2005-04-15 | 2005-05-04 |  | 0d |  |
| 436 | 1.3.14.6.3.1 | 审阅域迁移策略/标准文档 |  | 2d | 2005-04-15 | 2005-04-19 | 429 | 0d |  |
| 437 | 1.3.14.6.3.2 | 重新构造现有的 Windows 2000 域 |  | 5d | 2005-04-19 | 2005-04-26 | 436 | 0d |  |
| 438 | 1.3.14.6.3.3 | 将 PDC 升级到 Windows XP |  | 4h | 2005-04-26 | 2005-04-27 | 437 | 0d |  |
| 439 | 1.3.14.6.3.4 | 将 BDC 升级到 Windows XP |  | 1d | 2005-04-27 | 2005-04-28 | 438 | 0d |  |
| 440 | 1.3.14.6.3.5 | 升级资源域 |  | 1d | 2005-04-28 | 2005-04-29 | 439 | 0d |  |
| 441 | 1.3.14.6.3.6 | **成员服务器迁移** |  | 3d | 2005-04-29 | 2005-05-04 |  | 0d |  |
| 442 | 1.3.14.6.3.6.1 | 审阅成员服务器迁移策略/标准文档 |  | 1d | 2005-04-29 | 2005-05-02 | 440 | 0d |  |
| 443 | 1.3.14.6.3.6.2 | 备份服务器上要升级的文件 |  | 4h | 2005-05-02 | 2005-05-02 | 442 | 0d |  |
| 444 | 1.3.14.6.3.6.3 | 升级成员服务器 |  | 4h | 2005-05-02 | 2005-05-03 | 443 | 0d |  |
| 445 | 1.3.14.6.3.6.4 | 测试网络上的成员服务器 |  | 1d | 2005-05-03 | 2005-05-04 | 444 | 0d |  |
| 446 | 1.3.14.6.3.6.5 | 成员服务器迁移完成 | milestone | 0d | 2005-05-04 | 2005-05-04 | 445 | 0d |  |
| 447 | 1.3.14.6.3.7 | 建立信任 |  | 4h | 2005-05-04 | 2005-05-04 | 446 | 0d |  |
| 448 | 1.3.14.6.3.8 | 域迁移完成 | milestone | 0d | 2005-05-04 | 2005-05-04 | 447, 434 | 0d |  |

Notes:
- 418: 在试生产工作结束时，评估其是否成功并作出后续步骤的建议给管理部门。然后管理 部门决定是否超越试生产继续进行项目。为了帮助您评估和作出建议，可以分析大量源中的信息。
- 425: 在此处，您已在实验室中测试了所有设计，并制定试生产计划来改进计划并进一步测试您的设计。现在您可以逐渐地为您的整个企业部署 Windows XP。 / 在产品首展阶段，当部署、测试、验证和支持的反复循环成为主要焦点时，测试和支持活动仍然是重要的。 / 在部署工作完成这个里程碑中，新的 Windows XP Server 和 Windows XP Professional 基础结构被正式地使用到操作和支持组中。应该进行项目回顾。

| ID | WBS | Task | Type | Duration | Start | Finish | Predecessors | Total slack | Free slack |
| --- | --- | --- | --- | --- | --- | --- | --- | --- | --- |
| 449 | 1.3.14.6.4 | **Active Directory** |  | 3.5d | 2005-05-04 | 2005-05-10 |  | 6.5d |  |
| 450 | 1.3.14.6.4.1 | **Active Directory 与 Exchange 2000 一起同步** |  | 3.5d | 2005-05-04 | 2005-05-10 |  | 6.5d |  |
| 451 | 1.3.14.6.4.1.1 | 审阅 ADC 连接计划策略/标准 |  | 1d | 2005-05-04 | 2005-05-05 | 448 | 6.5d | 0d |
| 452 | 1.3.14.6.4.1.2 | 设置连接许可协议 |  | 4h | 2005-05-05 | 2005-05-06 | 451 | 6.5d | 0d |
| 453 | 1.3.14.6.4.1.3 | 测试连接许可协议配置 |  | 1d | 2005-05-06 | 2005-05-09 | 452 | 6.5d | 0d |
| 454 | 1.3.14.6.4.1.4 | 决定目录同步的计划安排 |  | 4h | 2005-05-09 | 2005-05-09 | 453 | 6.5d | 0d |
| 455 | 1.3.14.6.4.1.5 | 从过程中的某个同步返回 |  | 4h | 2005-05-09 | 2005-05-10 | 454 | 6.5d | 0d |
| 456 | 1.3.14.6.4.1.6 | Active Directory 与 Exchange 2000 一起同步完毕 | milestone | 0d | 2005-05-10 | 2005-05-10 | 455 | 6.5d |  |
| 457 | 1.3.14.6.5 | **安全基础结构** |  | 4d | 2005-05-04 | 2005-05-10 |  | 6d |  |
| 458 | 1.3.14.6.5.1 | 审阅安全策略/标准文档 |  | 4h | 2005-05-04 | 2005-05-05 | 448 | 6d | 0d |
| 459 | 1.3.14.6.5.2 | 创建安全的边界 |  | 1d | 2005-05-05 | 2005-05-06 | 458 | 6d | 0d |
| 460 | 1.3.14.6.5.3 | 为每个人部署策略 |  | 4h | 2005-05-06 | 2005-05-06 | 459 | 6d | 0d |
| 461 | 1.3.14.6.5.4 | 为公司的全体职员部署策略 |  | 4h | 2005-05-06 | 2005-05-09 | 460 | 6d | 0d |
| 462 | 1.3.14.6.5.5 | 为公司应用程序的用户部署策略 |  | 4h | 2005-05-09 | 2005-05-09 | 461 | 6d | 0d |
| 463 | 1.3.14.6.5.6 | 为合作伙伴部署策略 |  | 1d | 2005-05-09 | 2005-05-10 | 462 | 6d | 0d |
| 464 | 1.3.14.6.5.7 | 安全完成 | milestone | 0d | 2005-05-10 | 2005-05-10 | 463 | 6d |  |
| 465 | 1.3.14.6.6 | **公钥基础结构** |  | 10d | 2005-05-04 | 2005-05-18 |  | 0d |  |
| 466 | 1.3.14.6.6.1 | 审阅安全策略/标准文档 |  | 1d | 2005-05-04 | 2005-05-05 | 448 | 0d |  |
| 467 | 1.3.14.6.6.2 | 为产品的用户提供培训和支持 |  | 5d | 2005-05-05 | 2005-05-12 | 466 | 0d |  |
| 468 | 1.3.14.6.6.3 | 安装 CA |  | 4h | 2005-05-12 | 2005-05-13 | 467 | 0d |  |
| 469 | 1.3.14.6.6.4 | 安装/配置支持系统或应用程序 |  | 4h | 2005-05-13 | 2005-05-13 | 468 | 0d |  |
| 470 | 1.3.14.6.6.5 | 配置要使用的证书 |  | 4h | 2005-05-13 | 2005-05-16 | 469 | 0d |  |
| 471 | 1.3.14.6.6.6 | 配置证书吊销列表发行 |  | 4h | 2005-05-16 | 2005-05-16 | 470 | 0d |  |
| 472 | 1.3.14.6.6.7 | 配置公钥组策略 |  | 4h | 2005-05-16 | 2005-05-17 | 471 | 0d |  |
| 473 | 1.3.14.6.6.8 | 配置证书重新申请和登记 |  | 4h | 2005-05-17 | 2005-05-17 | 472 | 0d |  |
| 474 | 1.3.14.6.6.9 | 将证书颁发给用户、计算机和服务 |  | 1d | 2005-05-17 | 2005-05-18 | 473 | 0d |  |
| 475 | 1.3.14.6.6.10 | 公钥基础结构创建完毕 | milestone | 0d | 2005-05-18 | 2005-05-18 | 474 | 0d |  |

| ID | WBS | Task | Type | Duration | Start | Finish | Predecessors | Total slack | Free slack |
| --- | --- | --- | --- | --- | --- | --- | --- | --- | --- |
| 476 | 1.3.14.6.7 | **高可用性应用程序/服务(群集)** |  | 6.5d | 2005-05-04 | 2005-05-13 |  | 3.5d |  |
| 477 | 1.3.14.6.7.1 | 审阅高可用性应用程序/服务(群集)文档 |  | 1d | 2005-05-04 | 2005-05-05 | 448 | 3.5d | 0d |
| 478 | 1.3.14.6.7.2 | 优化 Windows XP 群集服务 |  | 1d | 2005-05-05 | 2005-05-06 | 477 | 3.5d | 0d |
| 479 | 1.3.14.6.7.3 | 选择工具以帮助您自动进行 Windows XP 群集服务的配置 |  | 4h | 2005-05-06 | 2005-05-09 | 478 | 3.5d | 0d |
| 480 | 1.3.14.6.7.4 | 优化群集 |  | 1d | 2005-05-09 | 2005-05-10 | 479 | 3.5d | 0d |
| 481 | 1.3.14.6.7.5 | 计划用于容错磁盘 |  | 1d | 2005-05-10 | 2005-05-11 | 480 | 3.5d | 0d |
| 482 | 1.3.14.6.7.6 | 测试服务器容量 |  | 1d | 2005-05-11 | 2005-05-12 | 481 | 3.5d | 0d |
| 483 | 1.3.14.6.7.7 | 计划备份和故障恢复策略 |  | 1d | 2005-05-12 | 2005-05-13 | 482 | 3.5d | 0d |
| 484 | 1.3.14.6.7.8 | 高可用性应用程序/服务(群集)完成 | milestone | 0d | 2005-05-13 | 2005-05-13 | 483 | 3.5d |  |
| 485 | 1.3.14.6.8 | **存储管理策略** |  | 8.5d | 2005-05-04 | 2005-05-17 |  | 1.5d |  |
| 486 | 1.3.14.6.8.1 | 审阅存储管理策略/标准 |  | 1d | 2005-05-04 | 2005-05-05 | 448 | 1.5d | 0d |
| 487 | 1.3.14.6.8.2 | 审阅存储的商务要求 |  | 4h | 2005-05-05 | 2005-05-06 | 486 | 1.5d | 0d |
| 488 | 1.3.14.6.8.3 | 设计存储管理解决方案 |  | 2d | 2005-05-06 | 2005-05-10 | 487 | 1.5d | 0d |
| 489 | 1.3.14.6.8.4 | 设计存储实用程序(备份、还原、碎片整理) |  | 1d | 2005-05-10 | 2005-05-11 | 488 | 1.5d | 0d |
| 490 | 1.3.14.6.8.5 | 设计灾难故障恢复计划 |  | 2d | 2005-05-11 | 2005-05-13 | 489 | 1.5d | 0d |
| 491 | 1.3.14.6.8.6 | 记录存储管理策略/标准 |  | 1d | 2005-05-13 | 2005-05-16 | 490 | 1.5d | 0d |
| 492 | 1.3.14.6.8.7 | 存储管理策略完成 | milestone | 0d | 2005-05-16 | 2005-05-16 | 491 | 1.5d | 0d |
| 493 | 1.3.14.6.8.8 | 切换到本机模式 |  | 1d | 2005-05-16 | 2005-05-17 | 492 | 1.5d |  |
| 494 | 1.3.14.6.9 | 部署工作完成 | milestone | 0d | 2005-05-18 | 2005-05-18 | 493, 484, 475, 464, 456 | 0d |  |
| 495 | 1.4 | **执行后审查** |  | 12d | 2005-05-18 | 2005-06-03 |  | 0d |  |
| 496 | 1.4.1 | 获得用户反馈 |  | 5d | 2005-05-18 | 2005-05-25 | 494 | 0d |  |
| 497 | 1.4.2 | 评估经验教训 |  | 4d | 2005-05-25 | 2005-05-31 | 496 | 0d |  |
| 498 | 1.4.3 | 根据需要修改项目 |  | 2d | 2005-05-31 | 2005-06-02 | 497 | 0d |  |
| 499 | 1.4.4 | 建立正在进行的基础机构规划小组 |  | 1d | 2005-06-02 | 2005-06-03 | 498 | 0d |  |
| 500 | 1.4.5 | 执行后审查工作完毕 | milestone | 0d | 2005-06-03 | 2005-06-03 | 499 | 0d |  |
| 501 | 1.4.6 | Microsoft Windows 2000 到 Windows XP 部署模板完成 | milestone | 0d | 2005-06-03 | 2005-06-03 | 500 | 0d |  |

Notes:
- 495: 这是项目的最后阶段。在此阶段，您可以回顾项目、文档以及学到的经验教训，以便为将来部署项目或执行后指令奠定基础。
- 499: 应该建立由不同部署资源组成的 Windows XP 规划小组，以便推荐将来的应用程序开发、维护、服务版本和将来的版本。
