# Microsoft Windows Server 2003 部署

Schedule from MS Project, 2003-09-15 to 2004-07-23.

## Calendars

- 标准: Mon-Fri 08:00-12:00, 13:00-17:00; Sat-Sun off.

## Resources

| Resource |
| --- |
| 项目经理 |
| 基础结构管理员 |
| 部署管理员 |
| 台式计算机管理员 |
| Intranet/Internet 管理员 |
| 数据库服务器管理员 |
| 浏览器管理员 |
| 信息管理员 |
| 网络管理员 |
| 测试/质保负责人 |
| 用户教育/培训负责人 |
| 后勤管理负责人 |
| 风险承担者 |

## Schedule

| ID | WBS | Task | Type | Duration | Start | Finish | Predecessors | Total slack | Free slack | Resources | Work |
| --- | --- | --- | --- | --- | --- | --- | --- | --- | --- | --- | --- |
| 1 | 1 | **Microsoft Windows Server 2003 部署** |  | 224.5d | 2003-09-15 | 2004-07-23 |  | 0d |  |  | 9980h |
| 2 | 1.1 | **构想** |  | 24d | 2003-09-15 | 2003-10-16 |  | 0d |  |  | 200h |
| 3 | 1.1.1 | 评估公司商务目标 |  | 5d | 2003-09-15 | 2003-09-19 |  | 0d |  | 风险承担者 | 40h |
| 4 | 1.1.2 | 确定技术目标 |  | 5d | 2003-09-22 | 2003-09-26 | 3 | 0d |  | 风险承担者 | 40h |
| 5 | 1.1.3 | 阐明初步成本/利润分析 |  | 5d | 2003-09-29 | 2003-10-03 | 4 | 0d |  | 风险承担者 | 40h |
| 6 | 1.1.4 | 确定项目范围(例如，实验室、试生产、国际/地区部署、共存策略) |  | 5d | 2003-10-06 | 2003-10-10 | 5 | 0d |  | 风险承担者 | 40h |
| 7 | 1.1.5 | 确定主要里程碑 |  | 2d | 2003-10-13 | 2003-10-14 | 6 | 0d |  | 风险承担者 | 16h |
| 8 | 1.1.6 | 确保执行所需的赞助/投资 |  | 1d | 2003-10-15 | 2003-10-15 | 7 | 0d |  | 风险承担者 | 8h |
| 9 | 1.1.7 | 根据解决方案价值制定内部营销的高级管理人员分配方案 |  | 1d | 2003-10-16 | 2003-10-16 | 8 | 0d |  | 项目经理; 风险承担者 | 16h |
| 10 | 1.1.8 | 完成构想 | milestone | 0d | 2003-10-16 | 2003-10-16 | 9 | 0d |  |  |  |
| 11 | 1.2 | **规划** |  | 32.75d | 2003-10-17 | 2003-12-02 | 10 | 0d |  |  | 1782h |
| 12 | 1.2.1 | **召集项目工作组/定义角色** |  | 6d | 2003-10-17 | 2003-10-24 |  | 5.75d |  |  | 180h |
| 13 | 1.2.1.1 | 指派/定义项目经理 |  | 4h | 2003-10-17 | 2003-10-17 |  | 32.25d |  | 风险承担者 | 4h |
| 14 | 1.2.1.2 | 指派/定义基础结构管理员 |  | 4h | 2003-10-17 | 2003-10-17 |  | 32.25d |  | 项目经理; 风险承担者 | 8h |
| 15 | 1.2.1.3 | 指派/定义部署管理员 |  | 4h | 2003-10-17 | 2003-10-17 |  | 32.25d |  | 项目经理; 风险承担者 | 8h |
| 16 | 1.2.1.4 | 指派/定义台式计算机管理员 |  | 4h | 2003-10-17 | 2003-10-17 |  | 32.25d |  | 项目经理; 风险承担者 | 8h |
| 17 | 1.2.1.5 | 指派/定义 Intranet/Internet 管理员 |  | 4h | 2003-10-17 | 2003-10-17 |  | 32.25d |  | 项目经理; 风险承担者 | 8h |
| 18 | 1.2.1.6 | 指派/定义数据库服务器管理员 |  | 4h | 2003-10-17 | 2003-10-17 |  | 32.25d |  | 项目经理; 风险承担者 | 8h |
| 19 | 1.2.1.7 | 指派/定义浏览器管理员 |  | 4h | 2003-10-17 | 2003-10-17 |  | 32.25d |  | 项目经理; 风险承担者 | 8h |
| 20 | 1.2.1.8 | 指派/定义信息管理员 |  | 4h | 2003-10-17 | 2003-10-17 |  | 32.25d |  | 项目经理; 风险承担者 | 8h |
| 21 | 1.2.1.9 | 指派/定义网络管理员 |  | 4h | 2003-10-17 | 2003-10-17 |  | 32.25d |  | 项目经理; 风险承担者 | 8h |
| 22 | 1.2.1.10 | 指派/定义测试/QA 工作组 |  | 4h | 2003-10-17 | 2003-10-17 |  | 32.25d |  | 项目经理; 风险承担者 | 8h |
| 23 | 1.2.1.11 | 指派/定义用户教育/培训负责人 |  | 4h | 2003-10-17 | 2003-10-17 |  | 32.25d |  | 项目经理; 风险承担者 | 8h |
| 24 | 1.2.1.12 | 指派/定义后勤管理负责人 |  | 1d | 2003-10-17 | 2003-10-17 |  | 5.75d | 0d | 项目经理; 风险承担者 | 16h |
| 25 | 1.2.1.13 | 建立子工作组角色和责任(例如，基础结构、安全、服务器) |  | 5d | 2003-10-20 | 2003-10-24 | 24 | 5.75d | 0d | 项目经理; 风险承担者 | 80h |
| 26 | 1.2.1.14 | 完成召集项目工作组/定义角色 | milestone | 0d | 2003-10-24 | 2003-10-24 | 25 | 5.75d | 0d |  |  |

Notes:
- 1: 此 Microsoft Office Project 模板是为了方便企业环境中 Microsoft Windows Server 2003 的部署而设计的。该模板的设计是为了将执行组织集中在关键步骤上，这些步骤确保了成功的、经过周密计划的 Windows Server 2003 部署。 / 请参阅帮助获取有关此模板的各部分的更多信息。
- 2: 计划部署的第一步是定义项目目标。在此步骤中，确定您想要获得的特定商务目标以及 Windows Server 2003 帮助您获得这些目标的方法。
- 11: 在此阶段，您应该为要部署的每个 Windows Server 2003 功能制定一个功能设计说明。在您测试不同的配置以确定如何使用 Windows 时，在此阶段测试实验室将变得非常重要。

| ID | WBS | Task | Type | Duration | Start | Finish | Predecessors | Total slack | Free slack | Resources | Work |
| --- | --- | --- | --- | --- | --- | --- | --- | --- | --- | --- | --- |
| 27 | 1.2.2 | **详细描述当前数据处理环境** |  | 10d | 2003-10-27 | 2003-11-07 | 26 | 5.75d |  |  | 640h |
| 28 | 1.2.2.1 | 详细描述商务组织要求 |  | 5d | 2003-10-27 | 2003-10-31 |  | 5.75d | 0d | 基础结构管理员 | 40h |
| 29 | 1.2.2.2 | 详细描述地理方面的考虑因素 |  | 5d | 2003-10-27 | 2003-10-31 |  | 5.75d | 0d | 基础结构管理员 | 40h |
| 30 | 1.2.2.3 | 详细描述主要商务过程 |  | 5d | 2003-10-27 | 2003-10-31 |  | 5.75d | 0d | 基础结构管理员 | 40h |
| 31 | 1.2.2.4 | 详细描述信息体系结构/流程 |  | 5d | 2003-10-27 | 2003-10-31 |  | 5.75d | 0d | 基础结构管理员 | 40h |
| 32 | 1.2.2.5 | 详细描述应用程序要求 |  | 5d | 2003-10-27 | 2003-10-31 |  | 5.75d | 0d | 基础结构管理员 | 40h |
| 33 | 1.2.2.6 | 详细描述技术体系结构 |  | 5d | 2003-10-27 | 2003-10-31 |  | 5.75d | 0d | 基础结构管理员 | 40h |
| 34 | 1.2.2.7 | 详细描述服务器硬件和软件清单 |  | 5d | 2003-10-27 | 2003-10-31 |  | 5.75d | 0d | 台式计算机管理员 | 40h |
| 35 | 1.2.2.8 | 详细描述客户端硬件和软件清单 |  | 5d | 2003-10-27 | 2003-10-31 |  | 5.75d | 0d | 台式计算机管理员 | 40h |
| 36 | 1.2.2.9 | 详细描述当前和未来的信息技术标准 |  | 5d | 2003-10-27 | 2003-10-31 |  | 5.75d | 0d | 基础结构管理员 | 40h |
| 37 | 1.2.2.10 | 详细描述当前管理/服务传输模型 |  | 5d | 2003-10-27 | 2003-10-31 |  | 5.75d | 0d | 基础结构管理员 | 40h |
| 38 | 1.2.2.11 | 记录当前数据处理环境 |  | 5d | 2003-11-03 | 2003-11-07 | 28, 29, 30, 31, 32, 33, 36, 37, 34, 35 | 5.75d | 0d | 基础结构管理员; 台式计算机管理员; Intranet/Internet 管理员; 数据库服务器管理员; 信息管理员; 网络管理员 | 240h |
| 39 | 1.2.2.12 | 完成详细描述当前数据处理环境 | milestone | 0d | 2003-11-07 | 2003-11-07 | 38 | 5.75d | 0d |  |  |
| 40 | 1.2.3 | **详细描述初步设计目标** |  | 11d | 2003-11-10 | 2003-11-24 |  | 5.75d |  |  | 96h |
| 41 | 1.2.3.1 | 将构想/范围映射到当前数据处理环境 |  | 10d | 2003-11-10 | 2003-11-21 | 39 | 5.75d | 0d | 基础结构管理员 | 80h |
| 42 | 1.2.3.2 | 与执行赞助人一起检查初步设计目标 |  | 1d | 2003-11-24 | 2003-11-24 | 41 | 5.75d | 0d | 项目经理; 基础结构管理员 | 16h |
| 43 | 1.2.3.3 | 完成详细描述初步设计目标 | milestone | 0d | 2003-11-24 | 2003-11-24 | 42 | 5.75d |  |  |  |
| 44 | 1.2.4 | **确定共存策略** |  | 3d | 2003-10-17 | 2003-10-21 |  | 29.75d |  |  | 48h |
| 45 | 1.2.4.1 | 确定公司内部的互操作性问题(例如，支持的操作系统、拓扑、协议) |  | 3d | 2003-10-17 | 2003-10-21 |  | 29.75d | 0d | 基础结构管理员 | 24h |
| 46 | 1.2.4.2 | 确定与合作伙伴的互操作性问题(例如，拓扑、协议) |  | 3d | 2003-10-17 | 2003-10-21 |  | 29.75d | 0d | 基础结构管理员 | 24h |
| 47 | 1.2.4.3 | 完成确定共存策略 | milestone | 0d | 2003-10-21 | 2003-10-21 | 45, 46 | 29.75d |  |  |  |
| 48 | 1.2.5 | **建立测试实验室环境** |  | 32.75d | 2003-10-17 | 2003-12-02 |  | 0d |  |  | 306h |
| 49 | 1.2.5.1 | 检查当前配置文档和定义实验室模型 |  | 2d | 2003-10-17 | 2003-10-20 |  | 0d |  | 基础结构管理员 | 16h |
| 50 | 1.2.5.2 | 选择一个或多个实验室位置 |  | 1d | 2003-10-21 | 2003-10-21 | 49 | 0d |  | 后勤管理负责人 | 8h |
| 51 | 1.2.5.3 | 确定实验室空间和环境要求 |  | 1d | 2003-10-22 | 2003-10-22 | 50 | 0d |  | 后勤管理负责人 | 8h |
| 52 | 1.2.5.4 | 确定电源和网络连接要求 |  | 2d | 2003-10-23 | 2003-10-24 | 51 | 0d |  | 后勤管理负责人 | 16h |
| 53 | 1.2.5.5 | 设计和记录实验室的理想化和实际配置 |  | 2d | 2003-10-27 | 2003-10-28 | 52 | 0d |  | 网络管理员 | 16h |
| 54 | 1.2.5.6 | 确定硬件要求 |  | 2d | 2003-10-29 | 2003-10-30 | 53 | 0d |  | 网络管理员 | 16h |
| 55 | 1.2.5.7 | 确定软件要求，包括商务应用软件和工具 |  | 3d | 2003-10-31 | 2003-11-04 | 54 | 0d |  | 网络管理员 | 24h |
| 56 | 1.2.5.8 | 确定实验室人员 |  | 1d | 2003-11-05 | 2003-11-05 | 55 | 0d |  | 后勤管理负责人 | 8h |
| 57 | 1.2.5.9 | 确定数据库要求 |  | 1d | 2003-11-06 | 2003-11-06 | 56 | 0d |  | 数据库服务器管理员 | 8h |
| 58 | 1.2.5.10 | 确定布线和网络连接计划 |  | 1d | 2003-11-07 | 2003-11-07 | 57 | 0d |  | 网络管理员 | 8h |
| 59 | 1.2.5.11 | 获得硬件，包括电缆和软件 |  | 3d | 2003-11-10 | 2003-11-12 | 58 | 0d |  | 后勤管理负责人 | 24h |
| 60 | 1.2.5.12 | 获得工作区设备，如办公桌、椅子、白板、软木板、灯、电话和搁板 |  | 3d | 2003-11-10 | 2003-11-12 | 58 | 0d |  | 后勤管理负责人 | 24h |
| 61 | 1.2.5.13 | 建立和配置网络 |  | 3d | 2003-11-13 | 2003-11-17 | 59, 60 | 0d |  | 网络管理员 | 24h |
| 62 | 1.2.5.14 | 测试网络连接性 |  | 1d | 2003-11-18 | 2003-11-18 | 61 | 0d |  | 网络管理员 | 8h |
| 63 | 1.2.5.15 | 建立和配置服务器 |  | 2d | 2003-11-19 | 2003-11-20 | 62 | 0d |  | 网络管理员 | 16h |
| 64 | 1.2.5.16 | 安装应用程序并在服务器上建立数据库 |  | 2d | 2003-11-21 | 2003-11-24 | 63 | 1d |  | 数据库服务器管理员 | 16h |
| 65 | 1.2.5.17 | 安装测试和管理工具 |  | 2h | 2003-11-21 | 2003-11-21 | 63 | 2.75d |  | 网络管理员; 测试/质保负责人 | 4h |
| 66 | 1.2.5.18 | 建立和配置客户端计算机 |  | 2d | 2003-11-21 | 2003-11-24 | 63 | 0d |  | 台式计算机管理员 | 16h |
| 67 | 1.2.5.19 | 在客户端计算机上安装应用程序 |  | 1d | 2003-11-25 | 2003-11-25 | 66 | 0d |  | 台式计算机管理员 | 8h |
| 68 | 1.2.5.20 | 测试所有实验室组件 |  | 2d | 2003-11-26 | 2003-11-27 | 67, 65, 64 | 0d |  | 测试/质保负责人 | 16h |
| 69 | 1.2.5.21 | 指派实验室管理人员 |  | 2h | 2003-11-28 | 2003-11-28 | 68 | 0d |  | 项目经理 | 2h |
| 70 | 1.2.5.22 | 定义实验室的更该控制过程 |  | 4h | 2003-11-28 | 2003-11-28 | 69 | 0d |  | 项目经理 | 4h |
| 71 | 1.2.5.23 | 创建、测试和记录实验室恢复过程 |  | 2d | 2003-11-28 | 2003-12-02 | 70 | 0d |  | 网络管理员 | 16h |
| 72 | 1.2.5.24 | 完成建立测试实验室环境测试 | milestone | 0d | 2003-12-02 | 2003-12-02 | 71 | 0d |  |  |  |

| ID | WBS | Task | Type | Duration | Start | Finish | Predecessors | Total slack | Free slack | Resources | Work |
| --- | --- | --- | --- | --- | --- | --- | --- | --- | --- | --- | --- |
| 73 | 1.2.6 | **进行风险评估** |  | 12d | 2003-10-17 | 2003-11-03 |  | 19.75d | 0d |  | 160h |
| 74 | 1.2.6.1 | 确定关键的应用程序 |  | 2d | 2003-10-17 | 2003-10-20 |  | 19.75d | 0d | 风险承担者 | 16h |
| 75 | 1.2.6.2 | 确定并分析潜在风险 |  | 4d | 2003-10-21 | 2003-10-24 | 74 | 19.75d | 0d | 项目经理; 风险承担者 | 64h |
| 76 | 1.2.6.3 | 量化风险的潜在影响 |  | 2d | 2003-10-27 | 2003-10-28 | 75 | 19.75d | 0d | 项目经理; 风险承担者 | 32h |
| 77 | 1.2.6.4 | 详细描述增加过程 |  | 2d | 2003-10-29 | 2003-10-30 | 76 | 19.75d | 0d | 项目经理; 风险承担者 | 32h |
| 78 | 1.2.6.5 | 记录风险评估 |  | 2d | 2003-10-31 | 2003-11-03 | 77 | 19.75d | 0d | 项目经理 | 16h |
| 79 | 1.2.6.6 | 完成执行风险评估 | milestone | 0d | 2003-11-03 | 2003-11-03 | 78 | 19.75d |  |  |  |
| 80 | 1.2.7 | **定义通信策略** |  | 11d | 2003-10-17 | 2003-10-31 |  | 20.75d | 1d |  | 176h |
| 81 | 1.2.7.1 | 定义各个阶段的通信策略 |  | 3d | 2003-10-17 | 2003-10-21 |  | 20.75d | 0d | 项目经理; 用户教育/培训负责人 | 48h |
| 82 | 1.2.7.2 | 定义听众 |  | 1d | 2003-10-22 | 2003-10-22 | 81 | 20.75d | 0d | 项目经理; 用户教育/培训负责人 | 16h |
| 83 | 1.2.7.3 | 定义通信传输机制 |  | 3d | 2003-10-23 | 2003-10-27 | 82 | 20.75d | 0d | 项目经理; 用户教育/培训负责人 | 48h |
| 84 | 1.2.7.4 | 建立通信时间表 |  | 2d | 2003-10-28 | 2003-10-29 | 83 | 20.75d | 0d | 项目经理; 用户教育/培训负责人 | 32h |
| 85 | 1.2.7.5 | 记录通信策略和标准 |  | 2d | 2003-10-30 | 2003-10-31 | 84 | 20.75d | 0d | 项目经理; 用户教育/培训负责人 | 32h |
| 86 | 1.2.7.6 | 完成定义通信策略 | milestone | 0d | 2003-10-31 | 2003-10-31 | 85 | 20.75d |  |  |  |
| 87 | 1.2.8 | **定义教育/培训策略** |  | 9d | 2003-10-17 | 2003-10-29 |  | 22.75d | 3d |  | 72h |
| 88 | 1.2.8.1 | 为部署人口统计定义教育策略(例如，管理员、技术支持、用户) |  | 2d | 2003-10-17 | 2003-10-20 |  | 22.75d | 0d | 用户教育/培训负责人 | 16h |
| 89 | 1.2.8.2 | 定义教育传输机制 |  | 2d | 2003-10-21 | 2003-10-22 | 88 | 22.75d | 0d | 用户教育/培训负责人 | 16h |
| 90 | 1.2.8.3 | 按阶段建立教育时间表 |  | 3d | 2003-10-23 | 2003-10-27 | 89 | 22.75d | 0d | 用户教育/培训负责人 | 24h |
| 91 | 1.2.8.4 | 记录教育策略和标准 |  | 2d | 2003-10-28 | 2003-10-29 | 90 | 22.75d | 0d | 用户教育/培训负责人 | 16h |
| 92 | 1.2.8.5 | 完成定义教育/培训策略 | milestone | 0d | 2003-10-29 | 2003-10-29 | 91 | 22.75d |  |  |  |
| 93 | 1.2.9 | 检查部署计划 |  | 1d | 2003-11-04 | 2003-11-04 | 73, 80, 87 | 19.75d | 0d | 项目经理; 基础结构管理员; 部署管理员; 台式计算机管理员; Intranet/Internet 管理员; 数据库服务器管理员; 浏览器管理员; 信息管理员; 网络管理员; 测试/质保负责人; 用户教育/培训负责人; 后勤管理负责人; 风险承担者 | 104h |
| 94 | 1.2.10 | 部署得到批准 | milestone | 0d | 2003-11-04 | 2003-11-04 | 93 | 19.75d |  |  |  |
| 95 | 1.3 | **部署** |  | 157.88d | 2003-12-02 | 2004-07-09 | 11 | 0d |  |  | 7271h |
| 96 | 1.3.1 | **评估迁移策略** |  | 3d | 2003-12-02 | 2003-12-05 |  | 125.25d | 0d |  | 24h |
| 97 | 1.3.1.1 | 确定迁移标志 |  | 1d | 2003-12-02 | 2003-12-03 |  | 125.25d | 0d | 基础结构管理员 | 8h |
| 98 | 1.3.1.2 | 确定支持的升级路径 |  | 2d | 2003-12-03 | 2003-12-05 | 97 | 125.25d | 0d | 基础结构管理员 | 16h |
| 99 | 1.3.1.3 | 完成评估迁移策略 | milestone | 0d | 2003-12-05 | 2003-12-05 | 98 | 125.25d | 0d |  |  |
| 100 | 1.3.2 | 完成 Active Directory 部署(应对该任务使用“Active Directory 部署”模板) | milestone | 0d | 2003-12-05 | 2003-12-05 | 96 | 164.75d |  |  |  |

Notes:
- 95: 在功能开发阶段，您将为打算实施的 Windows Server 2003 功能创建实际的设计(有时称为功能说明)。在此阶段，决定所选功能将在组织内部署和使用的方式。

| ID | WBS | Task | Type | Duration | Start | Finish | Predecessors | Total slack | Free slack | Resources | Work |
| --- | --- | --- | --- | --- | --- | --- | --- | --- | --- | --- | --- |
| 101 | 1.3.3 | **定义客户端策略、标准和管理** |  | 42.5d | 2003-12-02 | 2004-01-30 |  | 125.25d |  |  | 332h |
| 102 | 1.3.3.1 | 定义客户端管理策略 |  | 2d | 2003-12-05 | 2003-12-09 | 99 | 125.25d | 0d | 台式计算机管理员 | 16h |
| 103 | 1.3.3.2 | 定义基于作业功能的客户端应用程序需求 |  | 3d | 2003-12-09 | 2003-12-12 | 102 | 125.25d | 0d | 台式计算机管理员 | 24h |
| 104 | 1.3.3.3 | 定义基于作业功能的客户端配置限制 |  | 3d | 2003-12-12 | 2003-12-17 | 103 | 125.25d | 0d | 台式计算机管理员 | 24h |
| 105 | 1.3.3.4 | 配置批准的客户端硬件(便携式和台式计算机) |  | 2d | 2003-12-17 | 2003-12-19 | 104 | 125.25d | 0d | 台式计算机管理员 | 16h |
| 106 | 1.3.3.5 | 检查帮助客户端移动和配置的用户状态迁移工具 |  | 1d | 2003-12-19 | 2003-12-22 | 105 | 125.25d | 0d | 台式计算机管理员 | 8h |
| 107 | 1.3.3.6 | 配置基本客户端用户界面选项 |  | 2d | 2003-12-22 | 2003-12-24 | 106 | 125.25d | 0d | 台式计算机管理员 | 16h |
| 108 | 1.3.3.7 | 配置登录/注销选项 |  | 4h | 2003-12-24 | 2003-12-25 | 107 | 125.25d | 0d | 台式计算机管理员 | 4h |
| 109 | 1.3.3.8 | 配置开始菜单选项 |  | 4h | 2003-12-25 | 2003-12-25 | 108 | 125.25d | 0d | 台式计算机管理员 | 4h |
| 110 | 1.3.3.9 | 配置桌面选项 |  | 4h | 2003-12-25 | 2003-12-26 | 109 | 125.25d | 0d | 台式计算机管理员 | 4h |
| 111 | 1.3.3.10 | 配置多语言选项 |  | 4h | 2003-12-26 | 2003-12-26 | 110 | 125.25d | 0d | 台式计算机管理员 | 4h |
| 112 | 1.3.3.11 | 配置辅助功能选项 |  | 4h | 2003-12-26 | 2003-12-29 | 111 | 125.25d | 0d | 台式计算机管理员 | 4h |
| 113 | 1.3.3.12 | 配置基于客户端需求和管理原则的应用程序 |  | 1d | 2003-12-29 | 2003-12-30 | 112 | 125.25d | 0d | 台式计算机管理员 | 8h |
| 114 | 1.3.3.13 | 配置强制的应用程序 |  | 1d | 2003-12-30 | 2003-12-31 | 113 | 125.25d | 0d | 台式计算机管理员 | 8h |
| 115 | 1.3.3.14 | 配置可选的应用程序 |  | 1d | 2003-12-31 | 2004-01-01 | 114 | 125.25d | 0d | 台式计算机管理员 | 8h |
| 116 | 1.3.3.15 | 记录客户端策略和标准 |  | 3d | 2004-01-01 | 2004-01-06 | 115 | 125.25d | 0d | 台式计算机管理员 | 24h |
| 117 | 1.3.3.16 | **更改配置策略** |  | 18d | 2004-01-06 | 2004-01-30 |  | 125.25d |  |  | 160h |
| 118 | 1.3.3.16.1 | 定义用户和组织更改以及配置管理需求 |  | 2d | 2004-01-06 | 2004-01-08 | 116 | 125.25d | 0d | 台式计算机管理员 | 16h |
| 119 | 1.3.3.16.2 | 评估并选择所需更改和配置管理功能 |  | 3d | 2004-01-08 | 2004-01-13 | 118 | 125.25d | 0d | 台式计算机管理员 | 24h |
| 120 | 1.3.3.16.3 | 评估用于软件分发的其他应用程序(例如，Microsoft Systems Management Server) |  | 3d | 2004-01-13 | 2004-01-16 | 119 | 125.25d | 0d | 台式计算机管理员 | 24h |
| 121 | 1.3.3.16.4 | 计划使用远程操作系统安装来安装客户端 |  | 4d | 2004-01-16 | 2004-01-22 | 120 | 125.25d | 0d | 台式计算机管理员 | 32h |
| 122 | 1.3.3.16.5 | 配置组策略以启用 IntelliMirror 软件安装和维护 |  | 2d | 2004-01-22 | 2004-01-26 | 121 | 125.25d | 0d | 台式计算机管理员; 网络管理员 | 32h |
| 123 | 1.3.3.16.6 | 为用户数据管理配置服务器共享和组策略 |  | 2d | 2004-01-26 | 2004-01-28 | 122 | 125.25d | 0d | 网络管理员 | 16h |
| 124 | 1.3.3.16.7 | 为用户设置管理配置服务器共享和组策略 |  | 2d | 2004-01-28 | 2004-01-30 | 123 | 125.25d |  | 网络管理员 | 16h |
| 125 | 1.3.3.17 | 完成定义客户端策略、标准和管理 | milestone | 0d | 2003-12-02 | 2003-12-02 |  | 167.75d |  |  |  |

| ID | WBS | Task | Type | Duration | Start | Finish | Predecessors | Total slack | Free slack | Resources | Work |
| --- | --- | --- | --- | --- | --- | --- | --- | --- | --- | --- | --- |
| 126 | 1.3.4 | **检查应用程序与 Microsoft Windows Server 2003 的兼容性** |  | 42.5d | 2003-12-02 | 2004-01-30 |  | 0d |  |  | 480h |
| 127 | 1.3.4.1 | 检查详细的应用程序清单文档 |  | 2d | 2003-12-02 | 2003-12-04 |  | 0d |  | 基础结构管理员; 台式计算机管理员 | 32h |
| 128 | 1.3.4.2 | 请考虑减少使用的应用程序数量并制定桌面标准 |  | 5d | 2003-12-04 | 2003-12-11 | 127 | 0d |  | 基础结构管理员; 台式计算机管理员 | 80h |
| 129 | 1.3.4.3 | 开发用于区分应用程序优先次序的系统 |  | 2d | 2003-12-11 | 2003-12-15 | 128 | 0d |  | 基础结构管理员; 台式计算机管理员 | 32h |
| 130 | 1.3.4.4 | 按照应用程序对企业运营的关键程度区分其优先次序 |  | 1d | 2003-12-15 | 2003-12-16 | 129 | 0d |  | 基础结构管理员; 台式计算机管理员 | 16h |
| 131 | 1.3.4.5 | 编写测试计划，包含测试方法、实验室和测试资源需求，以及日程安排 |  | 4d | 2003-12-16 | 2003-12-22 | 130 | 0d |  | 测试/质保负责人 | 32h |
| 132 | 1.3.4.6 | 开发用于捕获和报告测试结果的测试跟踪系统 |  | 1d | 2003-12-22 | 2003-12-23 | 131 | 0d |  | 测试/质保负责人 | 8h |
| 133 | 1.3.4.7 | 排定测试事件的日程 |  | 5d | 2003-12-23 | 2003-12-30 | 132 | 0d |  | 测试/质保负责人 | 40h |
| 134 | 1.3.4.8 | 测试应用程序并记录结果 |  | 10d | 2003-12-30 | 2004-01-13 | 133 | 0d |  | 测试/质保负责人 | 80h |
| 135 | 1.3.4.9 | 报告测试进度 |  | 10d | 2004-01-02 | 2004-01-16 | 134FS-7.5% | 0d |  | 测试/质保负责人 | 80h |
| 136 | 1.3.4.10 | 解决应用程序的不兼容性 |  | 5d | 2004-01-16 | 2004-01-23 | 135 | 0d |  | 台式计算机管理员 | 40h |
| 137 | 1.3.4.11 | 测试克服兼容性问题的兼容性模式 |  | 5d | 2004-01-23 | 2004-01-30 | 136 | 0d |  | 测试/质保负责人 | 40h |
| 138 | 1.3.4.12 | 完成检查应用程序与 Microsoft Windows Server 2003 的兼容性 | milestone | 0d | 2004-01-30 | 2004-01-30 | 137 | 0d |  |  |  |
| 139 | 1.3.5 | **确定安全性考虑事项** |  | 64d | 2003-12-02 | 2004-03-01 |  | 103.75d |  |  | 1536h |
| 140 | 1.3.5.1 | 确定适用于网络的安全风险 |  | 5d | 2003-12-02 | 2003-12-09 |  | 103.75d | 0d | 基础结构管理员; Intranet/Internet 管理员; 网络管理员 | 120h |
| 141 | 1.3.5.2 | 评估可以确认的安全风险的解决方案 |  | 3d | 2003-12-09 | 2003-12-12 | 140 | 103.75d | 0d | 基础结构管理员; Intranet/Internet 管理员; 网络管理员 | 72h |
| 142 | 1.3.5.3 | 确保所有对网络资源的访问都需要使用域帐户进行身份验证 |  | 2d | 2003-12-12 | 2003-12-16 | 141 | 103.75d | 0d | 基础结构管理员; Intranet/Internet 管理员; 网络管理员 | 48h |
| 143 | 1.3.5.4 | 确定用户团体需要将强身份验证用于交互式或远程访问登录的部分 |  | 1d | 2003-12-16 | 2003-12-17 | 142 | 103.75d | 0d | 基础结构管理员; Intranet/Internet 管理员; 网络管理员 | 24h |
| 144 | 1.3.5.5 | 定义域用户帐户的密码长度、更改的时间间隔和复杂性要求，并且制订计划以便将这些要求传递给用户团体 |  | 1d | 2003-12-17 | 2003-12-18 | 143 | 103.75d | 0d | 基础结构管理员; Intranet/Internet 管理员; 网络管理员 | 24h |
| 145 | 1.3.5.6 | 确定如果强身份验证满足安全目的，是否需要智能卡登录的公钥安全 |  | 1d | 2003-12-18 | 2003-12-19 | 144 | 103.75d | 0d | 基础结构管理员; Intranet/Internet 管理员; 网络管理员 | 24h |
| 146 | 1.3.5.7 | 定义启用远程访问服务的策略 |  | 2d | 2003-12-19 | 2003-12-23 | 145 | 103.75d | 0d | 基础结构管理员; Intranet/Internet 管理员; 网络管理员 | 48h |
| 147 | 1.3.5.8 | 制定关于远程访问过程(包括连接方法)的过程/通信 |  | 2d | 2003-12-23 | 2003-12-25 | 146 | 103.75d | 0d | 基础结构管理员; Intranet/Internet 管理员; 网络管理员 | 48h |
| 148 | 1.3.5.9 | 定义用户组并建立组名称以及使用组类型方式的惯例 |  | 3d | 2003-12-25 | 2003-12-30 | 147 | 103.75d | 0d | 基础结构管理员; Intranet/Internet 管理员; 网络管理员 | 72h |
| 149 | 1.3.5.10 | 定义打算用于对企业范围资源的广泛安全访问的顶级安全组 |  | 1d | 2003-12-30 | 2003-12-31 | 148 | 103.75d | 0d | 基础结构管理员; Intranet/Internet 管理员; 网络管理员 | 24h |
| 150 | 1.3.5.11 | 通过使用安全组方法的特定参考定义访问控制策略 |  | 2d | 2003-12-31 | 2004-01-02 | 149 | 103.75d | 0d | 基础结构管理员; Intranet/Internet 管理员; 网络管理员 | 48h |
| 151 | 1.3.5.12 | 定义创建新组的过程以及负有管理组成员职责的人员 |  | 1d | 2004-01-02 | 2004-01-05 | 150 | 103.75d | 0d | 基础结构管理员; Intranet/Internet 管理员; 网络管理员 | 24h |
| 152 | 1.3.5.13 | 确定哪个现有域属于此目录林以及哪个域将使用外部信任关系 |  | 1d | 2004-01-05 | 2004-01-06 | 151 | 103.75d | 0d | 基础结构管理员; Intranet/Internet 管理员; 网络管理员 | 24h |
| 153 | 1.3.5.14 | 描述域、域树和目录林，并明确说明它们之间的信任关系 |  | 1d | 2004-01-06 | 2004-01-07 | 152 | 103.75d | 0d | 基础结构管理员; Intranet/Internet 管理员; 网络管理员 | 24h |
| 154 | 1.3.5.15 | 定义用于确定和管理敏感或机密信息以及用户需求的策略，以便保护敏感的数据 |  | 1d | 2004-01-07 | 2004-01-08 | 153 | 103.75d | 0d | 基础结构管理员; Intranet/Internet 管理员; 网络管理员 | 24h |
| 155 | 1.3.5.16 | 确定提供可能需要数据保护的敏感数据的网络数据服务器 |  | 1d | 2004-01-08 | 2004-01-09 | 154 | 103.75d | 0d | 基础结构管理员; Intranet/Internet 管理员; 网络管理员 | 24h |
| 156 | 1.3.5.17 | 制定远程访问使用的保护数据的 Internet 协议安全(IPSec)部署规划，或访问敏感的应用程序数据服务器的部署规划 |  | 2d | 2004-01-09 | 2004-01-13 | 155 | 103.75d | 0d | 基础结构管理员; Intranet/Internet 管理员; 网络管理员 | 48h |
| 157 | 1.3.5.18 | 如果使用加密文件系统(EFS)，请说明数据故障恢复策略，包括组织中的故障恢复代理的角色 |  | 2d | 2004-01-13 | 2004-01-15 | 156 | 103.75d | 0d | 基础结构管理员; Intranet/Internet 管理员; 网络管理员 | 48h |
| 158 | 1.3.5.19 | 如果使用 EFS，请说明用来实现数据故障恢复进程及验证组织的进程状况的过程 |  | 2d | 2004-01-15 | 2004-01-19 | 157 | 103.75d | 0d | 基础结构管理员; Intranet/Internet 管理员; 网络管理员 | 48h |
| 159 | 1.3.5.20 | 如果使用 IPSec，请确定网络中所使用的方法的方案，并理解性能的含义 |  | 2d | 2004-01-19 | 2004-01-21 | 158 | 103.75d | 0d | 基础结构管理员; Intranet/Internet 管理员; 网络管理员 | 48h |
| 160 | 1.3.5.21 | 定义/传送域范围的帐户策略 |  | 3d | 2004-01-21 | 2004-01-26 | 159 | 103.75d | 0d | 基础结构管理员; Intranet/Internet 管理员; 网络管理员 | 72h |
| 161 | 1.3.5.22 | 确定网络中不同类别系统的本地安全策略需求，如台式计算机、文件和打印服务器、电子邮件服务器，然后为每个类别定义适当的“组策略”安全设置 |  | 3d | 2004-01-26 | 2004-01-29 | 160 | 103.75d | 0d | 基础结构管理员; Intranet/Internet 管理员; 网络管理员 | 72h |
| 162 | 1.3.5.23 | 定义可以使用特定的安全模板来管理安全设置的应用程序服务器，然后考虑通过“组策略”管理它们 |  | 2d | 2004-01-29 | 2004-02-02 | 161 | 103.75d | 0d | 基础结构管理员; Intranet/Internet 管理员; 网络管理员 | 48h |
| 163 | 1.3.5.24 | 对于从 Microsoft Windows 2000 或 Microsoft Windows NT 进行升级(而非完全安装)的系统应用适当的安全模板 |  | 1d | 2004-02-02 | 2004-02-03 | 162 | 103.75d | 0d | 基础结构管理员; Intranet/Internet 管理员; 网络管理员 | 24h |
| 164 | 1.3.5.25 | 使用安全模板作为描述要为不同类别计算机实施的安全级别的手段 |  | 1d | 2004-02-03 | 2004-02-04 | 163 | 103.75d | 0d | 基础结构管理员; Intranet/Internet 管理员; 网络管理员 | 24h |
| 165 | 1.3.5.26 | 制定测试计划以便验证常规的商务应用程序在正确配置的安全系统中是否正常运行 |  | 5d | 2004-02-04 | 2004-02-11 | 164 | 103.75d | 0d | 基础结构管理员; Intranet/Internet 管理员; 网络管理员 | 120h |
| 166 | 1.3.5.27 | 定义所需要的其他应用程序，这些程序将提供增强的安全功能以满足组织的安全目标 |  | 1d | 2004-02-11 | 2004-02-12 | 165 | 103.75d | 0d | 基础结构管理员; Intranet/Internet 管理员; 网络管理员 | 24h |
| 167 | 1.3.5.28 | 说明下载代码需要的安全级别 |  | 1d | 2004-02-12 | 2004-02-13 | 166 | 103.75d | 0d | 基础结构管理员; Intranet/Internet 管理员; 网络管理员 | 24h |
| 168 | 1.3.5.29 | 为所有内部开发的分布式软件部署用于实现代码签名的内部过程 |  | 2d | 2004-02-13 | 2004-02-17 | 167 | 103.75d | 0d | 基础结构管理员; Intranet/Internet 管理员; 网络管理员 | 48h |
| 169 | 1.3.5.30 | 说明确保管理员帐户和管理控制台安全的策略 |  | 1d | 2004-02-17 | 2004-02-18 | 168 | 103.75d | 0d | 基础结构管理员; Intranet/Internet 管理员; 网络管理员 | 24h |
| 170 | 1.3.5.31 | 确定计划委派管理员控制特定任务的条件 |  | 1d | 2004-02-18 | 2004-02-19 | 169 | 103.75d | 0d | 基础结构管理员; Intranet/Internet 管理员; 网络管理员 | 24h |
| 171 | 1.3.5.32 | 确定关于审核的策略，包括工作人员 |  | 2d | 2004-02-19 | 2004-02-23 | 170 | 103.75d | 0d | 基础结构管理员; Intranet/Internet 管理员; 网络管理员 | 48h |
| 172 | 1.3.5.33 | 记录安全策略和标准 |  | 5d | 2004-02-23 | 2004-03-01 | 171 | 103.75d | 0d | 基础结构管理员; Intranet/Internet 管理员; 网络管理员 | 120h |
| 173 | 1.3.5.34 | 完成确定安全性考虑事项 | milestone | 0d | 2004-03-01 | 2004-03-01 | 172 | 103.75d |  |  |  |

| ID | WBS | Task | Type | Duration | Start | Finish | Predecessors | Total slack | Free slack | Resources | Work |
| --- | --- | --- | --- | --- | --- | --- | --- | --- | --- | --- | --- |
| 174 | 1.3.6 | **定义公钥基础结构** |  | 19d | 2003-12-02 | 2003-12-29 |  | 148.75d |  |  | 304h |
| 175 | 1.3.6.1 | 确定证书要求 |  | 2d | 2003-12-02 | 2003-12-04 |  | 148.75d | 0d | 基础结构管理员; Intranet/Internet 管理员 | 32h |
| 176 | 1.3.6.2 | 定义颁发证书的过程 |  | 1d | 2003-12-04 | 2003-12-05 | 175 | 148.75d | 0d | 基础结构管理员; Intranet/Internet 管理员 | 16h |
| 177 | 1.3.6.3 | 定义证书颁发机构信任层次结构 |  | 2d | 2003-12-05 | 2003-12-09 | 176 | 148.75d | 0d | 基础结构管理员; Intranet/Internet 管理员 | 32h |
| 178 | 1.3.6.4 | 定义证书颁发机构(CA)的安全要求 |  | 2d | 2003-12-09 | 2003-12-11 | 177 | 148.75d | 0d | 基础结构管理员; Intranet/Internet 管理员 | 32h |
| 179 | 1.3.6.5 | 定义证书有效期 |  | 1d | 2003-12-11 | 2003-12-12 | 178 | 148.75d | 0d | 基础结构管理员; Intranet/Internet 管理员 | 16h |
| 180 | 1.3.6.6 | 定义证书登记和重新申请的过程 |  | 2d | 2003-12-12 | 2003-12-16 | 179 | 148.75d | 0d | 基础结构管理员; Intranet/Internet 管理员 | 32h |
| 181 | 1.3.6.7 | 定义证书吊销策略 |  | 1d | 2003-12-16 | 2003-12-17 | 180 | 148.75d | 0d | 基础结构管理员; Intranet/Internet 管理员 | 16h |
| 182 | 1.3.6.8 | 定义维护策略 |  | 2d | 2003-12-17 | 2003-12-19 | 181 | 148.75d | 0d | 基础结构管理员; Intranet/Internet 管理员 | 32h |
| 183 | 1.3.6.9 | 定义灾难恢复策略 |  | 3d | 2003-12-19 | 2003-12-24 | 182 | 148.75d | 0d | 基础结构管理员; Intranet/Internet 管理员 | 48h |
| 184 | 1.3.6.10 | 创建设计文档 |  | 2d | 2003-12-24 | 2003-12-26 | 183 | 148.75d | 0d | 基础结构管理员; Intranet/Internet 管理员 | 32h |
| 185 | 1.3.6.11 | 创建首展计划和日程安排 |  | 1d | 2003-12-26 | 2003-12-29 | 184 | 148.75d | 0d | 基础结构管理员; 部署管理员 | 16h |
| 186 | 1.3.6.12 | 完成定义公钥基础结构 | milestone | 0d | 2003-12-29 | 2003-12-29 | 185 | 148.75d |  |  |  |
| 187 | 1.3.7 | **规划成员服务器迁移(非域控制器)** |  | 7.5d | 2003-12-02 | 2003-12-12 |  | 160.25d |  |  | 68h |
| 188 | 1.3.7.1 | 确定容量计划 |  | 2d | 2003-12-02 | 2003-12-04 |  | 160.25d | 0d | 网络管理员 | 16h |
| 189 | 1.3.7.2 | 计划用于网络中断的情况 |  | 1d | 2003-12-04 | 2003-12-05 | 188 | 160.25d | 0d | 网络管理员 | 8h |
| 190 | 1.3.7.3 | 读取预安装或预升级的清单 |  | 4h | 2003-12-05 | 2003-12-08 | 189 | 160.25d | 0d | 网络管理员 | 4h |
| 191 | 1.3.7.4 | 读取硬件清单和硬件兼容性列表(HCL) |  | 1d | 2003-12-08 | 2003-12-09 | 190 | 160.25d | 0d | 网络管理员 | 8h |
| 192 | 1.3.7.5 | 检查第三方软件兼容性 |  | 2d | 2003-12-09 | 2003-12-11 | 191 | 160.25d | 0d | 网络管理员 | 16h |
| 193 | 1.3.7.6 | 记录详细的成员服务器迁移策略和标准 |  | 1d | 2003-12-11 | 2003-12-12 | 192 | 160.25d | 0d | 部署管理员; 网络管理员 | 16h |
| 194 | 1.3.7.7 | 完成规划成员服务器迁移(非域控制器) | milestone | 0d | 2003-12-12 | 2003-12-12 | 193 | 160.25d |  |  |  |
| 195 | 1.3.8 | **规划终端服务配置** |  | 15d | 2003-12-02 | 2003-12-23 |  | 152.75d |  |  | 120h |
| 196 | 1.3.8.1 | 选择远程管理或服务器应用程序模式 |  | 2d | 2003-12-02 | 2003-12-04 |  | 152.75d | 0d | 网络管理员 | 16h |
| 197 | 1.3.8.2 | 确定许可证需求 |  | 1d | 2003-12-04 | 2003-12-05 | 196 | 152.75d | 0d | 网络管理员 | 8h |
| 198 | 1.3.8.3 | 确定终端服务如何利于商务环境 |  | 2d | 2003-12-05 | 2003-12-09 | 197 | 152.75d | 0d | 网络管理员 | 16h |
| 199 | 1.3.8.4 | 记录现有数据处理环境 |  | 1d | 2003-12-09 | 2003-12-10 | 198 | 152.75d | 0d | 网络管理员 | 8h |
| 200 | 1.3.8.5 | 制定实施终端服务(包括联网、安全以及域结构)的计划 |  | 3d | 2003-12-10 | 2003-12-15 | 199 | 152.75d | 0d | 网络管理员 | 24h |
| 201 | 1.3.8.6 | 建立服务器部署(包括 CPU、存储和内存)的规则和标准 |  | 1d | 2003-12-15 | 2003-12-16 | 200 | 152.75d | 0d | 网络管理员 | 8h |
| 202 | 1.3.8.7 | 记录详细的终端服务策略和标准 |  | 5d | 2003-12-16 | 2003-12-23 | 201 | 152.75d | 0d | 网络管理员 | 40h |
| 203 | 1.3.8.8 | 完成规划终端服务配置 | milestone | 0d | 2003-12-23 | 2003-12-23 | 202 | 152.75d |  |  |  |

| ID | WBS | Task | Type | Duration | Start | Finish | Predecessors | Total slack | Resources | Work |
| --- | --- | --- | --- | --- | --- | --- | --- | --- | --- | --- |
| 204 | 1.3.9 | **详细描述高可用性应用程序/服务(群集)** |  | 27d | 2004-01-30 | 2004-03-09 |  | 0d |  | 608h |
| 205 | 1.3.9.1 | 确定关键应用程序和服务的特定高可用性需求 |  | 2d | 2004-01-30 | 2004-02-03 | 138 | 0d | 基础结构管理员; Intranet/Internet 管理员; 网络管理员 | 48h |
| 206 | 1.3.9.2 | 确定群集需求 |  | 2d | 2004-02-03 | 2004-02-05 | 205 | 0d | 基础结构管理员; Intranet/Internet 管理员; 网络管理员 | 48h |
| 207 | 1.3.9.3 | 确定网络风险 |  | 1d | 2004-02-05 | 2004-02-06 | 206 | 0d | 基础结构管理员; Intranet/Internet 管理员; 网络管理员 | 24h |
| 208 | 1.3.9.4 | 解决网络风险问题 |  | 1d | 2004-02-06 | 2004-02-09 | 207 | 0d | 基础结构管理员; Intranet/Internet 管理员; 网络管理员 | 24h |
| 209 | 1.3.9.5 | 确定哪些应用程序要与网络负载平衡一起使用 |  | 2d | 2004-02-09 | 2004-02-11 | 208 | 0d | 基础结构管理员; Intranet/Internet 管理员; 网络管理员 | 48h |
| 210 | 1.3.9.6 | 执行网络负载平衡的容量计划 |  | 2d | 2004-02-11 | 2004-02-13 | 209 | 0d | 基础结构管理员; Intranet/Internet 管理员; 网络管理员 | 48h |
| 211 | 1.3.9.7 | 优化网络负载平衡群集 |  | 2d | 2004-02-13 | 2004-02-17 | 210 | 0d | 基础结构管理员; Intranet/Internet 管理员; 网络管理员 | 48h |
| 212 | 1.3.9.8 | 确定组织中的组件服务应用程序 |  | 1d | 2004-02-17 | 2004-02-18 | 211 | 0d | 基础结构管理员; Intranet/Internet 管理员; 网络管理员 | 24h |
| 213 | 1.3.9.9 | 选择组件负载平衡解决方案 |  | 1d | 2004-02-18 | 2004-02-19 | 212 | 0d | 基础结构管理员; Intranet/Internet 管理员; 网络管理员 | 24h |
| 214 | 1.3.9.10 | 执行组件负载平衡的容量计划 |  | 1d | 2004-02-19 | 2004-02-20 | 213 | 0d | 基础结构管理员; Intranet/Internet 管理员; 网络管理员 | 24h |
| 215 | 1.3.9.11 | 测试并调整应用程序的组件负载平衡性能 |  | 1d | 2004-02-20 | 2004-02-23 | 214 | 0d | 网络管理员; 测试/质保负责人 | 16h |
| 216 | 1.3.9.12 | 选择要在服务器群集中运行的应用程序 |  | 1d | 2004-02-23 | 2004-02-24 | 215 | 0d | 基础结构管理员; Intranet/Internet 管理员; 网络管理员 | 24h |
| 217 | 1.3.9.13 | 确定网络风险 |  | 1d | 2004-02-24 | 2004-02-25 | 216 | 0d | 基础结构管理员; Intranet/Internet 管理员; 网络管理员 | 24h |
| 218 | 1.3.9.14 | 确定组的故障转移策略 |  | 1d | 2004-02-25 | 2004-02-26 | 217 | 0d | 基础结构管理员; Intranet/Internet 管理员; 网络管理员 | 24h |
| 219 | 1.3.9.15 | 选择域模型 |  | 1d | 2004-02-26 | 2004-02-27 | 218 | 0d | 网络管理员 | 8h |
| 220 | 1.3.9.16 | 选择群集模型 |  | 1d | 2004-02-27 | 2004-03-01 | 219 | 0d | 网络管理员 | 8h |
| 221 | 1.3.9.17 | 执行群集服务的容量计划 |  | 2d | 2004-03-01 | 2004-03-03 | 220 | 0d | 基础结构管理员; Intranet/Internet 管理员; 网络管理员 | 48h |
| 222 | 1.3.9.18 | 记录群集策略和标准 |  | 4d | 2004-03-03 | 2004-03-09 | 221 | 0d | 基础结构管理员; Intranet/Internet 管理员; 网络管理员 | 96h |
| 223 | 1.3.9.19 | 完成详细描述高可用性应用程序/服务(群集) | milestone | 0d | 2004-03-09 | 2004-03-09 | 222 | 0d |  |  |
| 224 | 1.3.10 | **规划存储管理策略** |  | 9d | 2004-03-09 | 2004-03-22 |  | 0d |  | 84h |
| 225 | 1.3.10.1 | 评估 Microsoft Windows Server 2003 磁盘管理策略 |  | 1d | 2004-03-09 | 2004-03-10 | 223 | 97.25d | 网络管理员 | 8h |
| 226 | 1.3.10.2 | 确定基本存储 |  | 4h | 2004-03-09 | 2004-03-09 | 223 | 97.75d | 网络管理员 | 4h |
| 227 | 1.3.10.3 | 确定动态存储 |  | 4h | 2004-03-09 | 2004-03-09 | 223 | 0d | 网络管理员 | 4h |
| 228 | 1.3.10.4 | 评估卷管理 |  | 1d | 2004-03-09 | 2004-03-10 | 227 | 0d | 网络管理员 | 8h |
| 229 | 1.3.10.5 | 评估装入点 |  | 2d | 2004-03-10 | 2004-03-12 | 228 | 0d | 网络管理员 | 16h |
| 230 | 1.3.10.6 | 评估磁盘碎片整理策略 |  | 4h | 2004-03-12 | 2004-03-15 | 229 | 0d | 网络管理员 | 4h |
| 231 | 1.3.10.7 | 评估可移动存储策略 |  | 1d | 2004-03-15 | 2004-03-16 | 230 | 0d | 网络管理员 | 8h |
| 232 | 1.3.10.8 | 评估远程存储策略 |  | 1d | 2004-03-16 | 2004-03-17 | 231 | 0d | 网络管理员 | 8h |
| 233 | 1.3.10.9 | 记录存储管理策略和标准 |  | 3d | 2004-03-17 | 2004-03-22 | 232 | 0d | 网络管理员 | 24h |
| 234 | 1.3.10.10 | 完成规划存储管理策略 | milestone | 0d | 2004-03-22 | 2004-03-22 | 233 | 0d |  |  |

| ID | WBS | Task | Type | Duration | Start | Finish | Predecessors | Total slack | Free slack | Resources | Work |
| --- | --- | --- | --- | --- | --- | --- | --- | --- | --- | --- | --- |
| 235 | 1.3.11 | **补救风险评估** |  | 7d | 2004-03-22 | 2004-03-31 |  | 0d |  |  | 56h |
| 236 | 1.3.11.1 | 查看风险评估文档 |  | 1d | 2004-03-22 | 2004-03-23 | 234 | 0d |  | 项目经理 | 8h |
| 237 | 1.3.11.2 | 确定解决方案 |  | 3d | 2004-03-23 | 2004-03-26 | 236 | 0d |  | 项目经理 | 24h |
| 238 | 1.3.11.3 | 传达到项目赞助者、高级管理人员以及项目成员 |  | 1d | 2004-03-26 | 2004-03-29 | 237 | 0d |  | 项目经理 | 8h |
| 239 | 1.3.11.4 | 将风险作为日常项目管理的一部分进行评估 |  | 2d | 2004-03-29 | 2004-03-31 | 238 | 0d |  | 项目经理 | 16h |
| 240 | 1.3.11.5 | 完成补救风险评估 | milestone | 0d | 2004-03-31 | 2004-03-31 | 239 | 0d |  |  |  |
| 241 | 1.3.12 | **制定通讯工作** |  | 11d | 2004-03-31 | 2004-04-15 |  | 71.25d |  |  | 88h |
| 242 | 1.3.12.1 | 查看通讯策略和标准 |  | 3d | 2004-03-31 | 2004-04-05 | 240 | 71.25d | 0d | 用户教育/培训负责人 | 24h |
| 243 | 1.3.12.2 | 制定通讯材料 |  | 5d | 2004-04-05 | 2004-04-12 | 242 | 71.25d | 0d | 用户教育/培训负责人 | 40h |
| 244 | 1.3.12.3 | 检查通讯材料 |  | 2d | 2004-04-12 | 2004-04-14 | 243 | 71.25d | 0d | 用户教育/培训负责人 | 16h |
| 245 | 1.3.12.4 | 批准通讯策略和材料 |  | 1d | 2004-04-14 | 2004-04-15 | 244 | 71.25d | 0d | 用户教育/培训负责人 | 8h |
| 246 | 1.3.12.5 | 完成联系材料的准备 | milestone | 0d | 2004-04-15 | 2004-04-15 | 245 | 71.25d |  |  |  |
| 247 | 1.3.13 | **制定教育/培训** |  | 9d | 2004-03-31 | 2004-04-13 |  | 0d |  |  | 72h |
| 248 | 1.3.13.1 | 检查培训策略和标准 |  | 1d | 2004-03-31 | 2004-04-01 | 240 | 0d |  | 用户教育/培训负责人 | 8h |
| 249 | 1.3.13.2 | 制定/获得培训材料 |  | 5d | 2004-04-01 | 2004-04-08 | 248 | 0d |  | 用户教育/培训负责人 | 40h |
| 250 | 1.3.13.3 | 检查教育材料 |  | 2d | 2004-04-08 | 2004-04-12 | 249 | 0d |  | 用户教育/培训负责人 | 16h |
| 251 | 1.3.13.4 | 批准教育策略和材料 |  | 1d | 2004-04-12 | 2004-04-13 | 250 | 0d |  | 用户教育/培训负责人 | 8h |
| 252 | 1.3.13.5 | 完成教育/培训开发工作 | milestone | 0d | 2004-04-13 | 2004-04-13 | 251 | 0d |  |  |  |
| 253 | 1.3.14 | **概念验证(POC)** |  | 20d | 2004-04-13 | 2004-05-11 | 252 | 0d |  |  | 1128h |
| 254 | 1.3.14.1 | **为 POC 做准备** |  | 11d | 2004-04-13 | 2004-04-28 |  | 0d |  |  | 608h |
| 255 | 1.3.14.1.1 | 准备基于制定/设计解决方案的测试计划和清单 |  | 3d | 2004-04-13 | 2004-04-16 |  | 68.25d | 0d | 测试/质保负责人 | 24h |
| 256 | 1.3.14.1.2 | 记录要测试的功能和组件 |  | 2d | 2004-04-16 | 2004-04-20 | 255 | 68.25d |  | 测试/质保负责人 | 16h |
| 257 | 1.3.14.1.3 | **执行硬件配置** |  | 3d | 2004-04-13 | 2004-04-16 |  | 62.25d | 0d |  | 72h |
| 258 | 1.3.14.1.3.1 | 配置服务器硬件和驱动程序 |  | 2d | 2004-04-13 | 2004-04-15 |  | 63.25d |  | 网络管理员 | 16h |
| 259 | 1.3.14.1.3.2 | 配置 WAN 连接性 |  | 2d | 2004-04-13 | 2004-04-15 |  | 63.25d |  | Intranet/Internet 管理员; 网络管理员 | 32h |
| 260 | 1.3.14.1.3.3 | 配置外围设备 |  | 3d | 2004-04-13 | 2004-04-16 |  | 62.25d |  | 网络管理员 | 24h |

Notes:
- 253: 在此阶段，将创建概念验证(POC)环境以评估在计划中早期讨论的不同组件。为进行适当评估，POC 环境应该是完整的 Microsoft Windows Server 2003 模型的微缩版本。

| ID | WBS | Task | Duration | Start | Finish | Predecessors | Total slack | Free slack | Resources | Work |
| --- | --- | --- | --- | --- | --- | --- | --- | --- | --- | --- |
| 261 | 1.3.14.1.4 | **执行软件配置** | 8d | 2004-04-16 | 2004-04-28 | 257 | 62.25d |  |  | 496h |
| 262 | 1.3.14.1.4.1 | 配置服务和配置 | 1d | 2004-04-16 | 2004-04-19 |  | 69.25d |  | 网络管理员 | 8h |
| 263 | 1.3.14.1.4.2 | **按角色配置服务器** | 8d | 2004-04-16 | 2004-04-28 |  | 62.25d |  |  | 344h |
| 264 | 1.3.14.1.4.2.1 | **配置文件服务器** | 5d | 2004-04-16 | 2004-04-23 |  | 65.25d |  |  | 40h |
| 265 | 1.3.14.1.4.2.1.1 | 设置磁盘配额 | 3d | 2004-04-16 | 2004-04-21 |  | 65.25d | 0d | 网络管理员 | 24h |
| 266 | 1.3.14.1.4.2.1.2 | 启用索引和调整索引 | 1d | 2004-04-21 | 2004-04-22 | 265 | 65.25d | 0d | 网络管理员 | 8h |
| 267 | 1.3.14.1.4.2.1.3 | 设置共享文件夹 | 1d | 2004-04-22 | 2004-04-23 | 266 | 65.25d |  | 网络管理员 | 8h |
| 268 | 1.3.14.1.4.2.2 | **配置打印服务器** | 2.5d | 2004-04-16 | 2004-04-20 |  | 67.75d |  |  | 20h |
| 269 | 1.3.14.1.4.2.2.1 | 为客户端设置适当的驱动程序 | 4h | 2004-04-16 | 2004-04-16 |  | 67.75d | 0d | 网络管理员 | 4h |
| 270 | 1.3.14.1.4.2.2.2 | 添加打印机 | 4h | 2004-04-16 | 2004-04-19 | 269 | 67.75d | 0d | 网络管理员 | 4h |
| 271 | 1.3.14.1.4.2.2.3 | 配置打印机共享 | 1d | 2004-04-19 | 2004-04-20 | 270 | 67.75d | 0d | 网络管理员 | 8h |
| 272 | 1.3.14.1.4.2.2.4 | 根据需要添加打印机驱动程序并进行配置 | 4h | 2004-04-20 | 2004-04-20 | 271 | 67.75d |  | 网络管理员 | 4h |
| 273 | 1.3.14.1.4.2.3 | **配置 Web 应用程序服务器** | 8d | 2004-04-16 | 2004-04-28 |  | 62.25d |  |  | 72h |
| 274 | 1.3.14.1.4.2.3.1 | 启用 Internet Information Server | 1d | 2004-04-16 | 2004-04-19 |  | 62.25d | 0d | Intranet/Internet 管理员 | 8h |
| 275 | 1.3.14.1.4.2.3.2 | 根据需要安装 FrontPage Server Extensions | 1d | 2004-04-19 | 2004-04-20 | 274 | 62.25d | 0d | Intranet/Internet 管理员 | 8h |
| 276 | 1.3.14.1.4.2.3.3 | 根据需要安装 MSDE | 1d | 2004-04-20 | 2004-04-21 | 275 | 62.25d | 0d | 数据库服务器管理员 | 8h |
| 277 | 1.3.14.1.4.2.3.4 | 根据需要启用 ASP.NET | 1d | 2004-04-21 | 2004-04-22 | 276 | 62.25d | 0d | Intranet/Internet 管理员 | 8h |
| 278 | 1.3.14.1.4.2.3.5 | 创建网站 | 2d | 2004-04-22 | 2004-04-26 | 277 | 62.25d | 0d | Intranet/Internet 管理员 | 16h |
| 279 | 1.3.14.1.4.2.3.6 | 使用 NTFS 权限保证网站安全 | 1d | 2004-04-26 | 2004-04-27 | 278 | 62.25d | 0d | Intranet/Internet 管理员 | 8h |
| 280 | 1.3.14.1.4.2.3.7 | 配置基于 Web 的远程管理(根据需要) | 1d | 2004-04-27 | 2004-04-28 | 279 | 62.25d |  | Intranet/Internet 管理员 | 8h |
| 281 | 1.3.14.1.4.2.3.8 | 配置 Web 园 | 1d | 2004-04-16 | 2004-04-19 |  | 69.25d |  | Intranet/Internet 管理员 | 8h |
| 282 | 1.3.14.1.4.2.4 | **配置邮件服务器** | 5d | 2004-04-16 | 2004-04-23 |  | 65.25d |  |  | 40h |
| 283 | 1.3.14.1.4.2.4.1 | 注册域名 | 4h | 2004-04-16 | 2004-04-16 |  | 65.25d | 0d | 基础结构管理员 | 4h |
| 284 | 1.3.14.1.4.2.4.2 | 使用静态 IP 地址配置邮件服务器 | 4h | 2004-04-16 | 2004-04-19 | 283 | 65.25d | 0d | 网络管理员 | 4h |
| 285 | 1.3.14.1.4.2.4.3 | 在 DNS 服务器中配置 MX 记录 | 4h | 2004-04-19 | 2004-04-19 | 284 | 65.25d | 0d | 网络管理员 | 4h |
| 286 | 1.3.14.1.4.2.4.4 | 配置 POP3 服务 | 4h | 2004-04-19 | 2004-04-20 | 285 | 65.25d | 0d | 信息管理员 | 4h |
| 287 | 1.3.14.1.4.2.4.5 | 配置邮箱 | 3d | 2004-04-20 | 2004-04-23 | 286 | 65.25d |  | 信息管理员 | 24h |

| ID | WBS | Task | Duration | Start | Finish | Predecessors | Total slack | Free slack | Resources | Work |
| --- | --- | --- | --- | --- | --- | --- | --- | --- | --- | --- |
| 288 | 1.3.14.1.4.2.5 | **配置终端服务器** | 2d | 2004-04-16 | 2004-04-20 |  | 68.25d |  |  | 20h |
| 289 | 1.3.14.1.4.2.5.1 | 设置终端服务 | 2d | 2004-04-16 | 2004-04-20 |  | 68.25d |  | 网络管理员 | 16h |
| 290 | 1.3.14.1.4.2.5.2 | 选择远程管理或应用程序服务器模式 | 4h | 2004-04-16 | 2004-04-16 |  | 69.75d |  | 网络管理员 | 4h |
| 291 | 1.3.14.1.4.2.6 | **配置远程访问/VPN 服务器** | 3d | 2004-04-16 | 2004-04-21 |  | 67.25d |  |  | 24h |
| 292 | 1.3.14.1.4.2.6.1 | 配置双宿主服务器 | 4h | 2004-04-16 | 2004-04-16 |  | 67.25d | 0d | 网络管理员 | 4h |
| 293 | 1.3.14.1.4.2.6.2 | 为 VPN 客户端配置 DHCP | 4h | 2004-04-16 | 2004-04-19 | 292 | 67.25d | 0d | Intranet/Internet 管理员 | 4h |
| 294 | 1.3.14.1.4.2.6.3 | 根据需要配置 RADIUS | 4h | 2004-04-19 | 2004-04-19 | 293 | 67.25d | 0d | Intranet/Internet 管理员 | 4h |
| 295 | 1.3.14.1.4.2.6.4 | 配置 VPN 访问的用户帐户 | 4h | 2004-04-19 | 2004-04-20 | 294 | 67.25d | 0d | 网络管理员 | 4h |
| 296 | 1.3.14.1.4.2.6.5 | 配置 VPN 端口数 | 4h | 2004-04-20 | 2004-04-20 | 295 | 67.25d | 0d | Intranet/Internet 管理员 | 4h |
| 297 | 1.3.14.1.4.2.6.6 | 为用户创建连接管理器配置文件 | 4h | 2004-04-20 | 2004-04-21 | 296 | 67.25d |  | 网络管理员 | 4h |
| 298 | 1.3.14.1.4.2.7 | **配置 DNS 服务器** | 4.5d | 2004-04-16 | 2004-04-22 |  | 65.75d |  |  | 40h |
| 299 | 1.3.14.1.4.2.7.1 | 注册域名 | 4h | 2004-04-16 | 2004-04-16 |  | 65.75d | 0d | 网络管理员 | 4h |
| 300 | 1.3.14.1.4.2.7.2 | 确定区域名称 | 4h | 2004-04-16 | 2004-04-19 | 299 | 65.75d | 0d | 网络管理员 | 4h |
| 301 | 1.3.14.1.4.2.7.3 | 确定区域转发的 IP | 4h | 2004-04-19 | 2004-04-19 | 300 | 65.75d | 0d | 网络管理员 | 4h |
| 302 | 1.3.14.1.4.2.7.4 | 安装 DNS | 4h | 2004-04-19 | 2004-04-20 | 301 | 65.75d | 0d | 网络管理员 | 4h |
| 303 | 1.3.14.1.4.2.7.5 | 创建正向搜索区域 | 4h | 2004-04-20 | 2004-04-20 | 302 | 65.75d | 0d | 网络管理员 | 4h |
| 304 | 1.3.14.1.4.2.7.6 | 创建反向搜索区域 | 4h | 2004-04-20 | 2004-04-21 | 303 | 65.75d | 0d | 网络管理员 | 4h |
| 305 | 1.3.14.1.4.2.7.7 | 添加 DNS 记录 | 4h | 2004-04-21 | 2004-04-21 | 304 | 65.75d | 0d | 网络管理员 | 4h |
| 306 | 1.3.14.1.4.2.7.8 | 启用/禁用动态更新 | 4h | 2004-04-21 | 2004-04-22 | 305 | 65.75d | 0d | 网络管理员 | 4h |
| 307 | 1.3.14.1.4.2.7.9 | 测试 DNS 配置 | 4h | 2004-04-22 | 2004-04-22 | 306 | 65.75d |  | 网络管理员; 测试/质保负责人 | 8h |
| 308 | 1.3.14.1.4.2.8 | **配置 DHCP 服务器** | 4.5d | 2004-04-16 | 2004-04-22 |  | 65.75d |  |  | 36h |
| 309 | 1.3.14.1.4.2.8.1 | 在 DHCP 服务器上配置 TCP/IP 属性 | 4h | 2004-04-16 | 2004-04-16 |  | 65.75d | 0d | 网络管理员 | 4h |
| 310 | 1.3.14.1.4.2.8.2 | 安装 DHCP 服务器 | 4h | 2004-04-16 | 2004-04-19 | 309 | 65.75d | 0d | 网络管理员 | 4h |
| 311 | 1.3.14.1.4.2.8.3 | 授权 Active Directory 中的 DHCP 服务器 | 4h | 2004-04-19 | 2004-04-19 | 310 | 65.75d | 0d | 网络管理员 | 4h |
| 312 | 1.3.14.1.4.2.8.4 | 为 DHCP 服务器设置 DNS 动态更新策略 | 4h | 2004-04-19 | 2004-04-20 | 311 | 65.75d | 0d | 网络管理员 | 4h |
| 313 | 1.3.14.1.4.2.8.5 | 创建范围 | 4h | 2004-04-20 | 2004-04-20 | 312 | 65.75d | 0d | 网络管理员 | 4h |
| 314 | 1.3.14.1.4.2.8.6 | 为范围添加保留项 | 4h | 2004-04-20 | 2004-04-21 | 313 | 65.75d | 0d | 网络管理员 | 4h |
| 315 | 1.3.14.1.4.2.8.7 | 创建排除范围 | 4h | 2004-04-21 | 2004-04-21 | 314 | 65.75d | 0d | 网络管理员 | 4h |
| 316 | 1.3.14.1.4.2.8.8 | 激活范围 | 4h | 2004-04-21 | 2004-04-22 | 315 | 65.75d | 0d | 网络管理员 | 4h |
| 317 | 1.3.14.1.4.2.8.9 | 根据需要配置 DHCP 群集 | 4h | 2004-04-22 | 2004-04-22 | 316 | 65.75d |  | 网络管理员 | 4h |

| ID | WBS | Task | Type | Duration | Start | Finish | Predecessors | Total slack | Free slack | Resources | Work |
| --- | --- | --- | --- | --- | --- | --- | --- | --- | --- | --- | --- |
| 318 | 1.3.14.1.4.2.9 | **配置流式媒体服务器** |  | 2d | 2004-04-16 | 2004-04-20 |  | 68.25d |  |  | 32h |
| 319 | 1.3.14.1.4.2.9.1 | 安装 Microsoft Windows 流式媒体服务 |  | 4h | 2004-04-16 | 2004-04-16 |  | 68.25d | 0d | Intranet/Internet 管理员; 网络管理员 | 8h |
| 320 | 1.3.14.1.4.2.9.2 | 解决端口冲突问题 |  | 4h | 2004-04-16 | 2004-04-19 | 319 | 68.25d | 0d | Intranet/Internet 管理员; 网络管理员 | 8h |
| 321 | 1.3.14.1.4.2.9.3 | 启用 Windows 音频服务 |  | 4h | 2004-04-19 | 2004-04-19 | 320 | 68.25d | 0d | Intranet/Internet 管理员; 网络管理员 | 8h |
| 322 | 1.3.14.1.4.2.9.4 | 实施缓存/代理系统 |  | 4h | 2004-04-19 | 2004-04-20 | 321 | 68.25d |  | Intranet/Internet 管理员; 网络管理员 | 8h |
| 323 | 1.3.14.1.4.2.10 | **配置 WINS 服务器** |  | 2.5d | 2004-04-16 | 2004-04-20 |  | 67.75d |  |  | 20h |
| 324 | 1.3.14.1.4.2.10.1 | 配置静态 IP 地址 |  | 4h | 2004-04-16 | 2004-04-16 |  | 67.75d | 0d | 网络管理员 | 4h |
| 325 | 1.3.14.1.4.2.10.2 | 安装 WINS |  | 4h | 2004-04-16 | 2004-04-19 | 324 | 67.75d | 0d | 网络管理员 | 4h |
| 326 | 1.3.14.1.4.2.10.3 | 查看在此服务器上注册的 WINS 名称记录 |  | 4h | 2004-04-19 | 2004-04-19 | 325 | 67.75d | 0d | 网络管理员 | 4h |
| 327 | 1.3.14.1.4.2.10.4 | 修改 WINS 默认设置 |  | 4h | 2004-04-19 | 2004-04-20 | 326 | 67.75d | 0d | 网络管理员 | 4h |
| 328 | 1.3.14.1.4.2.10.5 | 在主要和次要 WINS 服务器上配置重复设置 |  | 4h | 2004-04-20 | 2004-04-20 | 327 | 67.75d |  | 网络管理员 | 4h |
| 329 | 1.3.14.1.4.3 | 配置混合环境 |  | 1d | 2004-04-16 | 2004-04-19 |  | 69.25d |  | 网络管理员 | 8h |
| 330 | 1.3.14.1.4.4 | 配置客户端计算机配置 |  | 2d | 2004-04-16 | 2004-04-20 |  | 68.25d |  | 台式计算机管理员 | 16h |
| 331 | 1.3.14.1.4.5 | 配置网络拓扑和协议 |  | 2d | 2004-04-16 | 2004-04-20 |  | 68.25d |  | 基础结构管理员; 网络管理员 | 32h |
| 332 | 1.3.14.1.4.6 | 配置远程连接性 |  | 1d | 2004-04-16 | 2004-04-19 |  | 69.25d |  | Intranet/Internet 管理员; 网络管理员 | 16h |
| 333 | 1.3.14.1.4.7 | 配置与其他操作系统(例如，UNIX、大型机)的互操作性 |  | 3d | 2004-04-16 | 2004-04-21 |  | 67.25d |  | 基础结构管理员; 网络管理员 | 48h |
| 334 | 1.3.14.1.4.8 | 配置管理工具 |  | 1d | 2004-04-16 | 2004-04-19 |  | 69.25d |  | 网络管理员 | 8h |
| 335 | 1.3.14.1.4.9 | 配置容错技术 |  | 2d | 2004-04-16 | 2004-04-20 |  | 68.25d |  | 网络管理员 | 16h |
| 336 | 1.3.14.1.5 | 完成 POC 准备 | milestone | 0d | 2004-04-13 | 2004-04-13 |  | 0d |  |  |  |
| 337 | 1.3.14.2 | **部署到 POC 实验室计算机的开发解决方案** |  | 20d | 2004-04-13 | 2004-05-11 |  | 0d |  |  | 240h |
| 338 | 1.3.14.2.1 | 执行测试来测试计划说明 |  | 2d | 2004-04-13 | 2004-04-15 | 336 | 0d |  | 测试/质保负责人 | 16h |
| 339 | 1.3.14.2.2 | 分析结果 |  | 4d | 2004-04-15 | 2004-04-21 | 338 | 0d |  | 测试/质保负责人 | 32h |
| 340 | 1.3.14.2.3 | **解决问题** |  | 14d | 2004-04-21 | 2004-05-11 |  | 0d |  |  | 192h |
| 341 | 1.3.14.2.3.1 | **测试事例问题** |  | 14d | 2004-04-21 | 2004-05-11 |  | 53.25d |  |  | 112h |
| 342 | 1.3.14.2.3.1.1 | 在 POC 跟踪系统中记录 |  | 3d | 2004-04-21 | 2004-04-26 | 339 | 53.25d | 0d | 测试/质保负责人 | 24h |
| 343 | 1.3.14.2.3.1.2 | 修订测试事例 |  | 3d | 2004-04-26 | 2004-04-29 | 342 | 53.25d | 0d | 测试/质保负责人 | 24h |
| 344 | 1.3.14.2.3.1.3 | 重新运行测试 |  | 3d | 2004-04-29 | 2004-05-04 | 343 | 53.25d | 0d | 测试/质保负责人 | 24h |
| 345 | 1.3.14.2.3.1.4 | 记录结果/更改 |  | 5d | 2004-05-04 | 2004-05-11 | 344 | 53.25d |  | 测试/质保负责人 | 40h |

| ID | WBS | Task | Type | Duration | Start | Finish | Predecessors | Total slack | Free slack | Resources | Work |
| --- | --- | --- | --- | --- | --- | --- | --- | --- | --- | --- | --- |
| 346 | 1.3.14.2.3.2 | **实验室设置问题** |  | 6d | 2004-04-21 | 2004-04-29 |  | 61.25d |  |  | 48h |
| 347 | 1.3.14.2.3.2.1 | 在 POC 跟踪系统中记录 |  | 1d | 2004-04-21 | 2004-04-22 | 339 | 61.25d | 0d | 测试/质保负责人 | 8h |
| 348 | 1.3.14.2.3.2.2 | 跟踪实验室更改控制过程 |  | 1d | 2004-04-22 | 2004-04-23 | 347 | 61.25d | 0d | 测试/质保负责人 | 8h |
| 349 | 1.3.14.2.3.2.3 | 重新配置实验室 |  | 1d | 2004-04-23 | 2004-04-26 | 348 | 61.25d | 0d | 测试/质保负责人 | 8h |
| 350 | 1.3.14.2.3.2.4 | 重新运行测试 |  | 1d | 2004-04-26 | 2004-04-27 | 349 | 61.25d | 0d | 测试/质保负责人 | 8h |
| 351 | 1.3.14.2.3.2.5 | 记录结果/更改 |  | 2d | 2004-04-27 | 2004-04-29 | 350 | 61.25d |  | 测试/质保负责人 | 16h |
| 352 | 1.3.14.2.3.3 | **开发/设计问题** |  | 4d | 2004-04-21 | 2004-04-27 |  | 0d |  |  | 32h |
| 353 | 1.3.14.2.3.3.1 | 在 POC 跟踪系统中记录 |  | 1d | 2004-04-21 | 2004-04-22 | 339 | 0d |  | 测试/质保负责人 | 8h |
| 354 | 1.3.14.2.3.3.2 | 增加开发/设计问题 |  | 1d | 2004-04-22 | 2004-04-23 | 353 | 0d |  | 测试/质保负责人 | 8h |
| 355 | 1.3.14.2.3.3.3 | 区分优先次序/风险分析 |  | 1d | 2004-04-23 | 2004-04-26 | 354 | 0d |  | 测试/质保负责人 | 8h |
| 356 | 1.3.14.2.3.3.4 | 跟踪解决方案 |  | 1d | 2004-04-26 | 2004-04-27 | 355 | 0d |  | 测试/质保负责人 | 8h |
| 357 | 1.3.14.3 | **执行整套的风险评估** |  | 7d | 2004-04-27 | 2004-05-06 | 356 | 0d |  |  | 280h |
| 358 | 1.3.14.3.1 | 记录经验教训 |  | 3d | 2004-04-27 | 2004-04-30 |  | 0d |  | 项目经理; 基础结构管理员; 部署管理员; 网络管理员; 测试/质保负责人 | 120h |
| 359 | 1.3.14.3.2 | 记录修改 |  | 2d | 2004-04-30 | 2004-05-04 | 358 | 0d |  | 项目经理; 基础结构管理员; 部署管理员; 网络管理员; 测试/质保负责人 | 80h |
| 360 | 1.3.14.3.3 | 准备好以继续进行试生产 |  | 2d | 2004-05-04 | 2004-05-06 | 359 | 0d |  | 项目经理; 基础结构管理员; 部署管理员; 网络管理员; 测试/质保负责人 | 80h |
| 361 | 1.3.14.4 | 完成 POC | milestone | 0d | 2004-05-06 | 2004-05-06 | 357 | 0d |  |  |  |
| 362 | 1.3.15 | **试生产部署** |  | 35.38d | 2004-05-06 | 2004-06-24 | 361 | 0d |  |  | 1667h |
| 363 | 1.3.15.1 | **完成试生产规划** |  | 24d | 2004-05-06 | 2004-06-09 |  | 0d |  |  | 504h |
| 364 | 1.3.15.1.1 | 确定试生产范围和目标 |  | 4d | 2004-05-06 | 2004-05-12 | 361 | 0d |  | 项目经理 | 32h |
| 365 | 1.3.15.1.2 | 确定试生产组/个体/资源/设备 |  | 2d | 2004-05-12 | 2004-05-14 | 364 | 11d | 0d | 项目经理 | 16h |
| 366 | 1.3.15.1.3 | 记录资源和任务 |  | 2d | 2004-05-14 | 2004-05-18 | 365, 364 | 11d | 0d | 项目经理 | 16h |
| 367 | 1.3.15.1.4 | 制定用户团体的通讯材料(例如，FAQ、网站、电子邮件) |  | 5d | 2004-05-18 | 2004-05-25 | 364, 366 | 11d |  | 项目经理 | 40h |
| 368 | 1.3.15.1.5 | 制定用户支持计划 |  | 3d | 2004-05-12 | 2004-05-17 | 364 | 17d |  | 项目经理; 用户教育/培训负责人 | 48h |
| 369 | 1.3.15.1.6 | 制定培训计划 |  | 4d | 2004-05-12 | 2004-05-18 | 364 | 16d |  | 项目经理; 用户教育/培训负责人 | 64h |
| 370 | 1.3.15.1.7 | 确保 POC 实验室稳定 |  | 2d | 2004-05-12 | 2004-05-14 | 364 | 0d |  | 项目经理; 测试/质保负责人 | 32h |

Notes:
- 362: 完成功能设计和开发并且彻底地测试功能配置后，您就可以处理试生产项目。 / 在保持计划时间财政预算的同时，跟踪部署问题和有效地解决它们对于到达部署目标是至关重要的。 / 部署工作组应该设置若干临时交付里程碑，每个里程碑都涉及到解决方案制定、测试、根据预定性能标准验证以及重新设计。 / 试生产项目开始运行并稳定后，赞助商和部署工作组就可以评估新的 Windows Server 2003 基础结构的功能并验证产品首展以及支持规划是否都是正常的。主要的里程碑和部署文档可能包含以下内容: / - 完成技术验证 / - 完善而稳定的功能说明 / - 完成 POC / - 完成试生产测试 / - 完成试生产 / - 更新的风险管理计划 / 其他可能要制定的部署文档包括如下内容: / - 培训计划 / - 支持或技术支持计划 / - 操作转换计划

| ID | WBS | Task | Duration | Start | Finish | Predecessors | Total slack | Free slack | Resources | Work |
| --- | --- | --- | --- | --- | --- | --- | --- | --- | --- | --- |
| 371 | 1.3.15.1.8 | **制定首展过程** | 14d | 2004-05-14 | 2004-06-03 |  | 0d |  |  | 192h |
| 372 | 1.3.15.1.8.1 | 确定安装程序需要的工具和供给 | 2d | 2004-05-14 | 2004-05-18 | 370 | 16d |  | 部署管理员 | 16h |
| 373 | 1.3.15.1.8.2 | 确定脚本列表及其位置 | 3d | 2004-05-14 | 2004-05-19 | 370 | 15d |  | 部署管理员 | 24h |
| 374 | 1.3.15.1.8.3 | 确定备份应先于/或在配置过程中进行 | 1d | 2004-05-14 | 2004-05-17 | 370 | 0d |  | 部署管理员; 网络管理员 | 16h |
| 375 | 1.3.15.1.8.4 | 记录迁移到新域结构的步骤 | 3d | 2004-05-17 | 2004-05-20 | 374 | 0d |  | 部署管理员 | 24h |
| 376 | 1.3.15.1.8.5 | 记录执行手动和自动进行计算机升级的步骤 | 2d | 2004-05-20 | 2004-05-24 | 375 | 0d |  | 部署管理员; 台式计算机管理员 | 32h |
| 377 | 1.3.15.1.8.6 | 记录安装程序接受测试 | 2d | 2004-05-24 | 2004-05-26 | 376 | 0d |  | 部署管理员; 测试/质保负责人 | 32h |
| 378 | 1.3.15.1.8.7 | 记录安装程序和管理员要执行的操作过程(重设权限、更改密码等) | 3d | 2004-05-26 | 2004-05-31 | 377 | 0d |  | 部署管理员 | 24h |
| 379 | 1.3.15.1.8.8 | 记录如果试生产失败，返回的步骤 | 3d | 2004-05-31 | 2004-06-03 | 378 | 0d |  | 部署管理员 | 24h |
| 380 | 1.3.15.1.9 | 确定已知的风险以及这些风险的突发计划 | 2d | 2004-06-03 | 2004-06-07 | 379 | 0d |  | 项目经理; 部署管理员 | 32h |
| 381 | 1.3.15.1.10 | 制定回滚计划 | 2d | 2004-06-07 | 2004-06-09 | 380 | 0d |  | 项目经理; 部署管理员 | 32h |
| 382 | 1.3.15.2 | **完成试生产部署** | 12d | 2004-05-06 | 2004-05-24 |  | 12d |  |  | 164h |
| 383 | 1.3.15.2.1 | 与试生产用户通信 | 4h | 2004-05-06 | 2004-05-06 |  | 16.5d | 4.5d | 用户教育/培训负责人 | 4h |
| 384 | 1.3.15.2.2 | 处理用户培训 | 5d | 2004-05-06 | 2004-05-13 |  | 12d | 0d | 用户教育/培训负责人 | 40h |
| 385 | 1.3.15.2.3 | 确保支持组织准备就绪 | 4d | 2004-05-06 | 2004-05-12 |  | 13d | 1d | 项目经理; 用户教育/培训负责人 | 64h |
| 386 | 1.3.15.2.4 | 准备试生产场地 | 2d | 2004-05-13 | 2004-05-17 | 385, 384, 383 | 12d | 0d | 部署管理员 | 16h |
| 387 | 1.3.15.2.5 | 部署首展过程 | 5d | 2004-05-17 | 2004-05-24 | 386 | 12d |  | 部署管理员 | 40h |
| 388 | 1.3.15.3 | **评估试生产** | 8d | 2004-05-06 | 2004-05-18 |  | 16d |  |  | 296h |
| 389 | 1.3.15.3.1 | 处理台式计算机测试方案 | 5d | 2004-05-06 | 2004-05-13 |  | 16d | 0d | 测试/质保负责人 | 40h |
| 390 | 1.3.15.3.2 | 处理服务器测试方案 | 5d | 2004-05-06 | 2004-05-13 |  | 16d | 0d | 测试/质保负责人 | 40h |
| 391 | 1.3.15.3.3 | 处理第三方应用程序测试方案 | 5d | 2004-05-06 | 2004-05-13 |  | 16d | 0d | 测试/质保负责人 | 40h |
| 392 | 1.3.15.3.4 | 处理自定义应用程序测试方案 | 5d | 2004-05-06 | 2004-05-13 |  | 16d | 0d | 测试/质保负责人 | 40h |
| 393 | 1.3.15.3.5 | 处理共存测试方案 | 5d | 2004-05-06 | 2004-05-13 |  | 16d | 0d | 测试/质保负责人 | 40h |
| 394 | 1.3.15.3.6 | 确定范围更改 | 12h | 2004-05-13 | 2004-05-14 | 393, 392, 391, 390, 389 | 17.5d |  | 项目经理; 测试/质保负责人 | 24h |
| 395 | 1.3.15.3.7 | 确定成本因素 | 1d | 2004-05-13 | 2004-05-14 | 393, 392, 391, 390, 389 | 18d |  | 项目经理; 测试/质保负责人 | 16h |
| 396 | 1.3.15.3.8 | 确定互操作性问题 | 3d | 2004-05-13 | 2004-05-18 | 393, 392, 391, 390, 389 | 16d |  | 测试/质保负责人 | 24h |
| 397 | 1.3.15.3.9 | 使用应用程序兼容性模式进行评估以解决应用程序问题 | 1d | 2004-05-13 | 2004-05-14 | 393, 392, 391, 390, 389 | 18d |  | 基础结构管理员; 部署管理员 | 16h |
| 398 | 1.3.15.3.10 | 确定未预料到的停工期 | 2d | 2004-05-13 | 2004-05-17 | 393, 392, 391, 390, 389 | 17d |  | 测试/质保负责人 | 16h |

| ID | WBS | Task | Type | Duration | Start | Finish | Predecessors | Total slack | Free slack | Resources | Work |
| --- | --- | --- | --- | --- | --- | --- | --- | --- | --- | --- | --- |
| 399 | 1.3.15.4 | **试生产后评估** |  | 11.38d | 2004-06-09 | 2004-06-24 | 363, 388, 382 | 0d |  |  | 703h |
| 400 | 1.3.15.4.1 | 获得用户反馈 |  | 5d | 2004-06-09 | 2004-06-16 |  | 0d |  | 用户教育/培训负责人 | 40h |
| 401 | 1.3.15.4.2 | 评估经验教训 |  | 17h | 2004-06-16 | 2004-06-18 | 400 | 0d |  | 项目经理; 基础结构管理员; 部署管理员; 台式计算机管理员; Intranet/Internet 管理员; 数据库服务器管理员; 浏览器管理员; 信息管理员; 网络管理员; 测试/质保负责人; 用户教育/培训负责人; 后勤管理负责人; 风险承担者 | 221h |
| 402 | 1.3.15.4.3 | 根据需要修改项目 |  | 17h | 2004-06-18 | 2004-06-22 | 401 | 0d |  | 项目经理; 基础结构管理员; 部署管理员; 台式计算机管理员; Intranet/Internet 管理员; 数据库服务器管理员; 浏览器管理员; 信息管理员; 网络管理员; 测试/质保负责人; 用户教育/培训负责人; 后勤管理负责人; 风险承担者 | 221h |
| 403 | 1.3.15.4.4 | 记录下面步骤的建议 |  | 17h | 2004-06-22 | 2004-06-24 | 402 | 0d |  | 项目经理; 基础结构管理员; 部署管理员; 台式计算机管理员; Intranet/Internet 管理员; 数据库服务器管理员; 浏览器管理员; 信息管理员; 网络管理员; 测试/质保负责人; 用户教育/培训负责人; 后勤管理负责人; 风险承担者 | 221h |
| 404 | 1.3.15.5 | 完成试生产部署 | milestone | 0d | 2004-06-24 | 2004-06-24 | 399 | 0d |  |  |  |
| 405 | 1.3.16 | **生产部署** |  | 11d | 2004-06-24 | 2004-07-09 | 404 | 0d |  |  | 704h |
| 406 | 1.3.16.1 | **传达部署信息** |  | 2.5d | 2004-06-24 | 2004-06-29 |  | 18.38d |  |  | 20h |
| 407 | 1.3.16.1.1 | 检查通讯策略文档 |  | 2d | 2004-06-24 | 2004-06-28 | 404 | 18.38d | 0d | 用户教育/培训负责人 | 16h |
| 408 | 1.3.16.1.2 | 启动通讯 |  | 4h | 2004-06-28 | 2004-06-29 | 407 | 18.38d |  | 用户教育/培训负责人 | 4h |
| 409 | 1.3.16.2 | **教育和培训用户** |  | 11d | 2004-06-24 | 2004-07-09 |  | 9.88d |  |  | 88h |
| 410 | 1.3.16.2.1 | 检查教育/培训策略文档 |  | 1d | 2004-06-24 | 2004-06-25 |  | 9.88d | 0d | 用户教育/培训负责人 | 8h |
| 411 | 1.3.16.2.2 | 处理管理培训 |  | 5d | 2004-06-25 | 2004-07-02 | 410 | 9.88d | 0d | 用户教育/培训负责人 | 40h |
| 412 | 1.3.16.2.3 | 处理用户培训 |  | 5d | 2004-07-02 | 2004-07-09 | 411 | 9.88d |  | 用户教育/培训负责人 | 40h |
| 413 | 1.3.16.3 | 完成 Active Directory 首展和域迁移(使用“Active Directory 部署”模板) |  | 5d | 2004-06-24 | 2004-07-01 |  | 15.88d |  | 网络管理员 | 40h |
| 414 | 1.3.16.4 | **实施安全基础结构** |  | 4d | 2004-06-24 | 2004-06-30 |  | 16.88d |  |  | 32h |
| 415 | 1.3.16.4.1 | 检查安全策略和标准文档 |  | 4h | 2004-06-24 | 2004-06-25 |  | 16.88d | 0d | 基础结构管理员 | 4h |
| 416 | 1.3.16.4.2 | 创建安全的边界 |  | 1d | 2004-06-25 | 2004-06-28 | 415 | 16.88d | 0d | 基础结构管理员 | 8h |
| 417 | 1.3.16.4.3 | 部署用于每个人的策略 |  | 4h | 2004-06-28 | 2004-06-28 | 416 | 16.88d | 0d | 基础结构管理员 | 4h |
| 418 | 1.3.16.4.4 | 部署特定于工司员工的策略 |  | 4h | 2004-06-28 | 2004-06-29 | 417 | 16.88d | 0d | 基础结构管理员 | 4h |
| 419 | 1.3.16.4.5 | 部署特定于公司应用程序用户的策略 |  | 4h | 2004-06-29 | 2004-06-29 | 418 | 16.88d | 0d | 基础结构管理员 | 4h |
| 420 | 1.3.16.4.6 | 部署特定于合作伙伴的策略 |  | 1d | 2004-06-29 | 2004-06-30 | 419 | 16.88d |  | 基础结构管理员 | 8h |
| 421 | 1.3.16.5 | **实施公钥基础结构** |  | 10d | 2004-06-24 | 2004-07-08 |  | 10.88d |  |  | 240h |
| 422 | 1.3.16.5.1 | 查看公钥策略和标准文档 |  | 1d | 2004-06-24 | 2004-06-25 |  | 10.88d | 0d | 基础结构管理员; Intranet/Internet 管理员; 网络管理员 | 24h |
| 423 | 1.3.16.5.2 | 为产品用户提供培训和支持 |  | 5d | 2004-06-25 | 2004-07-02 | 422 | 10.88d | 0d | 基础结构管理员; Intranet/Internet 管理员; 网络管理员 | 120h |
| 424 | 1.3.16.5.3 | 安装 CA |  | 4h | 2004-07-02 | 2004-07-05 | 423 | 10.88d | 0d | 基础结构管理员; Intranet/Internet 管理员; 网络管理员 | 12h |
| 425 | 1.3.16.5.4 | 安装/配置支持系统或应用程序 |  | 4h | 2004-07-05 | 2004-07-05 | 424 | 10.88d | 0d | 基础结构管理员; Intranet/Internet 管理员; 网络管理员 | 12h |
| 426 | 1.3.16.5.5 | 配置要使用的证书 |  | 4h | 2004-07-05 | 2004-07-06 | 425 | 10.88d | 0d | 基础结构管理员; Intranet/Internet 管理员; 网络管理员 | 12h |
| 427 | 1.3.16.5.6 | 配置证书吊销列表发行 |  | 4h | 2004-07-06 | 2004-07-06 | 426 | 10.88d | 0d | 基础结构管理员; Intranet/Internet 管理员; 网络管理员 | 12h |
| 428 | 1.3.16.5.7 | 配置公钥组策略 |  | 4h | 2004-07-06 | 2004-07-07 | 427 | 10.88d | 0d | 基础结构管理员; Intranet/Internet 管理员; 网络管理员 | 12h |
| 429 | 1.3.16.5.8 | 配置证书重新申请和登记 |  | 4h | 2004-07-07 | 2004-07-07 | 428 | 10.88d | 0d | 基础结构管理员; Intranet/Internet 管理员; 网络管理员 | 12h |
| 430 | 1.3.16.5.9 | 将证书颁发给用户、计算机和服务 |  | 1d | 2004-07-07 | 2004-07-08 | 429 | 10.88d |  | 基础结构管理员; Intranet/Internet 管理员; 网络管理员 | 24h |

Notes:
- 399: 在试生产结束时，评估其是否成功并提出后续步骤建议给管理部门。然后由管理部门决定是否超越试生产继续进行项目。若要帮助您评估并提出建议，请分析各种源中的信息。 / 如果选择继续部署，建议您维护独立于产品系统的试生产环境。这将允许您测试更改、服务包等而无需重建环境。
- 405: 在此处，您已在实验室中测试了所有设计，并制定试生产计划来改进计划并进一步测试您的设计。现在您可以逐渐地为您的整个企业部署 Microsoft Windows Server 2003。 / 在产品首展阶段，当部署、测试、验证和支持的反复循环成为主要焦点时，测试和支持活动仍然是重要的。 / 在部署完成里程碑阶段，新的 Microsoft Windows Server 2003 基础结构正式移交给操作和支持组。此时应进行项目检查。

| ID | WBS | Task | Type | Duration | Start | Finish | Predecessors | Total slack | Free slack | Resources | Work |
| --- | --- | --- | --- | --- | --- | --- | --- | --- | --- | --- | --- |
| 431 | 1.3.16.6 | **高可用性应用程序/服务(群集)** |  | 6.5d | 2004-06-24 | 2004-07-05 |  | 14.38d |  |  | 156h |
| 432 | 1.3.16.6.1 | 检查高可用性应用程序/服务(群集)文档 |  | 1d | 2004-06-24 | 2004-06-25 |  | 14.38d | 0d | 基础结构管理员; Intranet/Internet 管理员; 网络管理员 | 24h |
| 433 | 1.3.16.6.2 | 优化 Microsoft Windows Server 2003 群集服务 |  | 1d | 2004-06-25 | 2004-06-28 | 432 | 14.38d | 0d | 基础结构管理员; Intranet/Internet 管理员; 网络管理员 | 24h |
| 434 | 1.3.16.6.3 | 选择有助于您自动部署 Microsoft Windows Server 2003 群集服务的工具 |  | 4h | 2004-06-28 | 2004-06-29 | 433 | 14.38d | 0d | 基础结构管理员; Intranet/Internet 管理员; 网络管理员 | 12h |
| 435 | 1.3.16.6.4 | 优化群集 |  | 1d | 2004-06-29 | 2004-06-30 | 434 | 14.38d | 0d | 基础结构管理员; Intranet/Internet 管理员; 网络管理员 | 24h |
| 436 | 1.3.16.6.5 | 容错磁盘计划 |  | 1d | 2004-06-30 | 2004-07-01 | 435 | 14.38d | 0d | 基础结构管理员; Intranet/Internet 管理员; 网络管理员 | 24h |
| 437 | 1.3.16.6.6 | 测试服务器容量 |  | 1d | 2004-07-01 | 2004-07-02 | 436 | 14.38d | 0d | 基础结构管理员; Intranet/Internet 管理员; 网络管理员 | 24h |
| 438 | 1.3.16.6.7 | 计划备份和恢复策略 |  | 1d | 2004-07-02 | 2004-07-05 | 437 | 14.38d |  | 基础结构管理员; Intranet/Internet 管理员; 网络管理员 | 24h |
| 439 | 1.3.16.7 | **实施存储管理策略** |  | 8.5d | 2004-06-24 | 2004-07-07 |  | 0d |  |  | 128h |
| 440 | 1.3.16.7.1 | 检查存储管理策略和标准文档 |  | 1d | 2004-06-24 | 2004-06-25 |  | 0d |  | 基础结构管理员; 网络管理员 | 16h |
| 441 | 1.3.16.7.2 | 检查存储的商务要求 |  | 4h | 2004-06-25 | 2004-06-28 | 440 | 0d |  | 基础结构管理员; 网络管理员 | 8h |
| 442 | 1.3.16.7.3 | 设计存储管理解决方案 |  | 2d | 2004-06-28 | 2004-06-30 | 441 | 0d |  | 基础结构管理员; 网络管理员 | 32h |
| 443 | 1.3.16.7.4 | 设计存储实用程序(备份、恢复、碎片整理) |  | 1d | 2004-06-30 | 2004-07-01 | 442 | 0d |  | 基础结构管理员; 网络管理员 | 16h |
| 444 | 1.3.16.7.5 | 设计灾难故障恢复计划 |  | 2d | 2004-07-01 | 2004-07-05 | 443 | 0d |  | 基础结构管理员; 网络管理员 | 32h |
| 445 | 1.3.16.7.6 | 记录存储管理策略和标准 |  | 1d | 2004-07-05 | 2004-07-06 | 444 | 0d |  | 基础结构管理员; 网络管理员 | 16h |
| 446 | 1.3.16.7.7 | 切换到本机模式 |  | 1d | 2004-07-06 | 2004-07-07 | 445 | 0d |  | 网络管理员 | 8h |
| 447 | 1.3.16.8 | 完成生产部署 | milestone | 0d | 2004-07-07 | 2004-07-07 | 446 | 0d |  |  |  |
| 448 | 1.3.17 | 完成部署 | milestone | 0d | 2004-07-09 | 2004-07-09 | 405 | 9.88d |  |  |  |
| 449 | 1.4 | **实施后检查** |  | 12.38d | 2004-07-07 | 2004-07-23 |  | 0d |  |  | 727h |
| 450 | 1.4.1 | 获得用户反馈 |  | 5d | 2004-07-07 | 2004-07-14 | 447 | 0d |  | 用户教育/培训负责人 | 40h |
| 451 | 1.4.2 | 评估经验教训 |  | 34h | 2004-07-14 | 2004-07-20 | 450 | 0d |  | 项目经理; 基础结构管理员; 部署管理员; 台式计算机管理员; Intranet/Internet 管理员; 数据库服务器管理员; 浏览器管理员; 信息管理员; 网络管理员; 测试/质保负责人; 用户教育/培训负责人; 后勤管理负责人; 风险承担者 | 442h |
| 452 | 1.4.3 | 根据需要修改项目 |  | 17h | 2004-07-20 | 2004-07-22 | 451 | 0d |  | 项目经理; 基础结构管理员; 部署管理员; 台式计算机管理员; Intranet/Internet 管理员; 数据库服务器管理员; 浏览器管理员; 信息管理员; 网络管理员; 测试/质保负责人; 用户教育/培训负责人; 后勤管理负责人; 风险承担者 | 221h |
| 453 | 1.4.4 | 建立将来的基础机构规划工作组 |  | 1d | 2004-07-22 | 2004-07-23 | 452 | 0d |  | 项目经理; 基础结构管理员; 风险承担者 | 24h |
| 454 | 1.4.5 | 完成实施后检查 | milestone | 0d | 2004-07-23 | 2004-07-23 | 453 | 0d |  |  |  |
| 455 | 1.5 | 完成 Microsoft Windows Server 2003 部署 | milestone | 0d | 2004-07-23 | 2004-07-23 | 454 | 0d |  |  |  |

Notes:
- 449: 这是项目的最后阶段。在此阶段，您可以检查项目并记录学到的经验教训，以便为将来部署项目或执行后指令奠定基础。
- 453: 应该建立由不同部署资源组成的 Windows Server 2003 规划小组，以便推荐将来的应用程序开发、维护、服务版本和将来的版本。
