# Microsoft Windows SharePoint Services 部署

Schedule from MS Project, 2003-09-15 to 2004-04-27.

## Calendars

- 标准: Mon-Fri 08:00-12:00, 13:00-17:00; Sat-Sun off.

## Resources

| Resource |
| --- |
| 数据库管理员 |
| 网络管理员 |
| 项目经理 |
| IT 支持人员 |
| 服务器管理员 |
| 系统设计师 |
| 台式计算机支持 |
| 应用程序部署 |
| 工作组成员 |
| 风险承担者 |
| 测试/QA |
| 项目经理 |
| 用户教育/培训 |

## Schedule

| ID | WBS | Task | Type | Duration | Start | Finish | Predecessors | Total slack | Resources | Work |
| --- | --- | --- | --- | --- | --- | --- | --- | --- | --- | --- |
| 1 | 1 | **Microsoft Windows SharePoint Services 部署** |  | 161.5d | 2003-09-15 | 2004-04-27 |  | 0d |  | 3158.4h |
| 2 | 1.1 | **构想** |  | 10d | 2003-09-15 | 2003-09-26 |  | 0d |  | 80h |
| 3 | 1.1.1 | 汇总当前工作组协作环境 |  | 2d | 2003-09-15 | 2003-09-16 |  | 0d | 风险承担者 | 16h |
| 4 | 1.1.2 | 确定工作组协作虚构关系(例如，跨国公司) |  | 2d | 2003-09-17 | 2003-09-18 | 3 | 0d | 风险承担者 | 16h |
| 5 | 1.1.3 | 确定项目范围(例如，早期的使用者、部门部署) |  | 3d | 2003-09-19 | 2003-09-23 | 4 | 0d | 风险承担者 | 24h |
| 6 | 1.1.4 | 确定主要里程碑 |  | 1d | 2003-09-24 | 2003-09-24 | 5 | 0d | 风险承担者 | 8h |
| 7 | 1.1.5 | 确保执行所需的赞助 |  | 2d | 2003-09-25 | 2003-09-26 | 6 | 0d | 风险承担者 | 16h |
| 8 | 1.1.6 | 完成构想 | milestone | 0d | 2003-09-26 | 2003-09-26 | 7 | 0d |  |  |
| 9 | 1.2 | **规划** |  | 30.5d | 2003-09-29 | 2003-11-10 | 2 | 0d |  | 1460h |
| 10 | 1.2.1 | **召集项目工作组/定义角色** |  | 0.5d | 2003-09-29 | 2003-09-29 |  | 0d |  | 84h |
| 11 | 1.2.1.1 | 确定项目经理 |  | 4h | 2003-09-29 | 2003-09-29 |  | 0d | 风险承担者 | 4h |
| 12 | 1.2.1.2 | 确定数据库管理员 |  | 4h | 2003-09-29 | 2003-09-29 |  | 0d | 项目经理; 风险承担者 | 8h |
| 13 | 1.2.1.3 | 确定网络管理员 FDSD |  | 4h | 2003-09-29 | 2003-09-29 |  | 0d | 项目经理; 风险承担者 | 8h |
| 14 | 1.2.1.4 | 确定 IT 支持员工 |  | 4h | 2003-09-29 | 2003-09-29 |  | 0d | 项目经理; 风险承担者 | 8h |
| 15 | 1.2.1.5 | 确定服务器管理员 |  | 4h | 2003-09-29 | 2003-09-29 |  | 0d | 项目经理; 风险承担者 | 8h |
| 16 | 1.2.1.6 | 确定系统设计师 |  | 4h | 2003-09-29 | 2003-09-29 |  | 0d | 项目经理; 风险承担者 | 8h |
| 17 | 1.2.1.7 | 确定台式计算机支持负责人 |  | 4h | 2003-09-29 | 2003-09-29 |  | 0d | 项目经理; 风险承担者 | 8h |
| 18 | 1.2.1.8 | 确定应用程序部署工作组 |  | 4h | 2003-09-29 | 2003-09-29 |  | 0d | 项目经理; 风险承担者 | 8h |
| 19 | 1.2.1.9 | 确定工作组成员 |  | 4h | 2003-09-29 | 2003-09-29 |  | 0d | 项目经理; 风险承担者 | 8h |
| 20 | 1.2.1.10 | 确定测试/QA 负责人 |  | 4h | 2003-09-29 | 2003-09-29 |  | 0d | 项目经理; 风险承担者 | 8h |
| 21 | 1.2.1.11 | 确定用户教育/培训负责人 |  | 4h | 2003-09-29 | 2003-09-29 |  | 0d | 项目经理; 风险承担者 | 8h |
| 22 | 1.2.1.12 | 完成召集项目工作组/定义角色 | milestone | 0d | 2003-09-29 | 2003-09-29 | 11, 12, 13, 14, 15, 16, 17, 18, 19, 20, 21 | 0d |  |  |
| 23 | 1.2.2 | **规划软件配置** |  | 8d | 2003-09-29 | 2003-10-09 | 10 | 0d |  | 112h |
| 24 | 1.2.2.1 | 确定设计目标 |  | 4d | 2003-09-29 | 2003-10-03 |  | 0d | 项目经理; 系统设计师 | 64h |
| 25 | 1.2.2.2 | 完成实施风险评估 |  | 2d | 2003-10-03 | 2003-10-07 | 24 | 0d | 项目经理 | 16h |
| 26 | 1.2.2.3 | 确定为满足目标而要安装的 Windows SharePoint Services 组件 |  | 2d | 2003-10-07 | 2003-10-09 | 25 | 0d | 项目经理; 工作组成员 | 32h |
| 27 | 1.2.2.4 | 完成规划软件配置 | milestone | 0d | 2003-10-09 | 2003-10-09 | 26 | 0d |  |  |

Notes:
- 1: 此模板旨在帮助确定和执行成功部署 Windows SharePoint Services 和从 Microsoft 的 SharePoint Team Services 进行迁移所需的任务。使用 http://www.microsoft.com/SharePoint 中的资源有助于获得关于此操作的详细信息。另外，您还可以调整其他模板中的资源，包括Microsoft Office SharePoint Portal Server v2.0 部署模板、Microsoft Windows 2003 Server 部署模板和Microsoft Office System 部署模板。 / 请参阅帮助获取有关此模板的各部分的更多信息。

| ID | WBS | Task | Type | Duration | Start | Finish | Predecessors | Total slack | Free slack | Resources | Work |
| --- | --- | --- | --- | --- | --- | --- | --- | --- | --- | --- | --- |
| 28 | 1.2.3 | **执行容量计划** |  | 9d | 2003-10-09 | 2003-10-22 | 23 | 0d |  |  | 152h |
| 29 | 1.2.3.1 | **确定用户的角色** |  | 1d | 2003-10-09 | 2003-10-10 |  | 0d |  |  | 32h |
| 30 | 1.2.3.1.1 | 确定读者 |  | 1d | 2003-10-09 | 2003-10-10 |  | 0d |  | 工作组成员 | 8h |
| 31 | 1.2.3.1.2 | 确定捐赠者 |  | 1d | 2003-10-09 | 2003-10-10 |  | 0d |  | 工作组成员 | 8h |
| 32 | 1.2.3.1.3 | 确定网站设计者 |  | 1d | 2003-10-09 | 2003-10-10 |  | 0d |  | 工作组成员 | 8h |
| 33 | 1.2.3.1.4 | 确定自定义角色 |  | 1d | 2003-10-09 | 2003-10-10 |  | 0d |  | 工作组成员 | 8h |
| 34 | 1.2.3.2 | 按每个角色确定用户数 |  | 1d | 2003-10-10 | 2003-10-13 | 29 | 0d |  | 工作组成员 | 8h |
| 35 | 1.2.3.3 | 按角色确定使用模式 |  | 1d | 2003-10-10 | 2003-10-13 | 29 | 0d |  | 工作组成员 | 8h |
| 36 | 1.2.3.4 | **通过角色分析确定所需服务器容量** |  | 7d | 2003-10-13 | 2003-10-22 | 29, 34, 35 | 0d |  |  | 104h |
| 37 | 1.2.3.4.1 | 确定服务器的体系结构(例如，单个框或网站场、单个数据库服务器或群集) |  | 3d | 2003-10-13 | 2003-10-16 |  | 0d |  | 系统设计师 | 24h |
| 38 | 1.2.3.4.2 | 制定体系结构图表 |  | 2d | 2003-10-16 | 2003-10-20 | 37 | 0d |  | 系统设计师 | 16h |
| 39 | 1.2.3.4.3 | 对 Web 服务器按大小排列 |  | 1d | 2003-10-20 | 2003-10-21 | 38 | 0d |  | 网络管理员; 系统设计师 | 16h |
| 40 | 1.2.3.4.4 | 对数据库服务器按大小排列 |  | 1d | 2003-10-20 | 2003-10-21 | 38 | 0d |  | 数据库管理员; 系统设计师 | 16h |
| 41 | 1.2.3.4.5 | 确定 Web 服务器数量 |  | 1d | 2003-10-21 | 2003-10-22 | 39 | 0d |  | 网络管理员; 系统设计师 | 16h |
| 42 | 1.2.3.4.6 | 确定数据库服务器数量 |  | 1d | 2003-10-21 | 2003-10-22 | 40 | 0d |  | 数据库管理员; 系统设计师 | 16h |
| 43 | 1.2.3.5 | 完成执行容量计划 | milestone | 0d | 2003-10-22 | 2003-10-22 | 36 | 0d |  |  |  |
| 44 | 1.2.4 | **定义培训策略** |  | 22d | 2003-10-09 | 2003-11-10 | 23 | 0d |  |  | 176h |
| 45 | 1.2.4.1 | 确定要培训的用户 |  | 2d | 2003-10-09 | 2003-10-13 |  | 0d |  | 用户教育/培训 | 16h |
| 46 | 1.2.4.2 | 制定培训文档 |  | 10d | 2003-10-13 | 2003-10-27 | 45 | 0d |  | 用户教育/培训 | 80h |
| 47 | 1.2.4.3 | 培训试生产工作组 |  | 10d | 2003-10-27 | 2003-11-10 | 46 | 0d |  | 用户教育/培训 | 80h |
| 48 | 1.2.4.4 | 完成定义培训策略 | milestone | 0d | 2003-11-10 | 2003-11-10 | 47 | 0d |  |  |  |
| 49 | 1.2.5 | **规划升级** |  | 12d | 2003-10-09 | 2003-10-27 | 23 | 10d |  |  | 184h |
| 50 | 1.2.5.1 | **确定共存策略** |  | 4d | 2003-10-09 | 2003-10-15 |  | 10d | 8d |  | 48h |
| 51 | 1.2.5.1.1 | 确定与应用程序的互操作性问题(SharePoint 技术版本、Microsoft Office System 程序版本、套件等) |  | 2d | 2003-10-09 | 2003-10-13 |  | 20d |  | 系统设计师 | 16h |
| 52 | 1.2.5.1.2 | 确定与合作伙伴的互操作性问题(SharePoint 技术版本、Microsoft Office System 程序版本、套件等) |  | 2d | 2003-10-09 | 2003-10-13 |  | 10d | 0d | 系统设计师 | 16h |
| 53 | 1.2.5.1.3 | 确定与第三方程序包的互操作性问题 |  | 2d | 2003-10-13 | 2003-10-15 | 52 | 10d | 0d | 系统设计师 | 16h |
| 54 | 1.2.5.1.4 | 完成确定共存策略 | milestone | 0d | 2003-10-15 | 2003-10-15 | 53 | 10d | 0d |  |  |

| ID | WBS | Task | Type | Duration | Start | Finish | Predecessors | Total slack | Free slack | Resources | Work |
| --- | --- | --- | --- | --- | --- | --- | --- | --- | --- | --- | --- |
| 55 | 1.2.5.2 | **确定迁移策略(如果当前使用 SharePoint Team Services)** |  | 8d | 2003-10-15 | 2003-10-27 |  | 10d | 0d |  | 136h |
| 56 | 1.2.5.2.1 | 制定用于 SharePoint Team Services 的文档迁移策略 |  | 3d | 2003-10-15 | 2003-10-20 | 54 | 10d | 0d | 系统设计师 | 24h |
| 57 | 1.2.5.2.2 | 确定用于主动文档迁移(大量转换)的 SharePoint Team Services 子网站 |  | 5d | 2003-10-20 | 2003-10-27 | 56 | 10d |  | 系统设计师; 工作组成员 | 80h |
| 58 | 1.2.5.2.3 | 确定用于 "as-used" 迁移的 SharePoint Team Services 子网站(要求 SharePoint Team Services 保留在单独的服务器上) |  | 1d | 2003-10-20 | 2003-10-21 | 56 | 14d |  | 系统设计师; 工作组成员 | 16h |
| 59 | 1.2.5.2.4 | 确定未迁移的 SharePoint Team Services 子网站 |  | 1d | 2003-10-20 | 2003-10-21 | 56 | 14d |  | 系统设计师; 工作组成员 | 16h |
| 60 | 1.2.5.3 | 完成规划升级 | milestone | 0d | 2003-10-27 | 2003-10-27 | 50, 55 | 10d |  |  |  |
| 61 | 1.2.6 | **定义基础结构** |  | 17d | 2003-10-09 | 2003-11-03 | 23 | 0d |  |  | 472h |
| 62 | 1.2.6.1 | **评估并升级网络** |  | 11.5d | 2003-10-09 | 2003-10-24 |  | 5.5d |  |  | 112h |
| 63 | 1.2.6.1.1 | **确定现有网络** |  | 1d | 2003-10-09 | 2003-10-10 |  | 8d |  |  | 48h |
| 64 | 1.2.6.1.1.1 | 图解并记录 LAN 连接 |  | 1d | 2003-10-09 | 2003-10-10 |  | 8d |  | 数据库管理员; 网络管理员 | 16h |
| 65 | 1.2.6.1.1.2 | 图解并记录 WAN 连接 |  | 1d | 2003-10-09 | 2003-10-10 |  | 8d |  | 数据库管理员; 网络管理员 | 16h |
| 66 | 1.2.6.1.1.3 | 图解并记录外部用户连接 |  | 1d | 2003-10-09 | 2003-10-10 |  | 8d |  | 数据库管理员; 网络管理员 | 16h |
| 67 | 1.2.6.1.2 | **处理网络升级** |  | 2.5d | 2003-10-22 | 2003-10-24 | 63, 28 | 5.5d |  |  | 64h |
| 68 | 1.2.6.1.2.1 | 根据需要添加其他带宽 |  | 12h | 2003-10-22 | 2003-10-23 |  | 6.5d |  | 数据库管理员; 网络管理员 | 24h |
| 69 | 1.2.6.1.2.2 | 根据需要配置 VPN 解决方案 |  | 20h | 2003-10-22 | 2003-10-24 |  | 5.5d |  | 数据库管理员; 网络管理员 | 40h |
| 70 | 1.2.6.2 | **记录硬件** |  | 8d | 2003-10-22 | 2003-11-03 | 63, 28 | 0d |  |  | 296h |
| 71 | 1.2.6.2.1 | **确定服务器环境** |  | 2d | 2003-10-22 | 2003-10-24 |  | 6d |  |  | 64h |
| 72 | 1.2.6.2.1.1 | **确定服务器操作系统** |  | 1d | 2003-10-22 | 2003-10-23 |  | 7d |  |  | 24h |
| 73 | 1.2.6.2.1.1.1 | 确定早期 Windows 服务器 |  | 1d | 2003-10-22 | 2003-10-23 |  | 7d |  | 系统设计师 | 8h |
| 74 | 1.2.6.2.1.1.2 | 确定 Microsoft Windows Server 2003 服务器 |  | 1d | 2003-10-22 | 2003-10-23 |  | 7d |  | 系统设计师 | 8h |
| 75 | 1.2.6.2.1.1.3 | 根据需要计划到 Windows Server 2003 的升级(您可能希望使用“Windows 2003 Server 部署”模板进行帮助) |  | 1d | 2003-10-22 | 2003-10-23 |  | 7d |  | 系统设计师 | 8h |
| 76 | 1.2.6.2.1.2 | **确定服务器硬件** |  | 2d | 2003-10-22 | 2003-10-24 |  | 6d |  |  | 40h |
| 77 | 1.2.6.2.1.2.1 | 确定 Windows SharePoint Services 的 Web 服务器 |  | 1d | 2003-10-22 | 2003-10-23 |  | 6d | 0d | 网络管理员; 系统设计师 | 16h |
| 78 | 1.2.6.2.1.2.2 | 确定 Windows SharePoint Services 的数据库服务器 |  | 1d | 2003-10-22 | 2003-10-23 |  | 6d | 0d | 数据库管理员; 系统设计师 | 16h |
| 79 | 1.2.6.2.1.2.3 | 根据需要购买其他服务器 |  | 1d | 2003-10-23 | 2003-10-24 | 77, 78 | 6d |  | 系统设计师 | 8h |

| ID | WBS | Task | Type | Duration | Start | Finish | Predecessors | Total slack | Free slack | Resources | Work |
| --- | --- | --- | --- | --- | --- | --- | --- | --- | --- | --- | --- |
| 80 | 1.2.6.2.2 | **记录客户端** |  | 8d | 2003-10-22 | 2003-11-03 |  | 0d |  |  | 232h |
| 81 | 1.2.6.2.2.1 | **确定操作系统** |  | 1d | 2003-10-22 | 2003-10-23 |  | 7d |  |  | 32h |
| 82 | 1.2.6.2.2.1.1 | 确定 Microsoft Windows 95/98 的用户 |  | 1d | 2003-10-22 | 2003-10-23 |  | 7d |  | 台式计算机支持 | 8h |
| 83 | 1.2.6.2.2.1.2 | 确定 Microsoft Windows NT、Microsoft Windows 2000、Microsoft Windows XP 的用户 |  | 1d | 2003-10-22 | 2003-10-23 |  | 7d |  | 台式计算机支持 | 8h |
| 84 | 1.2.6.2.2.1.3 | 确定非 Windows 客户端的用户 |  | 1d | 2003-10-22 | 2003-10-23 |  | 7d |  | 台式计算机支持 | 8h |
| 85 | 1.2.6.2.2.1.4 | 确定非 PC 客户端的用户 |  | 1d | 2003-10-22 | 2003-10-23 |  | 7d |  | 台式计算机支持 | 8h |
| 86 | 1.2.6.2.2.2 | **确定正在使用的浏览器** |  | 8d | 2003-10-22 | 2003-11-03 |  | 0d |  |  | 112h |
| 87 | 1.2.6.2.2.2.1 | 确定 Netscape 的用户 |  | 1d | 2003-10-22 | 2003-10-23 |  | 2d |  | 台式计算机支持 | 8h |
| 88 | 1.2.6.2.2.2.2 | 确定 Internet Explorer 6.X 的用户 |  | 1d | 2003-10-22 | 2003-10-23 |  | 2d |  | 台式计算机支持 | 8h |
| 89 | 1.2.6.2.2.2.3 | 确定 Internet Explorer 5.X 的用户 |  | 1d | 2003-10-22 | 2003-10-23 |  | 2d |  | 台式计算机支持 | 8h |
| 90 | 1.2.6.2.2.2.4 | 对于旧版本的 Web 浏览器的用户，记录解决方案和过程 |  | 3d | 2003-10-22 | 2003-10-27 |  | 0d |  | 系统设计师; 工作组成员 | 48h |
| 91 | 1.2.6.2.2.2.5 | 根据需要确定浏览器升级策略 |  | 5d | 2003-10-27 | 2003-11-03 | 87, 88, 89, 90 | 0d |  | 台式计算机支持 | 40h |
| 92 | 1.2.6.2.2.3 | **确定正在使用的 Microsoft Office System 版本** |  | 6d | 2003-10-22 | 2003-10-30 |  | 2d |  |  | 88h |
| 93 | 1.2.6.2.2.3.1 | 确定不使用 Microsoft Office System 的用户 |  | 1d | 2003-10-22 | 2003-10-23 |  | 2d | 0d | 台式计算机支持 | 8h |
| 94 | 1.2.6.2.2.3.2 | 确定 Microsoft Office System 的用户 |  | 1d | 2003-10-22 | 2003-10-23 |  | 2d | 0d | 台式计算机支持 | 8h |
| 95 | 1.2.6.2.2.3.3 | 确定 Microsoft Office XP 的用户 |  | 1d | 2003-10-22 | 2003-10-23 |  | 2d | 0d | 台式计算机支持 | 8h |
| 96 | 1.2.6.2.2.3.4 | 确定 Microsoft Office 2000 的用户 |  | 1d | 2003-10-22 | 2003-10-23 |  | 2d | 0d | 台式计算机支持 | 8h |
| 97 | 1.2.6.2.2.3.5 | 对于旧版本的 Microsoft Office System 用户，记录解决方案和过程 |  | 1d | 2003-10-22 | 2003-10-23 |  | 2d | 0d | 系统设计师; 工作组成员 | 16h |
| 98 | 1.2.6.2.2.3.6 | 根据需要确定 Microsoft Office 升级策略(如果执行 Microsoft Office System 升级，请参阅“Microsoft Office System 部署”模板获取更多信息) |  | 5d | 2003-10-23 | 2003-10-30 | 93, 94, 95, 96, 97 | 2d |  | 台式计算机支持 | 40h |
| 99 | 1.2.6.3 | **评估消息基础结构** |  | 3d | 2003-10-22 | 2003-10-27 | 36 | 5d |  |  | 24h |
| 100 | 1.2.6.3.1 | 确定 SMTP 能力 |  | 1d | 2003-10-22 | 2003-10-23 |  | 5d | 0d | 网络管理员 | 8h |
| 101 | 1.2.6.3.2 | 确定处理大量 Windows SharePoint Services 通知的能力 |  | 1d | 2003-10-23 | 2003-10-24 | 100 | 5d | 0d | 网络管理员 | 8h |
| 102 | 1.2.6.3.3 | 确定消息的发送帐户并适当配置邮箱 |  | 1d | 2003-10-24 | 2003-10-27 | 101 | 5d |  | 网络管理员 | 8h |
| 103 | 1.2.6.4 | 根据需要计划与 Microsoft SharePoint Portal Server v2.0 的集成(有关详细信息，请参阅“Microsoft SharePoint Portal Server v2.0 部署”模板) |  | 5d | 2003-10-09 | 2003-10-16 |  | 12d |  | 系统设计师 | 40h |
| 104 | 1.2.6.5 | 完成定义基础结构 | milestone | 0d | 2003-11-03 | 2003-11-03 | 62, 70, 99, 103 | 0d |  |  |  |

| ID | WBS | Task | Type | Duration | Start | Finish | Predecessors | Total slack | Free slack | Resources | Work |
| --- | --- | --- | --- | --- | --- | --- | --- | --- | --- | --- | --- |
| 105 | 1.2.7 | **定义安全性** |  | 1d | 2003-11-03 | 2003-11-04 | 61 | 4d |  |  | 24h |
| 106 | 1.2.7.1 | 创建网络服务帐户 |  | 1d | 2003-11-03 | 2003-11-04 |  | 4d | 0d | 网络管理员 | 8h |
| 107 | 1.2.7.2 | 定义 Windows SharePoint Services 角色 |  | 1d | 2003-11-03 | 2003-11-04 |  | 4d | 0d | 系统设计师 | 8h |
| 108 | 1.2.7.3 | 评估用于管理用户和权限的 Active Directory 帐户配置工具 |  | 1d | 2003-11-03 | 2003-11-04 |  | 4d | 0d | 网络管理员 | 8h |
| 109 | 1.2.7.4 | 完成定义安全性 | milestone | 0d | 2003-11-04 | 2003-11-04 | 106, 107, 108 | 4d |  |  |  |
| 110 | 1.2.8 | **确定本地化考虑事项** |  | 5d | 2003-11-03 | 2003-11-10 | 61 | 0d |  |  | 144h |
| 111 | 1.2.8.1 | 确定国际化使用方案 |  | 3d | 2003-11-03 | 2003-11-06 |  | 2d |  | 项目经理; 工作组成员 | 48h |
| 112 | 1.2.8.2 | 确定提供本地化内容的计划 |  | 5d | 2003-11-03 | 2003-11-10 |  | 0d |  | 项目经理; 工作组成员 | 80h |
| 113 | 1.2.8.3 | 确定要使用的语言模板 |  | 2d | 2003-11-03 | 2003-11-05 |  | 3d |  | 服务器管理员 | 16h |
| 114 | 1.2.8.4 | 完成确定本地化考虑事项 | milestone | 0d | 2003-11-10 | 2003-11-10 | 111, 112, 113 | 0d |  |  |  |
| 115 | 1.2.9 | **规划维护考虑事项** |  | 5d | 2003-11-03 | 2003-11-10 | 61 | 0d |  |  | 112h |
| 116 | 1.2.9.1 | **管理任务** |  | 3d | 2003-11-03 | 2003-11-06 |  | 2d |  |  | 48h |
| 117 | 1.2.9.1.1 | 确定管理支持策略 |  | 1d | 2003-11-03 | 2003-11-04 |  | 2d | 0d | 网络管理员; IT 支持人员 | 16h |
| 118 | 1.2.9.1.2 | 确定并培训系统管理员 |  | 1d | 2003-11-04 | 2003-11-05 | 117 | 2d | 0d | 网络管理员; IT 支持人员 | 16h |
| 119 | 1.2.9.1.3 | 定义日常管理任务 |  | 1d | 2003-11-05 | 2003-11-06 | 118 | 2d |  | 网络管理员; IT 支持人员 | 16h |
| 120 | 1.2.9.2 | **备份** |  | 3d | 2003-11-03 | 2003-11-06 |  | 0d |  |  | 32h |
| 121 | 1.2.9.2.1 | 确定备份频率 |  | 1d | 2003-11-03 | 2003-11-04 |  | 0d |  | 数据库管理员; 网络管理员 | 16h |
| 122 | 1.2.9.2.2 | 确定备份硬件 |  | 1d | 2003-11-04 | 2003-11-05 | 121 | 0d |  | 网络管理员 | 8h |
| 123 | 1.2.9.2.3 | 记录备份过程 |  | 1d | 2003-11-05 | 2003-11-06 | 122 | 0d |  | 网络管理员 | 8h |
| 124 | 1.2.9.3 | **恢复** |  | 2d | 2003-11-06 | 2003-11-10 | 120 | 0d |  |  | 32h |
| 125 | 1.2.9.3.1 | 记录恢复/灾难恢复过程 |  | 1d | 2003-11-06 | 2003-11-07 |  | 0d |  | 数据库管理员; 网络管理员 | 16h |
| 126 | 1.2.9.3.2 | 测试备份的恢复 |  | 1d | 2003-11-07 | 2003-11-10 | 125 | 0d |  | 数据库管理员; 网络管理员 | 16h |
| 127 | 1.2.9.4 | 完成规划维护考虑事项 | milestone | 0d | 2003-11-10 | 2003-11-10 | 116, 120, 124 | 0d |  |  |  |
| 128 | 1.2.10 | 完成规划 | milestone | 0d | 2003-11-10 | 2003-11-10 | 115, 10, 23, 28, 44, 49, 61, 105, 110 | 0d |  |  |  |

| ID | WBS | Task | Duration | Start | Finish | Predecessors | Total slack | Free slack | Resources | Work |
| --- | --- | --- | --- | --- | --- | --- | --- | --- | --- | --- |
| 129 | 1.3 | **部署** | 91d | 2003-11-10 | 2004-03-16 | 9 | 0d |  |  | 1360h |
| 130 | 1.3.1 | **试生产部署** | 25.5d | 2003-11-10 | 2003-12-15 |  | 0d |  |  | 520h |
| 131 | 1.3.1.1 | **部署服务器** | 25.5d | 2003-11-10 | 2003-12-15 |  | 0d |  |  | 324h |
| 132 | 1.3.1.1.1 | 完成硬件安装 | 5d | 2003-11-10 | 2003-11-17 |  | 0d |  | 服务器管理员 | 40h |
| 133 | 1.3.1.1.2 | **安装软件安装** | 20.5d | 2003-11-17 | 2003-12-15 | 132 | 0d |  |  | 284h |
| 134 | 1.3.1.1.2.1 | 安装 Windows Server 2003 | 2d | 2003-11-17 | 2003-11-19 |  | 0d |  | 服务器管理员 | 16h |
| 135 | 1.3.1.1.2.2 | 安装 SQL Server | 2d | 2003-11-19 | 2003-11-21 | 134 | 0d |  | 数据库管理员 | 16h |
| 136 | 1.3.1.1.2.3 | 在 Windows Server 2003 中安装 Web 服务器角色 | 1d | 2003-11-21 | 2003-11-24 | 135 | 0d |  | 服务器管理员 | 8h |
| 137 | 1.3.1.1.2.4 | 安装 Windows SharePoint Services | 1d | 2003-11-24 | 2003-11-25 | 136 | 0d |  | 服务器管理员 | 8h |
| 138 | 1.3.1.1.2.5 | **完成软件配置** | 14.5d | 2003-11-25 | 2003-12-15 | 137 | 0d |  |  | 236h |
| 139 | 1.3.1.1.2.5.1 | 创建配额模板 | 2d | 2003-11-25 | 2003-11-27 |  | 12.5d |  | 服务器管理员 | 16h |
| 140 | 1.3.1.1.2.5.2 | **配置网站和网站收集** | 6.5d | 2003-11-25 | 2003-12-03 |  | 0d |  |  | 52h |
| 141 | 1.3.1.1.2.5.2.1 | 根据需要在 Internet Information Server (IIS)中创建虚拟目录 | 4h | 2003-11-25 | 2003-11-25 |  | 0d |  | 服务器管理员 | 4h |
| 142 | 1.3.1.1.2.5.2.2 | 创建内容数据库 | 1d | 2003-11-26 | 2003-11-26 | 141 | 0d |  | 数据库管理员 | 8h |
| 143 | 1.3.1.1.2.5.2.3 | 扩展虚拟目录 | 4h | 2003-11-27 | 2003-11-27 | 142 | 0d |  | 服务器管理员 | 4h |
| 144 | 1.3.1.1.2.5.2.4 | 配置自我服务网站创建 | 4h | 2003-11-27 | 2003-11-27 | 143 | 0d |  | 服务器管理员 | 4h |
| 145 | 1.3.1.1.2.5.2.5 | 配置网站收集以使用确认和自动删除 | 4h | 2003-11-28 | 2003-11-28 | 144 | 7d | 0d | 服务器管理员 | 4h |
| 146 | 1.3.1.1.2.5.2.6 | 为虚拟目录配置用户权限 | 2d | 2003-11-28 | 2003-12-02 | 145 | 7d | 0d | 服务器管理员 | 16h |
| 147 | 1.3.1.1.2.5.2.7 | 配置电子邮件设置 | 4h | 2003-12-02 | 2003-12-02 | 146 | 7d | 0d | 服务器管理员 | 4h |
| 148 | 1.3.1.1.2.5.2.8 | 创建顶级网站 | 4h | 2003-12-03 | 2003-12-03 | 147 | 7d | 0d | 服务器管理员 | 4h |
| 149 | 1.3.1.1.2.5.2.9 | 选择相关配额模板 | 4h | 2003-12-03 | 2003-12-03 | 148 | 7d |  | 服务器管理员 | 4h |
| 150 | 1.3.1.1.2.5.3 | **自定义网站模板** | 12d | 2003-11-28 | 2003-12-15 | 144 | 0d |  |  | 96h |
| 151 | 1.3.1.1.2.5.3.1 | 使用自定义列表 | 2d | 2003-11-28 | 2003-12-01 |  | 0d |  | 工作组成员 | 16h |
| 152 | 1.3.1.1.2.5.3.2 | 使用 Microsoft Office FrontPage 2003 实施自定义网站布局模板 | 5d | 2003-12-02 | 2003-12-08 | 151 | 0d |  | 工作组成员 | 40h |
| 153 | 1.3.1.1.2.5.3.3 | 定义文档文件夹 | 5d | 2003-12-09 | 2003-12-15 | 152 | 0d |  | 工作组成员 | 40h |
| 154 | 1.3.1.1.2.5.4 | 配置全文本索引 | 1d | 2003-12-04 | 2003-12-04 | 140 | 7d |  | 服务器管理员 | 8h |
| 155 | 1.3.1.1.2.5.5 | 设置阻止的文件类型 | 1d | 2003-12-04 | 2003-12-04 | 140 | 7d |  | 服务器管理员 | 8h |
| 156 | 1.3.1.1.2.5.6 | 配置使用率分析处理 | 1d | 2003-12-04 | 2003-12-04 | 140 | 7d |  | 服务器管理员 | 8h |
| 157 | 1.3.1.1.2.5.7 | 配置 DSP 设置 | 1d | 2003-12-04 | 2003-12-04 | 140 | 7d |  | 服务器管理员 | 8h |
| 158 | 1.3.1.1.2.5.8 | 根据需要配置 Microsoft SharePoint Portal Server v2.0 集成(有关详细信息，请参阅“Microsoft SharePoint Portal Server v2.0 部署”模板) | 5d | 2003-11-25 | 2003-12-02 |  | 9.5d |  | 服务器管理员 | 40h |

| ID | WBS | Task | Type | Duration | Start | Finish | Predecessors | Total slack | Free slack | Resources | Work |
| --- | --- | --- | --- | --- | --- | --- | --- | --- | --- | --- | --- |
| 159 | 1.3.1.2 | **配置 Windows SharePoint Services 客户端** |  | 10d | 2003-11-10 | 2003-11-24 |  | 15.5d |  |  | 120h |
| 160 | 1.3.1.2.1 | 根据需要升级客户端操作系统 |  | 5d | 2003-11-10 | 2003-11-17 |  | 15.5d | 0d | 应用程序部署 | 40h |
| 161 | 1.3.1.2.2 | 根据需要升级客户端浏览器 |  | 5d | 2003-11-17 | 2003-11-24 | 160 | 15.5d |  | 应用程序部署 | 40h |
| 162 | 1.3.1.2.3 | 根据需要升级客户端 Microsoft Office System 版本 |  | 5d | 2003-11-17 | 2003-11-24 | 160 | 15.5d |  | 应用程序部署 | 40h |
| 163 | 1.3.1.3 | **通过 SharePoint Team Services 进行迁移** |  | 7.5d | 2003-11-10 | 2003-11-19 |  | 18d |  |  | 76h |
| 164 | 1.3.1.3.1 | **选择迁移方法** |  | 1d | 2003-11-10 | 2003-11-11 |  | 18d | 0d |  | 24h |
| 165 | 1.3.1.3.1.1 | 选择完全备份和恢复方法 |  | 1d | 2003-11-10 | 2003-11-11 |  | 18d |  | 系统设计师 | 8h |
| 166 | 1.3.1.3.1.2 | 选择使用网站迁移工具(simigrate.exe)以及两台现场服务器迁移 |  | 1d | 2003-11-10 | 2003-11-11 |  | 18d |  | 系统设计师 | 8h |
| 167 | 1.3.1.3.1.3 | 如果其他选项不可接受，则考虑对 SharePoint Team Services 进行就地升级 |  | 1d | 2003-11-10 | 2003-11-11 |  | 18d |  | 系统设计师 | 8h |
| 168 | 1.3.1.3.2 | 在目标位置不应用模板创建空的顶级网站 |  | 4h | 2003-11-11 | 2003-11-11 | 164 | 18d | 0d | 服务器管理员 | 4h |
| 169 | 1.3.1.3.3 | 确保目标网站上的设置正确 |  | 4h | 2003-11-12 | 2003-11-12 | 168 | 18d | 0d | 服务器管理员 | 4h |
| 170 | 1.3.1.3.4 | 确定是否保留安全设置 |  | 4h | 2003-11-12 | 2003-11-12 | 169 | 18d | 0d | 系统设计师 | 4h |
| 171 | 1.3.1.3.5 | 在源网站和目标网站上获取管理权限 |  | 1d | 2003-11-13 | 2003-11-13 | 170 | 18d | 0d | 服务器管理员 | 8h |
| 172 | 1.3.1.3.6 | 执行迁移 |  | 2d | 2003-11-14 | 2003-11-17 | 171 | 18d | 0d | 服务器管理员 | 16h |
| 173 | 1.3.1.3.7 | 将迁移的网站与原始网站进行比较(不能进行就地升级) |  | 2d | 2003-11-18 | 2003-11-19 | 172 | 18d |  | 工作组成员 | 16h |
| 174 | 1.3.2 | **测试试生产环境** |  | 20d | 2003-12-16 | 2004-01-12 | 130 | 0d |  |  | 160h |
| 175 | 1.3.2.1 | 处理台式计算机测试方案 |  | 5d | 2003-12-16 | 2003-12-22 |  | 0d |  | 测试/QA | 40h |
| 176 | 1.3.2.2 | 处理服务器测试方案 |  | 5d | 2003-12-23 | 2003-12-29 | 175 | 0d |  | 测试/QA | 40h |
| 177 | 1.3.2.3 | 处理第三方应用程序测试方案 |  | 5d | 2003-12-30 | 2004-01-05 | 176 | 0d |  | 测试/QA | 40h |
| 178 | 1.3.2.4 | 处理自定义应用程序测试方案 |  | 5d | 2004-01-06 | 2004-01-12 | 177 | 0d |  | 测试/QA | 40h |
| 179 | 1.3.3 | 完成试生产部署 | milestone | 0d | 2004-01-12 | 2004-01-12 | 130, 174 | 0d |  |  |  |
| 180 | 1.3.4 | **生产部署** |  | 25.5d | 2004-01-13 | 2004-02-17 | 179 | 0d |  |  | 520h |
| 181 | 1.3.4.1 | **部署服务器** |  | 25.5d | 2004-01-13 | 2004-02-17 |  | 0d |  |  | 324h |
| 182 | 1.3.4.1.1 | 完成硬件安装 |  | 5d | 2004-01-13 | 2004-01-19 |  | 0d |  | 服务器管理员 | 40h |

| ID | WBS | Task | Duration | Start | Finish | Predecessors | Total slack | Free slack | Resources | Work |
| --- | --- | --- | --- | --- | --- | --- | --- | --- | --- | --- |
| 183 | 1.3.4.1.2 | **完成软件安装** | 20.5d | 2004-01-20 | 2004-02-17 | 182 | 0d |  |  | 284h |
| 184 | 1.3.4.1.2.1 | 安装 Windows Server 2003 | 2d | 2004-01-20 | 2004-01-21 |  | 0d |  | 服务器管理员 | 16h |
| 185 | 1.3.4.1.2.2 | 安装 SQL Server | 2d | 2004-01-22 | 2004-01-23 | 184 | 0d |  | 数据库管理员 | 16h |
| 186 | 1.3.4.1.2.3 | 在 Windows Server 2003 中安装 Web 服务器角色 | 1d | 2004-01-26 | 2004-01-26 | 185 | 0d |  | 服务器管理员 | 8h |
| 187 | 1.3.4.1.2.4 | 安装 Windows SharePoint Services | 1d | 2004-01-27 | 2004-01-27 | 186 | 0d |  | 服务器管理员 | 8h |
| 188 | 1.3.4.1.2.5 | **完成软件配置** | 14.5d | 2004-01-28 | 2004-02-17 | 187 | 0d |  |  | 236h |
| 189 | 1.3.4.1.2.5.1 | 创建配额模板 | 2d | 2004-01-28 | 2004-01-29 |  | 12.5d |  | 服务器管理员 | 16h |
| 190 | 1.3.4.1.2.5.2 | **配置网站和网站收集** | 6.5d | 2004-01-28 | 2004-02-05 |  | 0d |  |  | 52h |
| 191 | 1.3.4.1.2.5.2.1 | 根据需要在 IIS 中创建虚拟目录 | 4h | 2004-01-28 | 2004-01-28 |  | 0d |  | 服务器管理员 | 4h |
| 192 | 1.3.4.1.2.5.2.2 | 创建内容数据库 | 1d | 2004-01-28 | 2004-01-29 | 191 | 0d |  | 数据库管理员 | 8h |
| 193 | 1.3.4.1.2.5.2.3 | 扩展虚拟目录 | 4h | 2004-01-29 | 2004-01-29 | 192 | 0d |  | 服务器管理员 | 4h |
| 194 | 1.3.4.1.2.5.2.4 | 配置自我服务网站创建 | 4h | 2004-01-30 | 2004-01-30 | 193 | 0d |  | 服务器管理员 | 4h |
| 195 | 1.3.4.1.2.5.2.5 | 配置网站收集以使用确认和自动删除 | 4h | 2004-01-30 | 2004-01-30 | 194 | 7d | 0d | 服务器管理员 | 4h |
| 196 | 1.3.4.1.2.5.2.6 | 为虚拟目录配置用户权限 | 2d | 2004-02-02 | 2004-02-03 | 195 | 7d | 0d | 服务器管理员 | 16h |
| 197 | 1.3.4.1.2.5.2.7 | 配置电子邮件设置 | 4h | 2004-02-04 | 2004-02-04 | 196 | 7d | 0d | 服务器管理员 | 4h |
| 198 | 1.3.4.1.2.5.2.8 | 创建顶级网站 | 4h | 2004-02-04 | 2004-02-04 | 197 | 7d | 0d | 服务器管理员 | 4h |
| 199 | 1.3.4.1.2.5.2.9 | 选择相关配额模板 | 4h | 2004-02-05 | 2004-02-05 | 198 | 7d |  | 服务器管理员 | 4h |
| 200 | 1.3.4.1.2.5.3 | **自定义网站模板** | 12d | 2004-01-30 | 2004-02-17 | 194 | 0d |  |  | 96h |
| 201 | 1.3.4.1.2.5.3.1 | 使用自定义列表 | 2d | 2004-01-30 | 2004-02-03 |  | 0d |  | 工作组成员 | 16h |
| 202 | 1.3.4.1.2.5.3.2 | 使用 FrontPage 2003 实施自定义网站布局模板 | 5d | 2004-02-03 | 2004-02-10 | 201 | 0d |  | 工作组成员 | 40h |
| 203 | 1.3.4.1.2.5.3.3 | 定义文档文件夹 | 5d | 2004-02-10 | 2004-02-17 | 202 | 0d |  | 工作组成员 | 40h |
| 204 | 1.3.4.1.2.5.4 | 配置全文本索引 | 1d | 2004-02-05 | 2004-02-06 | 190 | 7d |  | 服务器管理员 | 8h |
| 205 | 1.3.4.1.2.5.5 | 设置阻止的文件类型 | 1d | 2004-02-05 | 2004-02-06 | 190 | 7d |  | 服务器管理员 | 8h |
| 206 | 1.3.4.1.2.5.6 | 配置使用率分析处理 | 1d | 2004-02-05 | 2004-02-06 | 190 | 7d |  | 服务器管理员 | 8h |
| 207 | 1.3.4.1.2.5.7 | 配置 DSP 设置 | 1d | 2004-02-05 | 2004-02-06 | 190 | 7d |  | 服务器管理员 | 8h |
| 208 | 1.3.4.1.2.5.8 | 根据需要配置 Microsoft SharePoint Portal Server v2.0 集成(有关详细信息，请参阅“Microsoft SharePoint Portal Server v2.0 部署”模板) | 5d | 2004-01-28 | 2004-02-03 |  | 9.5d |  | 服务器管理员 | 40h |

| ID | WBS | Task | Type | Duration | Start | Finish | Predecessors | Total slack | Free slack | Resources | Work |
| --- | --- | --- | --- | --- | --- | --- | --- | --- | --- | --- | --- |
| 209 | 1.3.4.2 | **配置 Windows SharePoint Services 客户端** |  | 10d | 2004-01-13 | 2004-01-26 |  | 15.5d |  |  | 120h |
| 210 | 1.3.4.2.1 | 根据需要升级客户端操作系统 |  | 5d | 2004-01-13 | 2004-01-19 |  | 15.5d | 0d | 应用程序部署 | 40h |
| 211 | 1.3.4.2.2 | 根据需要升级客户端浏览器 |  | 5d | 2004-01-20 | 2004-01-26 | 210 | 15.5d |  | 应用程序部署 | 40h |
| 212 | 1.3.4.2.3 | 根据需要升级客户端 Microsoft Office System 版本 |  | 5d | 2004-01-20 | 2004-01-26 | 210 | 15.5d |  | 应用程序部署 | 40h |
| 213 | 1.3.4.3 | **通过 SharePoint Team Services 进行迁移** |  | 7.5d | 2004-01-13 | 2004-01-22 |  | 18d |  |  | 76h |
| 214 | 1.3.4.3.1 | **选择迁移方法** |  | 1d | 2004-01-13 | 2004-01-13 |  | 18d | 0d |  | 24h |
| 215 | 1.3.4.3.1.1 | 选择完全备份和恢复方法 |  | 1d | 2004-01-13 | 2004-01-13 |  | 18d |  | 系统设计师 | 8h |
| 216 | 1.3.4.3.1.2 | 选择使用网站迁移工具(simigrate.exe)以及两台现场服务器迁移 |  | 1d | 2004-01-13 | 2004-01-13 |  | 18d |  | 系统设计师 | 8h |
| 217 | 1.3.4.3.1.3 | 如果其他选项不可接受，则考虑对 SharePoint Team Services 进行就地升级 |  | 1d | 2004-01-13 | 2004-01-13 |  | 18d |  | 系统设计师 | 8h |
| 218 | 1.3.4.3.2 | 在目标位置不应用模板创建空的顶级网站 |  | 4h | 2004-01-14 | 2004-01-14 | 214 | 18d | 0d | 服务器管理员 | 4h |
| 219 | 1.3.4.3.3 | 确保目标网站上的设置正确 |  | 4h | 2004-01-14 | 2004-01-14 | 218 | 18d | 0d | 服务器管理员 | 4h |
| 220 | 1.3.4.3.4 | 确定是否保留安全设置 |  | 4h | 2004-01-15 | 2004-01-15 | 219 | 18d | 0d | 系统设计师 | 4h |
| 221 | 1.3.4.3.5 | 在源网站和目标网站上获取管理权限 |  | 1d | 2004-01-15 | 2004-01-16 | 220 | 18d | 0d | 服务器管理员 | 8h |
| 222 | 1.3.4.3.6 | 执行迁移 |  | 2d | 2004-01-16 | 2004-01-20 | 221 | 18d | 0d | 服务器管理员 | 16h |
| 223 | 1.3.4.3.7 | 将迁移的网站与原始网站进行比较(不能进行就地升级) |  | 2d | 2004-01-20 | 2004-01-22 | 222 | 18d |  | 工作组成员 | 16h |
| 224 | 1.3.5 | **测试产品环境** |  | 20d | 2004-02-17 | 2004-03-16 | 180 | 0d |  |  | 160h |
| 225 | 1.3.5.1 | 处理台式计算机测试方案 |  | 5d | 2004-02-17 | 2004-02-24 |  | 0d |  | 测试/QA | 40h |
| 226 | 1.3.5.2 | 处理服务器测试方案 |  | 5d | 2004-02-24 | 2004-03-02 | 225 | 0d |  | 测试/QA | 40h |
| 227 | 1.3.5.3 | 处理第三方应用程序测试方案 |  | 5d | 2004-03-02 | 2004-03-09 | 226 | 0d |  | 测试/QA | 40h |
| 228 | 1.3.5.4 | 处理自定义应用程序测试方案 |  | 5d | 2004-03-09 | 2004-03-16 | 227 | 0d |  | 测试/QA | 40h |
| 229 | 1.3.6 | 完成生产部署 | milestone | 0d | 2004-03-16 | 2004-03-16 | 180, 224 | 0d |  |  |  |
| 230 | 1.4 | **部署后** |  | 30d | 2004-03-16 | 2004-04-27 | 129 | 0d |  |  | 258.4h |
| 231 | 1.4.1 | **实施和测试备份** |  | 1.25d | 2004-03-16 | 2004-03-17 |  | 28.75d |  |  | 24h |
| 232 | 1.4.1.1 | 实施 Windows SharePoint Services 的备份策略 |  | 4h | 2004-03-16 | 2004-03-16 |  | 28.75d | 0d | 数据库管理员; 服务器管理员 | 8h |
| 233 | 1.4.1.2 | 测试 Windows SharePoint Services 备份策略 |  | 4h | 2004-03-17 | 2004-03-17 | 232 | 28.75d | 0d | 数据库管理员; 服务器管理员 | 8h |
| 234 | 1.4.1.3 | 实施和测试灾难计划与恢复策略 |  | 2h | 2004-03-17 | 2004-03-17 | 233 | 28.75d | 0d | 数据库管理员; 网络管理员; 服务器管理员; 系统设计师 | 8h |
| 235 | 1.4.1.4 | 完成实施和测试备份 | milestone | 0d | 2004-03-17 | 2004-03-17 | 234 | 28.75d |  |  |  |

| ID | WBS | Task | Type | Duration | Start | Finish | Predecessors | Total slack | Free slack | Resources | Work |
| --- | --- | --- | --- | --- | --- | --- | --- | --- | --- | --- | --- |
| 236 | 1.4.2 | **实施性能调整和监控** |  | 30d | 2004-03-16 | 2004-04-27 |  | 0d |  |  | 115.2h |
| 237 | 1.4.2.1 | 使用性能监视器观察性能参数 |  | 30d | 2004-03-16 | 2004-04-27 |  | 0d |  | 数据库管理员 [6%]; 服务器管理员 [6%] | 28.8h |
| 238 | 1.4.2.2 | 比较计划性能 |  | 30d | 2004-03-16 | 2004-04-27 |  | 0d |  | 数据库管理员 [6%]; 服务器管理员 [6%] | 28.8h |
| 239 | 1.4.2.3 | 根据需要调整设置 |  | 30d | 2004-03-16 | 2004-04-27 |  | 0d |  | 数据库管理员 [6%]; 服务器管理员 [6%] | 28.8h |
| 240 | 1.4.2.4 | 适当地重新预测要求和计划 |  | 30d | 2004-03-16 | 2004-04-27 |  | 0d |  | 数据库管理员 [6%]; 服务器管理员 [6%] | 28.8h |
| 241 | 1.4.2.5 | 完成实施性能调整和监控 | milestone | 0d | 2004-04-27 | 2004-04-27 | 237, 238, 239, 240 | 0d |  |  |  |
| 242 | 1.4.3 | **设置系统维护** |  | 30d | 2004-03-16 | 2004-04-27 |  | 0d |  |  | 23.2h |
| 243 | 1.4.3.1 | 创建 SQL Server 维护计划 |  | 4h | 2004-03-16 | 2004-03-16 |  | 29.5d |  | 数据库管理员 | 4h |
| 244 | 1.4.3.2 | 管理用户帐户 |  | 30d | 2004-03-16 | 2004-04-27 |  | 0d |  | 数据库管理员 [4%] | 9.6h |
| 245 | 1.4.3.3 | 监控日志和数据文件 |  | 30d | 2004-03-16 | 2004-04-27 |  | 0d |  | 数据库管理员 [4%] | 9.6h |
| 246 | 1.4.3.4 | 完成设置系统维护 | milestone | 0d | 2004-04-27 | 2004-04-27 | 243, 244, 245 | 0d |  |  |  |
| 247 | 1.4.4 | 获得用户反馈 |  | 2d | 2004-03-16 | 2004-03-18 |  | 21d | 0d | 工作组成员; 项目经理 | 32h |
| 248 | 1.4.5 | 评估经验教训 |  | 3d | 2004-03-18 | 2004-03-23 | 247 | 21d | 0d | 工作组成员 | 24h |
| 249 | 1.4.6 | 根据需要修改项目 |  | 3d | 2004-03-23 | 2004-03-26 | 248 | 21d | 0d | 工作组成员 | 24h |
| 250 | 1.4.7 | 建立未来的 Windows SharePoint Services 用户工作组 |  | 1d | 2004-03-26 | 2004-03-29 | 249 | 21d |  | 工作组成员; 项目经理 | 16h |
| 251 | 1.4.8 | 完成部署后工作 | milestone | 0d | 2004-04-27 | 2004-04-27 | 231, 236, 242, 250 | 0d |  |  |  |
| 252 | 1.5 | 完成 Microsoft Windows SharePoint Services 部署 | milestone | 0d | 2004-04-27 | 2004-04-27 | 230 | 0d |  |  |  |
